# 07.09.26

Schedule from MS Project, 2023-03-10 to 2027-03-10, A marks actual dates.
DEXP

## Calendars

- Стандартный: Mon-Fri 09:00-13:00, 14:00-18:00; Sat-Sun off. Exceptions (off unless hours are given): 2026-09-05 09:00-13:00, 14:00-18:00, 2026-09-12 to 2026-09-13 09:00-13:00, 14:00-18:00, 2026-09-19 to 2026-09-20 09:00-13:00, 14:00-18:00, 2026-09-26 to 2026-09-27 09:00-13:00, 14:00-18:00, 2026-10-04 09:00-13:00, 14:00-18:00, 2026-10-17 09:00-13:00, 14:00-18:00, 2026-11-07 to 2026-11-08 09:00-13:00, 14:00-18:00, 2026-11-14 to 2026-11-15 09:00-13:00, 14:00-18:00.

## Resources

| Resource |
| --- |
| Макаревич А |
| Дедов В |
| Бобренок В |
| Тимофеев В |
| Зорькин В |
| Бундин В |
| Труфанов А |
| Некрасов А |
| Шуранов Ю |
| Домоводов К |
| Амрулин Р |
| Карабанов |
| Олег |
| оплот |
| Коленкоров |
| Мультан |
| Малинина М |
| Лобанов И |
| Дворник |
| Подрядчик |
| Олег лукас |
| Черепанов И |
| оперторы2 |
| оператор2 |
| Тракресурс |
| Сапелин С |
| Технолог |
| Фрезер ЧПУ |
| Пинчук А |
| КИнжекул |
| ТО_2 |
| ТО_1 |
| ТО_М |
| ТО |
| Кладовщики |
| Логист |
| Автобест |
| Николаев |

## Schedule

| ID | WBS | Task | Type | Duration | Start | Finish | Predecessors | Complete | Remaining | Total slack | Free slack | Constraint | Resources | Work | Actual work |
| --- | --- | --- | --- | --- | --- | --- | --- | --- | --- | --- | --- | --- | --- | --- | --- |
| 1 | 1 | **1 цех** |  | 431.5d? | 2023-03-10 09:00 A | 2024-11-02 13:00 |  | 98% | 7.62d? |  |  |  |  | 23295.7h | 22902.4h |
| 2 | 1.1 | Повторить заявку на комплектующие для автоматической подачи сырья из смесителей |  | 1h | 2026-11-16 09:00 | 2026-11-16 10:00 |  |  |  | 82.47d |  | start no earlier than 2026-11-16 08:00 | Дедов В; Зорькин В | 2h |  |
| 3 | 1.2 | **изготовить лоток м/д GRLW и экструдером с переключателем на сброс и крышкой очиски/быстросъемный** |  | 2d? | 2026-11-10 09:00 | 2026-11-11 18:00 |  |  |  | 86.59d |  |  |  | 24h |  |
| 4 | 1.2.1 | составить чертежи |  | 1d? | 2026-11-10 09:00 | 2026-11-10 18:00 |  |  |  | 86.59d | 0d | start no earlier than 2026-11-10 09:00 | Зорькин В; Домоводов К | 16h |  |
| 5 | 1.2.2 | раскрой металл / сборка |  | 1d? | 2026-11-11 09:00 | 2026-11-11 18:00 | 4 |  |  | 86.59d |  | start no earlier than 2026-11-09 08:00 | Макаревич А | 8h |  |
| 6 | 1.3 | калибровка пид регулятор печи 2 |  | 1h | 2026-11-16 09:00 | 2026-11-16 10:00 |  |  |  | 82.47d |  | start no earlier than 2026-11-16 09:00 | Дедов В | 1h |  |
| 7 | 1.4 | ремонт силиконовой резинки выход из печи 1 |  | 1h | 2026-11-18 09:00 | 2026-11-18 10:00 |  |  |  | 80.47d |  | start no earlier than 2026-11-18 09:00 | Тимофеев В | 1h |  |
| 8 | 1.5 | 2 линия ремонт сквозной ржавчины прекондиционера возле горла |  | 2h | 2026-11-18 09:00 | 2026-11-18 11:00 |  |  |  | 80.34d |  | start no earlier than 2026-11-18 09:00 | Бундин В | 2h |  |
| 9 | 1.6 | диагностика кондиционера |  | 2h | 2026-11-10 09:00 | 2026-11-10 11:00 |  |  |  | 88.34d |  | start no earlier than 2026-11-10 09:00 | Труфанов А; Некрасов А | 4h |  |
| 10 | 1.7 | ПУН поломоечная машинка |  | 2h | 2026-11-09 09:00 A | 2026-11-09 11:00 A |  | 100% |  |  |  | start no earlier than 2026-11-09 08:00 | Макаревич А; Николаев | 4h | 4h |
| 11 | 1.8 | Засыпать пескобетон в сваи |  | 2h | 2026-11-16 09:00 A | 2026-11-16 11:00 A |  | 100% |  |  |  | start no earlier than 2026-11-16 09:00 | Некрасов А; Труфанов А | 4h | 4h |
| 12 | 1.9 | Вывезти землю трактором возле септика |  | 1d? | 2026-11-05 09:00 | 2026-11-05 18:00 |  |  |  | 92.59d |  | start no earlier than 2026-11-05 09:00 |  |  |  |
| 13 | 1.10 | Приделать уголок к верхнему краю битумной ленты, к стене, алюминиевым уголком. Крепеж дюбель гвоздь или предложить другой вариант крепления |  | 4h | 2026-11-04 09:00 A | 2026-11-04 13:00 A |  | 100% |  |  |  | start no earlier than 2026-11-04 09:00 | Бобренок В | 4h | 4h |
| 14 | 1.11 | Расширить отверстие по видео |  | 30min | 2026-11-03 09:00 A | 2026-11-03 09:30 A |  | 100% |  |  |  | start no earlier than 2026-11-03 08:00 | Дедов В | 0.5h | 0.5h |
| 15 | 1.12 | Изготовление трубок (удочек, для подачи жира) 1 и 2 лини, на каждую линию по 2. |  | 4h | 2026-11-03 09:00 | 2026-11-03 13:00 |  |  |  | 95.09d |  | start no earlier than 2026-11-03 09:00 | Тимофеев В | 4h |  |
| 16 | 1.13 | Разметить место бурения под раму за 1 цехом, чертеж у Константина |  | 1h | 2026-11-03 09:00 A | 2026-11-03 10:00 A |  | 100% |  |  |  | start no earlier than 2026-11-03 09:00 | Труфанов А; Некрасов А | 2h | 2h |
| 17 | 1.14 | установить датчики температуры для прекондиционера (механический, со стрелкой) |  | 1h | 2026-11-03 09:00 A | 2026-11-03 10:00 A |  | 100% |  |  |  | start no earlier than 2026-11-03 09:00 | Дедов В | 1h | 1h |
| 18 | 1.15 | Приклеить удлинетель к носику для гидролизата, которую обломили, приклепать на пластины. Все тестить и собирать можно в 3 цехе по месту, что бы она в итоге была готова в любой момент быть поставлена | manual | 2h | 2026-10-31 09:00 A | 2026-10-31 11:00 A |  | 100% |  |  |  | start no earlier than 2026-10-31 09:00 | Макаревич А | 2h | 2h |
| 19 | 1.16 | Поставить выключатель на рампе |  | 30min | 2026-10-30 09:00 A | 2026-10-30 09:30 A |  | 100% |  |  |  | start no earlier than 2026-10-30 08:00 | Бобренок В | 0.5h | 0.5h |
| 20 | 1.17 | Убрать лист над печкой |  | 30min | 2026-10-30 09:00 A | 2026-10-30 09:30 A |  | 100% |  |  |  | start no earlier than 2026-10-30 08:00 | Бобренок В | 0.5h | 0.5h |
| 21 | 1.18 | Посмотреть/заменить термопару на 1 линии на бачке с жиром, определить, какой перегревает |  | 1h | 2026-10-30 09:00 A | 2026-10-30 10:00 A |  | 100% |  |  |  | start no earlier than 2026-10-30 08:00 | Бобренок В | 1h | 1h |
| 22 | 1.19 | замена ножек на полибоксах под которые не заезжает рохля |  | 3h | 2026-10-29 09:00 A | 2026-10-29 12:00 A |  | 100% |  |  |  | start no earlier than 2026-10-29 08:00 | Бобренок В | 3h | 3h |
| 23 | 1.20 | Перенос конструкции с фильтрами на раму барабанов (каждую мойку их двигают, мучаются со вторым краном, что не открывается) |  | 2h | 2026-10-29 09:00 A | 2026-10-29 11:00 A |  | 100% |  |  |  | start no earlier than 2026-10-29 08:00 | Тимофеев В | 2h | 2h |
| 24 | 1.21 | Поставить насос 12В через расходомер линия 2 |  | 1h | 2026-11-18 09:00 | 2026-11-18 10:00 |  |  |  | 80.47d |  | start no earlier than 2026-11-18 09:00 | Тимофеев В | 1h |  |
| 25 | 1.22 | Сделать врезки по водоподготовке в основную магистраль, курьер привез необходимое |  | 2h | 2026-10-28 09:00 A | 2026-10-28 11:00 A |  | 100% |  |  |  | start no earlier than 2026-10-28 08:00 | Труфанов А; Некрасов А | 4h | 4h |

| ID | WBS | Task | Duration | Start | Finish | Complete | Remaining | Total slack | Constraint | Resources | Work | Actual work |
| --- | --- | --- | --- | --- | --- | --- | --- | --- | --- | --- | --- | --- |
| 26 | 1.23 | **Собрать канистру для подачи воды в экструдер, по аналогу 3 цех. Промежуточный бак 2 шт** | 17.25d | 2026-10-29 09:00 A | 2026-11-17 11:00 | 12% | 15.15d | 81.34d |  | Бундин В | 141.42h | 14.83h |
| 27 | 1.23.1 | Заказать поплавковый клапан с боковой подачей | 15min | 2026-10-29 09:00 A | 2026-10-29 09:15 A | 100% |  |  | start no earlier than 2026-10-29 08:00 | Зорькин В | 0.25h | 0.25h |
| 28 | 1.23.2 | Контроль | 10min | 2026-11-05 09:00 A | 2026-11-05 09:10 A | 100% |  |  | start no earlier than 2026-11-05 09:00 | Зорькин В | 0.17h | 0.17h |
| 29 | 1.23.3 | монтаж | 1h | 2026-11-17 09:00 | 2026-11-17 10:00 |  |  | 81.47d | start no earlier than 2026-11-17 09:00 | Дедов В | 1h |  |
| 30 | 1.23.4 | Монтаж насоса, взять в кабинете оги | 2h | 2026-11-17 09:00 | 2026-11-17 11:00 |  |  | 81.34d | start no earlier than 2026-11-17 09:00 | Дедов В | 2h |  |
| 31 | 1.24 | Поставить лампу на 1 линии, по аналогу 2 линии, повешать на зонтик, такую же длинную, запитаться от соседней, посмотреть токи, что все хватает | 2h | 2026-10-28 09:00 A | 2026-10-28 11:00 A | 100% |  |  | start no earlier than 2026-10-28 08:00 | Бундин В | 2h | 2h |
| 32 | 1.25 | Ремонт палетообмотчика | 2h | 2026-10-28 09:00 A | 2026-10-28 11:00 A | 100% |  |  | start no earlier than 2026-10-28 09:00 | Тимофеев В | 2h | 2h |
| 33 | 1.26 | Дополнительный свет в зоне экструдера над нож узелом - линия 2 | 2h | 2026-10-28 09:00 A | 2026-10-28 11:00 A | 100% |  |  | start no earlier than 2026-10-28 09:00 | Бобренок В; Николаев | 4h | 4h |
| 34 | 1.27 | монтаж светильник в зону между печь 2 и стенка профлист. Темно уборщице | 2h | 2026-10-27 09:00 A | 2026-10-27 11:00 A | 100% |  |  | start no earlier than 2026-10-27 08:00 | Бундин В | 2h | 2h |
| 35 | 1.28 | Изготовить уши на конвейере №1 по аналогу 1 линии | 2h | 2026-10-29 09:00 A | 2026-10-29 11:00 A | 100% |  |  | start no earlier than 2026-10-29 09:00 | Тимофеев В | 2h | 2h |
| 36 | 1.29 | Загерметизировать щель битумной лентой между мезонином и стеной на экструдере, герметизируем сверху | 2h | 2026-10-27 09:00 A | 2026-10-27 11:00 A | 100% |  |  | start no earlier than 2026-10-27 09:00 | Бобренок В | 2h | 2h |
| 37 | 1.30 | Установить тепловую пушкув гидролизатной для обогрева помещения, чтоб не разморозило трубы. Подключить от шкафа ВРУ, пушка на 380, кабель подобрать по мощности | 2h | 2026-10-23 09:00 A | 2026-10-23 11:00 A | 100% |  |  | start no earlier than 2026-10-23 08:00 | Макаревич А | 2h | 2h |
| 38 | 1.31 | Собрать крышку на дозатор которая в слесарке, вторую часть снять с 3дпринтера | 1h | 2026-10-20 09:00 A | 2026-10-20 10:00 A | 100% |  |  | start no earlier than 2026-10-20 08:00 | Бундин В | 1h | 1h |
| 39 | 1.32 | Изготовление резинки для поломоечной машинки и установка. Резину получить на складе | 30min | 2026-10-20 09:00 A | 2026-10-20 09:30 A | 100% |  |  | start no earlier than 2026-10-20 08:00 | Бундин В | 0.5h | 0.5h |
| 40 | 1.33 | **ремонт 3х ходовой приточная вентиляция** | 4.12d | 2026-10-19 09:00 A | 2026-10-23 10:00 A | 100% |  |  |  |  | 7h | 7h |
| 41 | 1.33.1 | монтаж + замена серволпривод | 1h | 2026-10-19 09:00 A | 2026-10-19 10:00 A | 100% |  |  | start no earlier than 2026-10-19 08:00 | Тимофеев В; Николаев | 2h | 2h |
| 42 | 1.33.2 | монтаж на калорифер /подключить серволпривод | 2h | 2026-10-20 09:00 A | 2026-10-20 11:00 A | 100% |  |  | start no earlier than 2026-10-20 09:00 | Тимофеев В; Николаев | 4h | 4h |
| 43 | 1.33.3 | контроль работы / отлака | 1h | 2026-10-23 09:00 A | 2026-10-23 10:00 A | 100% |  |  | start no earlier than 2026-10-23 09:00 | Дедов В | 1h | 1h |
| 44 | 1.34 | подклоючить в дренаж доп лотки сбора конденсата | 4h | 2026-10-20 09:00 A | 2026-10-20 13:00 A | 100% |  |  | start no earlier than 2026-10-20 09:00 | Труфанов А | 4h | 4h |
| 45 | 1.35 | **монтаж водоподготовка // разделить воду в экструдер и парогенераторы** | 169.5d? | 2026-03-19 09:00 A | 2026-10-29 13:00 | 95% | 8.03d? | 98.09d |  |  | 293h | 279.5h |
| 46 | 1.35.1 | **монтаж водоподготовка** | 3.5d? | 2026-10-26 09:00 A | 2026-10-29 13:00 A | 100% |  |  |  |  | 24h | 24h |
| 47 | 1.35.1.1 | купить тройники / краны | 1d? | 2026-10-26 09:00 A | 2026-10-26 18:00 A | 100% |  |  | start no earlier than 2026-10-26 09:00 | Зорькин В | 8h | 8h |
| 48 | 1.35.1.2 | монтаж трасса раздельная, что можно без отключения | 4h | 2026-10-27 09:00 A | 2026-10-27 13:00 A | 100% |  |  | start no earlier than 2026-10-27 09:00 | Бобренок В; Николаев | 8h | 8h |
| 49 | 1.35.1.3 | подключение в систему / подключение питание | 4h | 2026-10-29 09:00 A | 2026-10-29 13:00 A | 100% |  |  | start no earlier than 2026-10-29 09:00 | Труфанов А; Некрасов А | 8h | 8h |

| ID | WBS | Task | Type | Duration | Start | Finish | Predecessors | Complete | Remaining | Total slack | Free slack | Constraint | Resources | Work | Actual work |
| --- | --- | --- | --- | --- | --- | --- | --- | --- | --- | --- | --- | --- | --- | --- | --- |
| 50 | 1.35.2 | **разделение воды ПГ / экструдер** |  | 67.31d | 2026-08-07 09:00 A | 2026-10-28 11:30 |  | 18% | 55.07d | 99.28d |  |  |  | 16.5h | 3h |
| 51 | 1.35.2.1 | изготовить промежуточную емкость для прекондера, подача воды, сделать по аналогу 3 цеха | manual | 2h | 2026-10-05 09:00 | 2026-10-05 11:00 |  |  |  |  |  | start no earlier than 2026-10-05 09:00 | Тимофеев В | 2h |  |
| 52 | 1.35.2.2 | **воставноить насосы пирльстатические** |  | 6.31d | 2026-10-20 09:00 A | 2026-10-28 11:30 A |  | 100% |  |  |  |  |  | 3h | 3h |
| 53 | 1.35.2.2.1 | Подать информацию (список), что необходимо заказать для восстановления насосов |  | 30min | 2026-10-28 09:00 A | 2026-10-28 09:30 A |  | 100% |  |  |  | start no earlier than 2026-10-28 09:00 | Тимофеев В | 0.5h | 0.5h |
| 54 | 1.35.2.2.2 | заявка трубка |  | 15min | 2026-10-20 09:00 A | 2026-10-20 09:15 A |  | 100% |  |  |  | start no earlier than 2026-10-20 09:00 | Зорькин В | 0.25h | 0.25h |
| 55 | 1.35.2.2.3 | контроль доставка |  | 15min | 2026-10-27 09:15 A | 2026-10-27 09:30 A | 54FS+5d | 100% |  |  |  | start no earlier than 2026-10-19 08:00 | Зорькин В | 0.25h | 0.25h |
| 56 | 1.35.2.2.4 | сборка |  | 2h | 2026-10-28 09:30 A | 2026-10-28 11:30 A | 55FS+1d | 100% |  |  |  | start no earlier than 2026-10-19 08:00 | Тимофеев В | 2h | 2h |
| 57 | 1.35.2.3 | **монтаж на линия 1** |  | 18.44d | 2026-08-07 09:00 | 2026-09-02 12:30 |  |  |  | 148.16d |  |  |  | 11.5h |  |
| 58 | 1.35.2.3.1 | заявка на счетчик, насос, 3х ход клапан, фитинги, канистра |  | 1h | 2026-08-07 09:00 | 2026-08-07 10:00 |  |  |  | 148.16d | 0d | start no earlier than 2026-08-07 09:00 | Зорькин В | 1h |  |
| 59 | 1.35.2.3.2 | контроль поставки |  | 30min | 2026-08-28 10:00 | 2026-08-28 10:30 | 58FS+15d |  |  | 148.16d | 0d | start no earlier than 2026-08-12 09:00 | Зорькин В | 0.5h |  |
| 60 | 1.35.2.3.3 | сборка корпус |  | 4h | 2026-08-31 10:30 | 2026-08-31 15:30 | 59FS+1d |  |  | 148.16d | 0d | start no earlier than 2026-08-12 09:00 | Тимофеев В | 4h |  |
| 61 | 1.35.2.3.4 | монтаж линия 1 |  | 6h | 2026-09-01 15:30 | 2026-09-02 12:30 | 60FS+1d |  |  | 148.16d |  | start no earlier than 2026-08-12 09:00 | Тимофеев В | 6h |  |
| 62 | 1.35.3 | заявка поплавкой клапан вертикальный, подводка с боку по аналогии с 4ц |  | 1h | 2026-03-19 09:00 A | 2026-03-19 10:00 A |  | 100% |  |  |  | start no earlier than 2026-03-19 08:00 | Зорькин В | 1h | 1h |
| 63 | 1.35.4 | доставка |  | 10d | 2026-03-19 10:00 A | 2026-04-02 10:00 A | 62 | 100% |  |  |  | start no earlier than 2026-03-19 08:00 | Карабанов | 80h | 80h |
| 64 | 1.35.5 | испытать производсительность маленького черн насоса с "медленным" счетким |  | 2h | 2026-05-20 09:00 A | 2026-05-20 11:00 A |  | 100% |  |  |  | start no earlier than 2026-05-20 09:00 | Тимофеев В | 2h | 2h |
| 65 | 1.35.6 | изготовить емкость для поплавкой камеры и насоса из нерж |  | 4h | 2026-04-27 09:00 A | 2026-04-27 13:00 A |  | 100% |  |  |  | start no earlier than 2026-04-27 09:00 | Макаревич А | 4h | 4h |
| 66 | 1.35.7 | доставка частотный 220 контроль | milestone | 0d | 2026-04-24 09:00 A | 2026-04-24 09:00 A |  | 100% |  |  |  | start no earlier than 2026-04-24 09:00 | Зорькин В |  |  |
| 67 | 1.35.8 | испытать регулирование насоса на частотнике |  | 1h | 2026-05-26 09:00 A | 2026-05-26 10:00 A |  | 100% |  |  |  | start no earlier than 2026-05-26 09:00 | Дедов В | 1h | 1h |
| 68 | 1.35.9 | монтаж насоса + бак нерж на линия 2 |  | 1h | 2026-05-27 09:00 A | 2026-05-27 10:00 A |  | 100% |  |  |  | start no earlier than 2026-05-27 09:00 | Тимофеев В | 1h | 1h |
| 69 | 1.35.10 | монтаж розетка, кабель до насаса, подключение двигатель насоса |  | 1h | 2026-05-27 09:00 A | 2026-05-27 10:00 A |  | 100% |  |  |  | start no earlier than 2026-05-27 09:00 | Бундин В | 1h | 1h |
| 70 | 1.35.11 | подключение насос + счетчик + кран + частотник - сборка схема с байпасом на мал насосе |  | 2h | 2026-08-11 09:00 A | 2026-08-11 11:00 A |  | 100% |  |  |  | start no earlier than 2026-08-11 09:00 | Тимофеев В | 2h | 2h |
| 71 | 1.35.12 | установить счетчик в линию |  | 1h | 2026-08-12 09:00 A | 2026-08-12 10:00 A |  | 100% |  |  |  | start no earlier than 2026-08-12 09:00 | Тимофеев В | 1h | 1h |
| 72 | 1.35.13 | испытания производительности и регулировки |  | 1h | 2026-08-12 09:00 A | 2026-08-12 10:00 A |  | 100% |  |  |  | start no earlier than 2026-08-12 09:00 | Тимофеев В | 1h | 1h |
| 73 | 1.35.14 | тестирование работы при обновленном SSID |  | 147.5h | 2026-08-07 09:00 A | 2026-09-02 12:30 A |  | 100% |  |  |  |  | Домоводов К | 147.5h | 147.5h |
| 74 | 1.35.15 | подключть конденсатор к насосу, запуск системы |  | 1h | 2026-05-27 08:00 A | 2026-05-27 10:00 A |  | 100% |  |  |  | start no earlier than 2026-05-27 08:00 | Дедов В | 1h | 1h |
| 75 | 1.35.16 | подготовить емкость нерж (попловок, сгон) для подключения к насосу |  | 4h | 2026-05-26 09:00 A | 2026-05-26 13:00 A |  | 100% |  |  |  | start no earlier than 2026-05-26 09:00 | Бундин В | 4h | 4h |
| 76 | 1.35.17 | испытать насос на часотоном приводе |  | 2h | 2026-05-19 09:00 A | 2026-05-19 11:00 A | 66 | 100% |  |  |  | start no earlier than 2026-05-20 09:00 | Тимофеев В | 2h | 2h |
| 77 | 1.35.18 | перенос с 3й линии бак с насосом, установка на линия 2 |  | 4h | 2026-04-08 09:00 A | 2026-04-08 13:00 A | 65 | 100% |  |  |  | start no earlier than 2026-04-08 09:00 | Некрасов А | 4h | 4h |

| ID | WBS | Task | Type | Duration | Start | Finish | Predecessors | Complete | Total slack | Free slack | Constraint | Resources | Work | Actual work |
| --- | --- | --- | --- | --- | --- | --- | --- | --- | --- | --- | --- | --- | --- | --- |
| 78 | 1.36 | **Входная дверь 1 цех - замена шарниров** |  | 10.12d | 2026-10-10 09:00 A | 2026-10-23 10:00 A |  | 100% |  |  |  |  | 2.33h | 2.33h |
| 79 | 1.36.1 | Посмотреть входные двери в 1 цех, тяжело закрываются, устранить | manual | 1h | 2026-10-10 09:00 A | 2026-10-10 10:00 A |  | 100% |  |  | start no earlier than 2026-10-10 09:00 | Бундин В | 1h | 1h |
| 80 | 1.36.2 | Заявка |  | 10min | 2026-10-14 09:00 A | 2026-10-14 09:10 A |  | 100% |  |  | start no earlier than 2026-10-14 09:00 | Зорькин В | 0.17h | 0.17h |
| 81 | 1.36.3 | контроль |  | 10min | 2026-10-21 09:00 A | 2026-10-21 09:10 A |  | 100% |  |  | start no earlier than 2026-10-21 09:00 | Зорькин В | 0.17h | 0.17h |
| 82 | 1.36.4 | Замена петли | manual | 1h | 2026-10-23 09:00 A | 2026-10-23 10:00 A |  | 100% |  |  | start no earlier than 2026-10-23 09:00 | Бундин В | 1h | 1h |
| 83 | 1.37 | Увезти бетономешалку и лестницу с пандуса (бетономешалку прикрутить к паллету на перфоленту и сразу поставить на полку |  | 1d? | 2026-10-12 09:00 A | 2026-10-12 18:00 A |  | 100% |  |  | start no earlier than 2026-10-12 08:00 |  |  |  |
| 84 | 1.38 | Установить вентилятор на пробник (на столе в слесарке?) |  | 1h | 2026-10-09 09:00 A | 2026-10-09 10:00 A |  | 100% |  |  | start no earlier than 2026-10-09 09:00 | Дедов В | 1h | 1h |
| 85 | 1.39 | Убрать пневмотрубу из гидролизатной, видео скинул, муфту взять в кабинете у нас. Остановку согласовать, сделать все за 20 мин максимум |  | 20min | 2026-10-08 09:00 A | 2026-10-08 09:20 A |  | 100% |  |  | start no earlier than 2026-10-08 08:00 | Бобренок В | 0.33h | 0.33h |
| 86 | 1.40 | Устранение течи с вентиляции, предложить варианты, выслушать вариант домоводова |  | 3h | 2026-10-06 09:00 A | 2026-10-06 12:00 A |  | 100% |  |  | start no earlier than 2026-10-06 09:00 | Труфанов А | 3h | 3h |
| 87 | 1.41 | Изготовление и установка крышек на бачок гидролизата в 1 цеху |  | 3h | 2026-10-07 09:00 A | 2026-10-07 12:00 A |  | 100% |  |  | start no earlier than 2026-10-07 09:00 | Бундин В | 3h | 3h |
| 88 | 1.42 | **Вал прекондиционера 1 линия** |  | 1.88d | 2026-10-05 09:00 A | 2026-10-06 17:00 A |  | 100% |  |  |  |  | 11.67h | 11.67h |
| 89 | 1.42.1 | С 8 утра снимаем вал с прекондиционера 1 линия. |  | 3h | 2026-10-05 09:00 A | 2026-10-05 12:00 A |  | 100% |  |  | start no earlier than 2026-10-05 09:00 | Труфанов А | 3h | 3h |
| 90 | 1.42.2 | Образмеривание вала |  | 1h | 2026-10-05 12:00 A | 2026-10-05 13:00 A | 89 | 100% |  |  | start no earlier than 2026-10-02 08:00 | Труфанов А | 1h | 1h |
| 91 | 1.42.3 | Передача всей необходимой информации токарю |  | 30min | 2026-10-05 14:00 A | 2026-10-05 14:30 A | 90 | 100% |  |  | start no earlier than 2026-10-05 09:00 | Зорькин В | 0.5h | 0.5h |
| 92 | 1.42.4 | Контроль |  | 10min | 2026-10-05 14:30 A | 2026-10-05 14:40 A | 91 | 100% |  |  | start no earlier than 2026-10-05 09:00 | Зорькин В | 0.17h | 0.17h |
| 93 | 1.42.5 | Доставка |  | 3h | 2026-10-06 09:00 A | 2026-10-06 12:00 A | 92 | 100% |  |  | start no earlier than 2026-10-06 09:00 | Логист | 3h | 3h |
| 94 | 1.42.6 | Ставим новый вал сразу после прихода |  | 4h | 2026-10-06 12:00 A | 2026-10-06 17:00 A | 93 | 100% |  |  | start no earlier than 2026-10-06 09:00 | Труфанов А | 4h | 4h |
| 95 | 1.43 | **ремонт шарнир подачи пакетов квадропак** |  | 5d? | 2026-10-01 09:00 | 2026-10-06 18:00 |  |  | 115.59d |  |  |  |  |  |
| 96 | 1.43.1 | Составить заявку на шарнир подачи пакетов (зона 1) ВЭД партнер |  | 1d? | 2026-10-01 09:00 | 2026-10-01 18:00 |  |  | 115.59d | 0d | start no earlier than 2026-10-01 08:00 |  |  |  |
| 97 | 1.43.2 | Получить счет - оплата |  | 1d? | 2026-10-02 09:00 | 2026-10-02 18:00 | 96 |  | 115.59d | 0d | start no earlier than 2026-10-01 08:00 |  |  |  |
| 98 | 1.43.3 | Контроль доставки |  | 1d? | 2026-10-04 09:00 | 2026-10-04 18:00 | 97 |  | 115.59d | 0d | start no earlier than 2026-10-01 08:00 |  |  |  |
| 99 | 1.43.4 | Приемка |  | 1d? | 2026-10-05 09:00 | 2026-10-05 18:00 | 98 |  | 115.59d | 0d | start no earlier than 2026-10-01 08:00 |  |  |  |
| 100 | 1.43.5 | Установка |  | 1d? | 2026-10-06 09:00 | 2026-10-06 18:00 | 99 |  | 115.59d |  | start no earlier than 2026-10-01 08:00 |  |  |  |
| 101 | 1.44 | Установить газлифты на раму весов в плоскостях Х и У |  | 3h | 2026-10-02 09:00 A | 2026-10-02 12:00 A |  | 100% |  |  | start no earlier than 2026-10-02 09:00 | Тимофеев В; Бундин В | 6h | 6h |

| ID | WBS | Task | Duration | Start | Finish | Predecessors | Complete | Remaining | Total slack | Free slack | Constraint | Resources | Work | Actual work |
| --- | --- | --- | --- | --- | --- | --- | --- | --- | --- | --- | --- | --- | --- | --- |
| 102 | 1.45 | **сборка рама для труб приточной вентиляции** | 32d? | 2026-10-15 09:00 A | 2026-11-20 18:00 |  | 64% | 11.37d? | 77.59d |  |  |  | 92.5h | 62h |
| 103 | 1.45.1 | Срезать кончики свай на 300 | 2h | 2026-11-17 09:00 | 2026-11-17 11:00 |  |  |  | 81.34d |  | start no earlier than 2026-11-17 09:00 | Труфанов А; Некрасов А | 4h |  |
| 104 | 1.45.2 | Монтаж головок | 1h | 2026-11-17 10:00 | 2026-11-17 11:00 | 105 |  |  | 81.34d |  |  | Труфанов А; Некрасов А | 2h |  |
| 105 | 1.45.3 | Лазером сделать привязки свай относительно вентиляции (колонны здания) | 1h | 2026-11-17 09:00 | 2026-11-17 10:00 |  |  |  | 81.34d | 0d | start no earlier than 2026-11-17 09:00 | Труфанов А; Некрасов А | 2h |  |
| 106 | 1.45.4 | Монтаж арматурной сетки | 4h | 2026-11-17 09:00 | 2026-11-17 13:00 |  |  |  | 81.09d |  | start no earlier than 2026-11-17 09:00 | Труфанов А; Некрасов А | 8h |  |
| 107 | 1.45.5 | составить проект рамы | 4h | 2026-10-15 09:00 A | 2026-10-15 13:00 A |  | 100% |  |  |  | start no earlier than 2026-10-15 09:00 | Домоводов К | 4h | 4h |
| 108 | 1.45.6 | заявка металл | 4h | 2026-10-15 14:00 A | 2026-10-15 18:00 A | 107 | 100% |  |  |  | start no earlier than 2026-09-30 08:00 | Домоводов К | 4h | 4h |
| 109 | 1.45.7 | обновить схему для согласования | 4h | 2026-10-20 09:00 A | 2026-10-20 13:00 A |  | 100% |  |  |  | start no earlier than 2026-10-20 09:00 | Домоводов К | 4h | 4h |
| 110 | 1.45.8 | проект подготовить заказ на пластины | 4h | 2026-10-22 09:00 A | 2026-10-22 13:00 A |  | 100% |  |  |  | start no earlier than 2026-10-22 08:00 | Домоводов К | 4h | 4h |
| 111 | 1.45.9 | контроль доставка | 15min | 2026-10-29 09:00 A | 2026-10-29 09:15 A | 108FS+10d | 100% |  |  |  | start no earlier than 2026-09-30 08:00 | Зорькин В | 0.25h | 0.25h |
| 112 | 1.45.10 | **покраска металл** | 12.38d | 2026-10-27 09:00 A | 2026-11-10 12:00 A |  | 100% |  |  |  |  |  | 36.5h | 36.5h |
| 113 | 1.45.10.1 | Докрасить металл на рампе | 3h | 2026-11-10 09:00 A | 2026-11-10 12:00 A |  | 100% |  |  |  | start no earlier than 2026-11-10 09:00 | Макаревич А; Николаев | 6h | 6h |
| 114 | 1.45.10.2 | заявка грунт ПФ116 | 15min | 2026-10-27 09:00 A | 2026-10-27 09:15 A |  | 100% |  |  |  | start no earlier than 2026-10-27 08:00 | Домоводов К | 0.25h | 0.25h |
| 115 | 1.45.10.3 | контроль доставка | 15min | 2026-11-04 09:00 A | 2026-11-04 09:15 A | 114 | 100% |  |  |  | start no earlier than 2026-11-04 09:00 | Домоводов К | 0.25h | 0.25h |
| 116 | 1.45.10.4 | покраска металл на рампе 1 цех по верху, то что лежит, перекидывать не нужно | 4h | 2026-11-04 09:15 A | 2026-11-04 14:15 A | 115 | 100% |  |  |  | start no earlier than 2026-10-27 08:00 | Бобренок В | 4h | 4h |
| 117 | 1.45.10.5 | Продолжить покраску металла на пандусе | 4h | 2026-11-05 09:00 A | 2026-11-05 13:00 A |  | 100% |  |  |  | start no earlier than 2026-11-05 09:00 | Труфанов А; Некрасов А; Тимофеев В; Бобренок В | 16h | 16h |
| 118 | 1.45.10.6 | Организовать перевозку металла в 3 цех | 2h | 2026-11-06 09:00 A | 2026-11-06 11:00 A |  | 100% |  |  |  | start no earlier than 2026-11-06 09:00 | Труфанов А; Некрасов А; Тимофеев В; Макаревич А; Николаев | 10h | 10h |
| 119 | 1.45.11 | **изг кронштейнов** | 3.03d | 2026-10-27 09:00 A | 2026-10-30 09:15 |  | 50% | 1.52d | 97.56d |  |  |  | 0.5h | 0.25h |
| 120 | 1.45.11.1 | заявка оплата ТВР | 15min | 2026-10-27 09:00 A | 2026-10-27 09:15 A |  | 100% |  |  |  | start no earlier than 2026-10-27 09:00 | Зорькин В | 0.25h | 0.25h |
| 121 | 1.45.11.2 | контроль орг забрать | 15min | 2026-10-30 09:00 | 2026-10-30 09:15 |  |  |  | 97.56d |  | start no earlier than 2026-10-30 09:00 | Зорькин В | 0.25h |  |
| 122 | 1.45.12 | **бурение свай** | 22.03d? | 2026-10-27 09:00 A | 2026-11-20 09:15 |  | 97% | 0.6d? | 78.56d |  |  |  | 9.25h | 9h |
| 123 | 1.45.12.1 | получить счет /договор | 1h | 2026-10-27 09:00 A | 2026-10-27 10:00 A |  | 100% |  |  |  | start no earlier than 2026-10-27 08:00 | Домоводов К | 1h | 1h |
| 124 | 1.45.12.2 | перекладка труб 500 соседких краном | 1d? | 2026-10-27 09:00 A | 2026-10-27 18:00 A |  | 100% |  |  |  | start no earlier than 2026-10-27 08:00 | Труфанов А; Некрасов А | 8h | 8h |
| 125 | 1.45.12.3 | примерка пластины с отверстием на сваю | 15min | 2026-11-20 09:00 | 2026-11-20 09:15 |  |  |  | 78.56d |  | start no earlier than 2026-11-20 09:00 | Некрасов А | 0.25h |  |

| ID | WBS | Task | Duration | Start | Finish | Predecessors | Complete | Total slack | Free slack | Constraint | Resources | Work | Actual work |
| --- | --- | --- | --- | --- | --- | --- | --- | --- | --- | --- | --- | --- | --- |
| 126 | 1.45.13 | **сборка рама в цехе** | 1.12d | 2026-11-09 09:00 | 2026-11-10 10:00 | 111 |  | 87.47d | 9.88d |  |  | 6h |  |
| 127 | 1.45.13.1 | распаковка настройка станка для резки проката | 1h | 2026-11-10 09:00 | 2026-11-10 10:00 |  |  | 87.47d |  | start no earlier than 2026-11-10 09:00 | Труфанов А; Некрасов А | 2h |  |
| 128 | 1.45.13.2 | разработка инструкции по ТБ на данный станок | 4h | 2026-11-09 09:00 | 2026-11-09 13:00 |  |  | 88.09d |  | start no earlier than 2026-11-09 08:00 | Зорькин В | 4h |  |
| 129 | 1.45.14 | монтаж рама на цех краном | 1d? | 2026-11-20 09:00 | 2026-11-20 18:00 | 126 |  | 77.59d |  | start no earlier than 2026-11-20 09:00 | Некрасов А | 8h |  |
| 130 | 1.46 | герметизация неиспользуемых отверстий после модернизации вентиляции | 1d? | 2026-09-30 09:00 | 2026-09-30 18:00 |  |  | 120.59d |  | start no earlier than 2026-09-30 08:00 |  |  |  |
| 131 | 1.47 | **сборка системы дренажа для рекуператоров ввентиляции** | 2d? | 2026-09-30 09:00 A | 2026-10-01 18:00 A |  | 100% |  |  |  |  | 30h | 30h |
| 132 | 1.47.1 | Монтаж трассы слива в раковину с рекурператоров | 7h | 2026-09-30 09:00 A | 2026-09-30 17:00 A |  | 100% |  |  | start no earlier than 2026-09-30 09:00 | Труфанов А; Некрасов А | 14h | 14h |
| 133 | 1.47.2 | продолжить монтаж | 1d? | 2026-10-01 09:00 A | 2026-10-01 18:00 A |  | 100% |  |  | start no earlier than 2026-10-02 09:00 | Труфанов А; Некрасов А | 16h | 16h |
| 134 | 1.48 | Проверка весов на 2 линии красный смеситель, со слов валентина, после замены блока питания, работает, а потом выбивает весы, перестают работать | 1h | 2026-09-29 09:00 A | 2026-09-29 10:00 A |  | 100% |  |  | start no earlier than 2026-09-29 09:00 | Дедов В | 1h | 1h |
| 135 | 1.49 | Повторный замер параметров в 1 цеху, вентилляция (подробности по точкам у Домоводова) | 5h | 2026-09-25 09:00 A | 2026-09-25 15:00 A |  | 100% |  |  | start no earlier than 2026-09-25 09:00 | Труфанов А; Некрасов А | 10h | 10h |
| 136 | 1.50 | замеры в точках выброса вентиляции с проедставителем | 6h | 2026-09-29 09:00 A | 2026-09-29 16:00 A |  | 100% |  |  | start no earlier than 2026-09-29 09:00 | Труфанов А; Некрасов А | 12h | 12h |
| 137 | 1.51 | изготовить переход между прекондиционер и экструдер на 1 линию | 1d? | 2026-09-27 09:00 A | 2026-09-27 18:00 A |  | 100% |  |  | start no earlier than 2026-09-27 09:00 | Макаревич А | 8h | 8h |
| 138 | 1.52 | уборка остатков монтажа с рампы | 1h | 2026-09-14 09:00 A | 2026-09-14 10:00 A |  | 100% |  |  | start no earlier than 2026-09-14 09:00 | Некрасов А; Тимофеев В; Труфанов А | 3h | 3h |
| 139 | 1.53 | крепить табличку видеонаблюдение в офисе | 15min | 2026-09-14 09:00 A | 2026-09-14 09:15 A |  | 100% |  |  | start no earlier than 2026-09-14 09:00 | Тимофеев В | 0.25h | 0.25h |
| 140 | 1.54 | закрыть чердак у Лукаса | 15min | 2026-09-14 09:00 A | 2026-09-14 09:15 A |  | 100% |  |  | start no earlier than 2026-09-14 09:00 | Труфанов А; Некрасов А | 0.5h | 0.5h |
| 141 | 1.55 | **ремонт весов смеситель 1 линия** | 1.12d | 2026-09-24 09:00 A | 2026-09-25 10:00 A |  | 100% |  |  |  |  | 2h | 2h |
| 142 | 1.55.1 | Реанимировать весы, чтобы показывали. Смесители | 1h | 2026-09-24 09:00 A | 2026-09-24 10:00 A |  | 100% |  |  | start no earlier than 2026-09-24 09:00 | Дедов В | 1h | 1h |
| 143 | 1.55.2 | подключить блок питания найти на складе | 1h | 2026-09-25 09:00 A | 2026-09-25 10:00 A |  | 100% |  |  | start no earlier than 2026-09-25 08:00 | Бундин В | 1h | 1h |
| 144 | 1.56 | Закрыть каналыгу. На анкера | 2h | 2026-09-15 09:00 A | 2026-09-15 11:00 A |  | 100% |  |  | start no earlier than 2026-09-15 09:00 | Бундин В | 2h | 2h |
| 145 | 1.57 | **Дополнительное освещение на Рампе** | 41.12d | 2026-09-11 09:00 A | 2026-10-28 10:00 A |  | 100% |  |  |  |  | 7.17h | 7.17h |
| 146 | 1.57.1 | Прокинуть кабель | 2h | 2026-09-11 09:00 A | 2026-09-11 11:00 A |  | 100% |  |  | start no earlier than 2026-09-11 09:00 | Бобренок В | 2h | 2h |
| 147 | 1.57.2 | установить доп светильник на погрузочной рампе | 4h | 2026-09-15 09:00 A | 2026-09-15 13:00 A | 146 | 100% |  |  | start no earlier than 2026-09-15 09:00 | Бобренок В | 4h | 4h |
| 148 | 1.57.3 | заявка выключатель | 5min | 2026-09-16 09:00 A | 2026-09-16 09:05 A | 147 | 100% |  |  | start no earlier than 2026-09-16 08:00 | Зорькин В | 0.08h | 0.08h |
| 149 | 1.57.4 | контроль | 5min | 2026-09-25 09:00 A | 2026-09-25 09:05 A | 148FS+7d | 100% |  |  | start no earlier than 2026-09-25 09:00 | Зорькин В | 0.08h | 0.08h |
| 150 | 1.57.5 | пожключение выключателя | 1h | 2026-10-28 09:00 A | 2026-10-28 10:00 A | 149FS+1d | 100% |  |  | start no earlier than 2026-10-28 09:00 | Бобренок В | 1h | 1h |
| 151 | 1.58 | востановить светильник отсек выгрузки ГП + установить доп светильник | 4h | 2026-09-09 09:00 A | 2026-09-09 13:00 A |  | 100% |  |  | start no earlier than 2026-09-09 09:00 | Бундин В | 4h | 4h |

| ID | WBS | Task | Type | Duration | Start | Finish | Predecessors | Complete | Remaining | Total slack | Free slack | Constraint | Resources | Work | Actual work |
| --- | --- | --- | --- | --- | --- | --- | --- | --- | --- | --- | --- | --- | --- | --- | --- |
| 152 | 1.59 | **реконструкция хранения гидролизатов и маршрут подачи навесок** |  | 67d | 2026-09-08 09:00 A | 2026-11-23 18:00 |  | 36% | 43.02d | 76.59d |  |  |  | 69.08h | 24.5h |
| 153 | 1.59.1 | **перенос системы отопления** |  | 0.12d | 2026-09-11 09:00 A | 2026-09-11 10:00 A |  | 100% |  |  |  |  |  | 1h | 1h |
| 154 | 1.59.1.1 | посик сварщиков |  | 1h | 2026-09-11 09:00 A | 2026-09-11 10:00 A |  | 100% |  |  |  | start no earlier than 2026-09-11 09:00 | Домоводов К | 1h | 1h |
| 155 | 1.59.2 | **монтаж доп плащадки** |  | 47d | 2026-09-28 09:00 A | 2026-11-23 18:00 |  | 9% | 42.97d | 76.59d |  |  |  | 17.5h | 1.5h |
| 156 | 1.59.2.1 | составить чертеж площадки |  | 1h | 2026-09-28 09:00 A | 2026-09-28 10:00 A |  | 100% |  |  |  | start no earlier than 2026-09-28 09:00 | Домоводов К | 1h | 1h |
| 157 | 1.59.2.2 | заявка |  | 15min | 2026-10-13 09:00 A | 2026-10-13 09:15 A | 156FS+1d | 100% |  |  |  | start no earlier than 2026-10-13 09:00 | Домоводов К | 0.25h | 0.25h |
| 158 | 1.59.2.3 | получен счет | milestone | 0d | 2026-10-19 08:00 A | 2026-10-19 08:00 A |  | 100% |  |  |  | start no earlier than 2026-10-19 08:00 | Домоводов К |  |  |
| 159 | 1.59.2.4 | контроль доставки |  | 15min | 2026-10-26 09:00 A | 2026-10-26 09:15 A | 157FS+5d, 158FS+5d | 100% |  |  |  | start no earlier than 2026-09-08 08:00 | Зорькин В | 0.25h | 0.25h |
| 160 | 1.59.2.5 | монтаж |  | 2d | 2026-11-20 09:00 | 2026-11-23 18:00 | 159FS+1d |  |  | 76.59d |  | start no earlier than 2026-11-20 09:00 | Тимофеев В | 16h |  |
| 161 | 1.59.3 | **монтаж перегородка корридор** |  | 24.97d | 2026-10-26 09:15 | 2026-11-23 18:00 |  |  |  | 76.59d |  |  |  | 16.25h |  |
| 162 | 1.59.3.1 | контроль доставки |  | 15min | 2026-10-26 09:15 | 2026-10-26 09:30 | 159 |  |  | 98.53d | 21.94d | start no earlier than 2026-09-08 08:00 | Зорькин В | 0.25h |  |
| 163 | 1.59.3.2 | монтаж |  | 2d | 2026-11-20 09:00 | 2026-11-23 18:00 | 162FS+1d |  |  | 76.59d |  | start no earlier than 2026-11-20 09:00 | Тимофеев В | 16h |  |
| 164 | 1.59.4 | **врезка двери в проем на упаковку** |  | 0.04d | 2026-09-09 09:00 | 2026-09-09 09:20 |  |  |  | 142.55d |  |  |  | 0.33h |  |
| 165 | 1.59.4.1 | планирование с Олегом, как сделана стена |  | 20min | 2026-09-09 09:00 | 2026-09-09 09:20 |  |  |  | 142.55d |  | start no earlier than 2026-09-09 09:00 | Домоводов К | 0.33h |  |
| 166 | 1.59.5 | востановить уплотнения двери в гидролизатной, все резинки, примыкания |  | 3h | 2026-10-20 09:00 | 2026-10-20 12:00 |  |  |  | 105.22d |  | start no earlier than 2026-10-20 09:00 | Тимофеев В; Николаев | 6h |  |
| 167 | 1.59.6 | монтаж трассы к батарее (позвонить труфанову) приоритетная задача |  | 3h | 2026-10-21 09:00 | 2026-10-21 12:00 |  |  |  | 104.22d |  | start no earlier than 2026-10-21 09:00 | Бундин В; Труфанов А | 6h |  |
| 168 | 1.59.7 | перенос батареи отопления в гидролизатной |  | 2h | 2026-10-12 09:00 A | 2026-10-12 11:00 A |  | 100% |  |  |  | start no earlier than 2026-10-12 09:00 | Труфанов А; Некрасов А | 4h | 4h |
| 169 | 1.59.8 | демонтаж бетонного отлива/отмостка |  | 2d | 2026-09-08 09:00 A | 2026-09-09 18:00 A |  | 100% |  |  |  | start no earlier than 2026-09-08 08:00 | Олег | 16h | 16h |
| 170 | 1.59.9 | Помощь Олегу пока ставит шпильки |  | 1h | 2026-10-12 09:00 A | 2026-10-12 10:00 A |  | 100% |  |  |  | start no earlier than 2026-10-12 08:00 | Труфанов А; Бобренок В | 2h | 2h |
| 171 | 1.60 | **ревизия парогенератор КАРЧЕР** |  | 3.03d? | 2026-09-21 09:00 A | 2026-09-24 09:15 A |  | 100% |  |  |  |  |  | 8.5h | 8.5h |
| 172 | 1.60.1 | орг отправить курьера на пнд |  | 15min | 2026-09-23 09:00 A | 2026-09-23 09:15 A |  | 100% |  |  |  | start no earlier than 2026-09-23 09:00 | Зорькин В | 0.25h | 0.25h |
| 173 | 1.60.2 | контроль доставки |  | 15min | 2026-09-24 09:00 A | 2026-09-24 09:15 A | 172 | 100% |  |  |  | start no earlier than 2026-09-24 09:00 | Зорькин В | 0.25h | 0.25h |
| 174 | 1.60.3 | монтаж |  | 1d? | 2026-09-21 09:00 A | 2026-09-21 18:00 A | 173 | 100% |  |  |  | start no earlier than 2026-09-25 09:00 | Тимофеев В | 8h | 8h |
| 175 | 1.61 | **подключить циклоны 1 и 2 линия** |  | 1.12d | 2026-09-09 09:00 A | 2026-09-10 10:00 A |  | 100% |  |  |  |  |  | 1.17h | 1.17h |
| 176 | 1.61.1 | контроль поставка кабель |  | 10min | 2026-09-09 09:00 A | 2026-09-09 09:10 A |  | 100% |  |  |  | start no earlier than 2026-09-09 09:00 | Зорькин В | 0.17h | 0.17h |
| 177 | 1.61.2 | монтаж кабеля (временно удлинить от сущестующих концов) |  | 1h | 2026-09-10 09:00 A | 2026-09-10 10:00 A |  | 100% |  |  |  | start no earlier than 2026-09-10 09:00 | Бундин В | 1h | 1h |

| ID | WBS | Task | Type | Duration | Start | Finish | Predecessors | Complete | Remaining | Total slack | Constraint | Resources | Work | Actual work |
| --- | --- | --- | --- | --- | --- | --- | --- | --- | --- | --- | --- | --- | --- | --- |
| 178 | 1.62 | **бактерицидные лампы** |  | 7.12d | 2026-09-09 09:00 A | 2026-09-16 10:00 A |  | 100% |  |  |  |  | 3h | 3h |
| 179 | 1.62.1 | замена бактерицидных ламп в коридоре и посмотреть, где не горят |  | 1h | 2026-09-09 09:00 A | 2026-09-09 10:00 A |  | 100% |  |  | start no earlier than 2026-09-09 09:00 | Бундин В | 1h | 1h |
| 180 | 1.62.2 | ремонт лампы снятой бундиным с мойки экструдера |  | 1h | 2026-09-16 09:00 A | 2026-09-16 10:00 A |  | 100% |  |  | start no earlier than 2026-09-16 09:00 | Бундин В | 1h | 1h |
| 181 | 1.62.3 | ремонт лампы в тамбуре вывоз ГП |  | 1h | 2026-09-16 09:00 A | 2026-09-16 10:00 A |  | 100% |  |  | start no earlier than 2026-09-16 09:00 | Бундин В | 1h | 1h |
| 182 | 1.63 | исправить "не возможность открыть" краны фильтр жир 2л |  | 30min | 2026-09-10 09:00 A | 2026-09-10 09:30 A |  | 100% |  |  | start no earlier than 2026-09-10 09:00 | Тимофеев В | 0.5h | 0.5h |
| 183 | 1.64 | ремонт силиконовых уплотнений печи на сетке 1 и 2 л |  | 3h? | 2026-09-10 09:00 A | 2026-09-10 12:00 A |  | 100% |  |  | start no earlier than 2026-09-10 09:00 | Бундин В | 3h | 3h |
| 184 | 1.65 | **сместить квадропак в сторону охладителя 2л** |  | 20.5d | 2026-09-10 09:00 A | 2026-09-30 13:00 A |  | 100% |  |  |  |  | 20h | 20h |
| 185 | 1.65.1 | отключение / перенгос мехнизмов |  | 3h | 2026-09-10 09:00 A | 2026-09-10 12:00 A |  | 100% |  |  | start no earlier than 2026-09-10 09:00 | Некрасов А; Труфанов А | 6h | 6h |
| 186 | 1.65.2 | подключение |  | 3h | 2026-09-11 09:00 A | 2026-09-11 12:00 A |  | 100% |  |  | start no earlier than 2026-09-11 09:00 | Некрасов А; Труфанов А | 6h | 6h |
| 187 | 1.65.3 | доработка перил |  | 4h | 2026-09-30 09:00 A | 2026-09-30 13:00 A |  | 100% |  |  | start no earlier than 2026-09-30 09:00 | Труфанов А; Некрасов А | 8h | 8h |
| 188 | 1.66 | **квадропак - сделать силиконовый успокоитель между нория и весы 800*250 шаг шторок 60** |  | 30.12d | 2026-09-25 09:00 A | 2026-11-02 10:00 |  | 25% | 22.59d | 96.47d |  |  | 1.33h | 0.33h |
| 189 | 1.66.1 | заявка прозрачный силикон |  | 10min | 2026-09-25 09:00 A | 2026-09-25 09:10 A |  | 100% |  |  | start no earlier than 2026-09-25 09:00 | Зорькин В | 0.17h | 0.17h |
| 190 | 1.66.2 | доставка контроль |  | 10min | 2026-10-26 09:00 A | 2026-10-26 09:10 A | 189FS+1d | 100% |  |  | start no earlier than 2026-10-26 09:00 | Зорькин В | 0.17h | 0.17h |
| 191 | 1.66.3 | сборка |  | 1h | 2026-11-02 09:00 | 2026-11-02 10:00 | 190 |  |  | 96.47d | start no earlier than 2026-11-02 09:00 | Некрасов А | 1h |  |
| 192 | 1.67 | квадропак - ремонт люфта штанги нажима роликов открытия захватов на станции №1 |  | 4h | 2026-09-30 09:00 A | 2026-09-30 13:00 A |  | 100% |  |  | start no earlier than 2026-09-30 09:00 | Тимофеев В | 4h | 4h |
| 193 | 1.68 | квадропак - кронштейн пневовстряхивателя - востановить резтбу сквозную |  | 1h | 2026-09-30 09:00 A | 2026-09-30 10:00 A |  | 100% |  |  | start no earlier than 2026-09-30 09:00 | Тимофеев В | 1h | 1h |
| 194 | 1.69 | Ревизия утечек воздуха на квадропаке (важно проверить пневмораспределителях) и вакуумную систему (если работают, отменяем задание) | manual | 2h | 2026-09-23 09:00 A | 2026-09-23 11:00 A |  | 100% |  |  | start no earlier than 2026-09-23 09:00 | Тимофеев В | 2h | 2h |
| 195 | 1.70 | Комплексное ТО квадропака, проверка всех соединений, протяжка болтов на всех узлах | manual | 2h | 2026-09-23 09:00 A | 2026-09-23 11:00 A |  | 100% |  |  | start no earlier than 2026-09-23 09:00 | Тимофеев В | 2h | 2h |
| 196 | 1.71 | Сделать основную кнопку на НОТИСЕ, чтоб срабатывало от нее, а не от блока управления (схему взять у нас в кабинете) | manual | 1h | 2026-09-22 09:00 A | 2026-09-22 10:00 A |  | 100% |  |  | start no earlier than 2026-09-22 09:00 | Дедов В | 1h | 1h |
| 197 | 1.72 | Убрать все кабеля на полу в зоне фасовки, теко-нотис (кабельный менеджмент) |  | 2h | 2026-09-10 09:00 A | 2026-09-10 11:00 A |  | 100% |  |  | start no earlier than 2026-09-10 09:00 | Бундин В | 2h | 2h |
| 198 | 1.73 | Клемная коробка на жирах сделать, сейчас вся висит на хомутах 2 линия |  | 1h | 2026-09-07 09:00 A | 2026-09-07 10:00 A |  | 100% |  |  | start no earlier than 2026-09-05 09:00 | Дедов В | 1h | 1h |
| 199 | 1.74 | Ошибка на баке жиротопки 2 линия Err.4 /разобраться и устранить причину |  | 1h | 2026-09-04 09:00 A | 2026-09-04 10:00 A |  | 100% |  |  | start no earlier than 2026-09-04 09:00 | Бобренок В | 1h | 1h |
| 200 | 1.75 | Установить новые газлифты, которые получил Бобренок на жиротопку 2 этаж |  | 2h | 2026-09-07 09:00 A | 2026-09-07 11:00 A |  | 100% |  |  | start no earlier than 2026-09-07 09:00 | Тимофеев В | 2h | 2h |
| 201 | 1.76 | **Не работают роль ставни на жирах, не стопоряться сделать/устранить неисправность** |  | 20.02d | 2026-09-09 09:00 A | 2026-09-29 09:10 A |  | 100% |  |  |  |  | 8.33h | 8.33h |
| 202 | 1.76.1 | Вызвать подрядчика/контроль |  | 10min | 2026-09-09 09:00 A | 2026-09-09 09:10 A |  | 100% |  |  | start no earlier than 2026-09-09 09:00 | Зорькин В | 0.17h | 0.17h |
| 203 | 1.76.2 | получить счет на ремонт |  | 1d | 2026-09-09 09:10 A | 2026-09-10 09:10 A | 202 | 100% |  |  | start no earlier than 2026-09-08 09:00 | Зорькин В | 8h | 8h |
| 204 | 1.76.3 | согласовать с подрядчиком дату ремонта |  | 10min | 2026-09-29 09:00 A | 2026-09-29 09:10 A | 203 | 100% |  |  | start no earlier than 2026-09-29 09:00 | Зорькин В | 0.17h | 0.17h |
| 205 | 1.77 | закреить отбойник корридор навесок (заанкерить) |  | 1h | 2026-09-03 09:00 A | 2026-09-03 10:00 A |  | 100% |  |  | start no earlier than 2026-09-03 08:00 | Бобренок В | 1h | 1h |
| 206 | 1.78 | Переподключение кондиционера срежима кондиционера на автоматический |  | 15min | 2026-09-02 09:00 A | 2026-09-02 09:15 A |  | 100% |  |  | start no earlier than 2026-09-02 09:00 | Бобренок В | 0.25h | 0.25h |
| 207 | 1.79 | Замена редуктора поворотного стола |  | 1h | 2026-09-02 09:00 A | 2026-09-02 10:00 A |  | 100% |  |  | start no earlier than 2026-09-02 09:00 | Бобренок В | 1h | 1h |
| 208 | 1.80 | Программирование частотника теко 0,4 привод смещения ленты |  | 2h | 2026-09-02 09:00 A | 2026-09-02 11:00 A |  | 100% |  |  | start no earlier than 2026-09-02 09:00 | Тимофеев В | 2h | 2h |
| 209 | 1.81 | Прозвонить кабель паллетных весов ошибка Error 10 |  | 1h | 2026-09-07 09:00 A | 2026-09-07 10:00 A |  | 100% |  |  | start no earlier than 2026-09-05 09:00 | Дедов В | 1h | 1h |
| 210 | 1.82 | Замена подшипников на ножевом узле |  | 2h | 2026-09-01 09:00 A | 2026-09-01 11:00 A |  | 100% |  |  | start no earlier than 2026-09-01 09:00 | Бундин В | 2h | 2h |
| 211 | 1.83 | Замена насоса на водяной рубашке жиротопке 2 этаж |  | 2h | 2026-09-01 09:00 A | 2026-09-01 11:00 A |  | 100% |  |  | start no earlier than 2026-09-01 09:00 | Бундин В | 2h | 2h |
| 212 | 1.84 | Замена контактора 1 линия 2 зона экструдера |  | 1h | 2026-09-01 09:00 A | 2026-09-01 10:00 A |  | 100% |  |  | start no earlier than 2026-09-01 09:00 | Бундин В | 1h | 1h |
| 213 | 1.85 | Редуктор смесителя 1 линия, собрать информацию, что не так, что нужно сделать |  | 30min | 2026-09-02 09:00 A | 2026-09-02 09:30 A |  | 100% |  |  | start no earlier than 2026-09-02 09:00 | Тимофеев В | 0.5h | 0.5h |
| 214 | 1.86 | Ремонт мухобойки 1 цех в корридоре завоза навесок |  | 1h | 2026-09-01 09:00 A | 2026-09-01 10:00 A |  | 100% |  |  | start no earlier than 2026-09-01 09:00 | Труфанов А | 1h | 1h |
| 215 | 1.87 | капает с кондиционера ближе к жировику (устранить) |  | 2h | 2026-08-31 09:00 A | 2026-08-31 11:00 A |  | 100% |  |  | start no earlier than 2026-08-31 09:00 | Бундин В; Тимофеев В | 4h | 4h |
| 216 | 1.88 | отвезти внутренний блок с 1 цеха на синий склад | manual | 1h | 2026-08-30 09:00 A | 2026-08-30 10:00 A |  | 100% |  |  | start no earlier than 2026-08-30 09:00 | Бундин В | 1h | 1h |
| 217 | 1.89 | чистка фильтра кондиционера между печками | manual | 1h | 2026-08-31 09:00 A | 2026-08-31 10:00 A |  | 100% |  |  | start no earlier than 2026-08-31 09:00 | Бундин В | 1h | 1h |
| 218 | 1.90 | ревизия приточной вентиляции (протяжка контактов и т.д.) | manual | 3h | 2026-08-31 09:00 A | 2026-08-31 12:00 A |  | 100% |  |  | start no earlier than 2026-08-31 09:00 | Дедов В | 3h | 3h |
| 219 | 1.91 | прикрутить лоток между барабанами, чтобы не бил о лопасти 1 линия | manual | 1h | 2026-08-30 09:00 A | 2026-08-30 10:00 A |  | 100% |  |  | start no earlier than 2026-08-30 09:00 | Бундин В | 1h | 1h |
| 220 | 1.92 | улитка на подиуме за цехом, прикрутить отвод в бок (отвод под подиумом) | manual | 1h | 2026-08-31 09:00 A | 2026-08-31 10:00 A |  | 100% |  |  | start no earlier than 2026-08-31 09:00 | Бундин В | 1h | 1h |
| 221 | 1.93 | течет вода с поломоечной машинки - разобраться | manual | 2h | 2026-08-31 09:00 A | 2026-08-31 11:00 A |  | 100% |  |  | start no earlier than 2026-08-31 09:00 | Дедов В | 2h | 2h |

| ID | WBS | Task | Duration | Start | Finish | Predecessors | Complete | Remaining | Total slack | Constraint | Resources | Work | Actual work |
| --- | --- | --- | --- | --- | --- | --- | --- | --- | --- | --- | --- | --- | --- |
| 222 | 1.94 | **почистить шнек сухого гидрализата (1 линия)** | 0.12d | 2026-08-28 08:00 A | 2026-08-28 10:00 A |  | 100% |  |  |  | Бобренок В | 3h | 3h |
| 223 | 1.94.1 | замена пошипников | 1h | 2026-08-28 08:00 A | 2026-08-28 10:00 A |  | 100% |  |  | start no earlier than 2026-08-28 08:00 | Тимофеев В; Некрасов А | 2h | 2h |
| 224 | 1.95 | замена фильтров на приточке | 1h | 2026-08-27 09:00 A | 2026-08-27 10:00 A |  | 100% |  |  | start no earlier than 2026-08-27 09:00 | Дедов В | 1h | 1h |
| 225 | 1.96 | **продумать как сделать герметичную крышку на смесителе сухого гидрализата** | 72.25d | 2026-08-27 09:00 A | 2026-11-18 11:00 |  | 86% | 10.26d | 80.34d |  |  | 18.08h | 16.08h |
| 226 | 1.96.1 | печать уплотненителей крышек | 4h | 2026-09-28 09:00 A | 2026-09-28 13:00 A |  | 100% |  |  | start no earlier than 2026-09-28 09:00 | Домоводов К | 4h | 4h |
| 227 | 1.96.2 | контроль доставка резинка упл | 5min | 2026-10-28 09:00 A | 2026-10-28 09:05 A |  | 100% |  |  | start no earlier than 2026-10-28 09:00 | Зорькин В | 0.08h | 0.08h |
| 228 | 1.96.3 | изготовить крышку (расскажу по телефону) | 4h | 2026-08-27 09:00 A | 2026-08-27 13:00 A |  | 100% |  |  | start no earlier than 2026-08-27 09:00 | Бобренок В; Шуранов Ю | 8h | 8h |
| 229 | 1.96.4 | изготовить крышку для 2 линии (как сделал Слава) | 4h | 2026-09-01 09:00 A | 2026-09-01 13:00 A |  | 100% |  |  | start no earlier than 2026-09-01 09:00 | Макаревич А | 4h | 4h |
| 230 | 1.96.5 | установка на струбцинах с уплотнителями | 2h | 2026-11-18 09:00 | 2026-11-18 11:00 | 226, 227 |  |  | 80.34d | start no earlier than 2026-11-18 09:00 | Тимофеев В | 2h |  |
| 231 | 1.97 | **метал от тенов печи, устранить причину** | 15.38d? | 2026-08-24 09:00 A | 2026-09-11 12:00 A |  | 100% |  |  |  |  | 5.42h | 5.42h |
| 232 | 1.97.1 | выяснить сгорел тен русский или китайский (будет ночью остановка) | 15min | 2026-08-27 09:00 A | 2026-08-27 09:15 A |  | 100% |  |  | start no earlier than 2026-08-27 09:00 | Бобренок В | 0.25h | 0.25h |
| 233 | 1.97.2 | вскрыть 2 зону и посмотреть какой тен (мойка) | 1h | 2026-08-31 09:00 A | 2026-08-31 10:00 A |  | 100% |  |  | start no earlier than 2026-09-02 09:00 | Некрасов А | 1h | 1h |
| 234 | 1.97.3 | осмотр состояния тенов/ планирование замены | 10min | 2026-08-27 09:00 A | 2026-08-27 09:10 A |  | 100% |  |  | start no earlier than 2026-08-27 09:00 | Бобренок В | 0.17h | 0.17h |
| 235 | 1.97.4 | выяснить статус поставки тенов из китая | 1h | 2026-08-24 09:00 A | 2026-08-24 10:00 A |  | 100% |  |  | start no earlier than 2026-08-24 09:00 | Шуранов Ю | 1h | 1h |
| 236 | 1.97.5 | замена заброкованных осмотром тенов | 3h? | 2026-09-11 09:00 A | 2026-09-11 12:00 A |  | 100% |  |  | start no earlier than 2026-09-11 09:00 | Тимофеев В | 3h | 3h |
| 237 | 1.98 | замена плата 485 в контроллере 2 линия | 1h | 2026-08-21 09:00 A | 2026-08-21 10:00 A |  | 100% |  |  | start no earlier than 2026-08-21 09:00 | Дедов В | 1h | 1h |
| 238 | 1.99 | перемонтаж частотный привод сух гидролизат | 2h | 2026-09-02 09:00 A | 2026-09-02 11:00 A |  | 100% |  |  | start no earlier than 2026-09-04 09:00 | Некрасов А; Дедов В | 4h | 4h |
| 239 | 1.100 | поменять светильник где вывозят готовую продукцию (с люлки) | 2h | 2026-08-31 09:00 A | 2026-08-31 11:00 A |  | 100% |  |  | start no earlier than 2026-08-31 09:00 | Тимофеев В; Бундин В | 4h | 4h |
| 240 | 1.101 | на нотис настроить кнопку, чтобы работала в цикле | 1h | 2026-08-20 09:00 A | 2026-08-20 10:00 A |  | 100% |  |  | start no earlier than 2026-08-20 09:00 | Дедов В | 1h | 1h |
| 241 | 1.102 | изготовление герметичной крышки под мойкой экструдера (объясню по телефону) занкрепить на анкера | 2h | 2026-08-19 08:00 A | 2026-08-19 11:00 A |  | 100% |  |  | start no earlier than 2026-08-19 08:00 | Бобренок В | 2h | 2h |
| 242 | 1.103 | **проверка пылесоса, почему не стартует (в слесарке)** | 1d? | 2026-08-25 09:00 A | 2026-08-25 18:00 A |  | 100% |  |  |  | Бобренок В | 16h | 16h |
| 243 | 1.103.1 | заказать двигатель и выяснить на гарантии он или нет | 1d? | 2026-08-25 09:00 A | 2026-08-25 18:00 A |  | 100% |  |  | start no earlier than 2026-08-25 08:00 | Шуранов Ю | 8h | 8h |
| 244 | 1.104 | ремонт свет в раздевалке | 30min | 2026-08-14 09:00 A | 2026-08-14 09:30 A |  | 100% |  |  | start no earlier than 2026-08-14 09:00 | Бундин В | 0.5h | 0.5h |
| 245 | 1.105 | стиральная машинка проверка насоса слива, разборка, фото шильдик. Не качает. | 2h | 2026-08-15 09:00 A | 2026-08-17 11:00 A |  | 100% |  |  | start no earlier than 2026-08-15 09:00 | Бундин В | 2h | 2h |

| ID | WBS | Task | Type | Duration | Start | Finish | Predecessors | Complete | Constraint | Resources | Work | Actual work |
| --- | --- | --- | --- | --- | --- | --- | --- | --- | --- | --- | --- | --- |
| 246 | 1.106 | **настройка пробники на толстую цветную пленку** |  | 9.38d? | 2026-08-14 09:00 A | 2026-08-27 12:00 A |  | 100% |  |  | 25.25h | 25.25h |
| 247 | 1.106.1 | тест пленки на пробнике с Луговских В в 11 00 |  | 1h | 2026-08-14 09:00 A | 2026-08-14 10:00 A |  | 100% | start no earlier than 2026-08-14 09:00 | Тимофеев В | 1h | 1h |
| 248 | 1.106.2 | установить протяжной ролик к турбе от ТЕКО 1.5 с синего,снять с синего примерка |  | 2h | 2026-08-17 09:00 A | 2026-08-17 11:00 A |  | 100% | start no earlier than 2026-08-17 09:00 | Тимофеев В | 2h | 2h |
| 249 | 1.106.3 | настройка пробника с режимом фотометки |  | 1h | 2026-08-27 09:00 A | 2026-08-27 10:00 A |  | 100% | start no earlier than 2026-08-27 09:00 | Дедов В | 1h | 1h |
| 250 | 1.106.4 | получить пневмоцилиндр |  | 15min | 2026-08-20 09:00 A | 2026-08-20 09:15 A |  | 100% | start no earlier than 2026-08-20 09:00 | Тимофеев В | 0.25h | 0.25h |
| 251 | 1.106.5 | изготовление крепления вспомогательной протяжки |  | 6h | 2026-08-21 09:00 A | 2026-08-21 16:00 A |  | 100% | start no earlier than 2026-08-21 09:00 | Тимофеев В | 6h | 6h |
| 252 | 1.106.6 | подключение частотника через реле от двигателя протяжки (спросить Константина) |  | 1d? | 2026-08-25 09:00 A | 2026-08-25 18:00 A |  | 100% | start no earlier than 2026-08-25 08:00 | Бундин В | 8h | 8h |
| 253 | 1.106.7 | настройка частотника для работы пробника |  | 3h | 2026-08-27 09:00 A | 2026-08-27 12:00 A |  | 100% | start no earlier than 2026-08-27 09:00 | Тимофеев В; Шуранов Ю | 6h | 6h |
| 254 | 1.106.8 | жалобы, что пробники бьют периодически током- проверить соединения, контакты и т.д. |  | 1h | 2026-08-26 08:00 A | 2026-08-26 10:00 A |  | 100% | start no earlier than 2026-08-26 08:00 | Бобренок В | 1h | 1h |
| 255 | 1.107 | настройка параметров ЧП сухой ГДЗ сбиты, переставлен с линии 2. Снял Слава, найти. Настройка в птц |  | 15min | 2026-08-20 09:00 A | 2026-08-20 09:15 A |  | 100% | start no earlier than 2026-08-20 09:00 | Дедов В | 0.25h | 0.25h |
| 256 | 1.108 | **ТЕКО ремонт кнопки, которую снял Бобренок В , вернуть то что снял с 3ц** |  | 19.12d | 2026-08-13 09:00 A | 2026-09-08 10:00 A |  | 100% |  |  | 2.75h | 2.75h |
| 257 | 1.108.1 | осмотр |  | 30min | 2026-08-13 09:00 A | 2026-08-13 09:30 A |  | 100% | start no earlier than 2026-08-13 09:00 | Домоводов К | 0.5h | 0.5h |
| 258 | 1.108.2 | заявка в ТЕКО платы |  | 30min | 2026-08-18 09:00 A | 2026-08-18 09:30 A | 257 | 100% | start no earlier than 2026-08-18 09:00 | Зорькин В | 0.5h | 0.5h |
| 259 | 1.108.3 | контроль поставки |  | 15min | 2026-09-04 09:00 A | 2026-09-04 09:15 A | 258FS+10d | 100% | start no earlier than 2026-09-04 09:00 | Зорькин В | 0.25h | 0.25h |
| 260 | 1.108.4 | монтаж платы на место |  | 1h | 2026-09-08 09:00 A | 2026-09-08 10:00 A | 259FS+1d | 100% | start no earlier than 2026-09-09 09:00 | Тимофеев В | 1h | 1h |
| 261 | 1.108.5 | Вернуть голову с восстановленной клавиатурой на НОТИС в 3 цех |  | 30min | 2026-09-08 09:00 A | 2026-09-08 09:30 A |  | 100% | start no earlier than 2026-09-09 09:00 | Тимофеев В | 0.5h | 0.5h |
| 262 | 1.109 | установить вент решетки на трассу кондиционера |  | 30min | 2026-08-12 09:00 A | 2026-08-12 09:30 A |  | 100% | start no earlier than 2026-08-12 09:00 | Труфанов А; Некрасов А | 1h | 1h |
| 263 | 1.110 | течь сливной трубы кондиционара править трассу |  | 2h | 2026-08-12 09:00 A | 2026-08-12 11:00 A |  | 100% | start no earlier than 2026-08-12 09:00 | Труфанов А; Некрасов А | 4h | 4h |
| 264 | 1.111 | слить конденсат и чистка фильтров, продуть радиаторы компрессора | manual | 2h | 2026-08-09 09:00 A | 2026-08-09 11:00 A |  | 100% | start no earlier than 2026-08-09 09:00 | Бундин В | 2h | 2h |
| 265 | 1.112 | заменить камеру над квадропаком (слева) -камера у нас в слесарке, взять в помощь оператора | manual | 1h | 2026-08-09 09:00 A | 2026-08-09 10:00 A |  | 100% | start no earlier than 2026-08-09 09:00 | Бундин В | 1h | 1h |
| 266 | 1.113 | дверь тяжело открывается в гидрализаторную (попробовать поправить, задевает металл-металл) |  | 1h | 2026-08-06 09:00 A | 2026-08-06 10:00 A |  | 100% | start no earlier than 2026-08-06 08:00 | Труфанов А | 1h | 1h |
| 267 | 1.114 | заменить плафон в душе | manual | 1h | 2026-08-06 09:00 A | 2026-08-06 10:00 A |  | 100% | start no earlier than 2026-08-06 09:00 | Бундин В | 1h | 1h |
| 268 | 1.115 | ТО пробники и Теко 0,4 (чистка тен, ножей, смазка) |  | 4h | 2026-08-05 08:00 A | 2026-08-05 13:00 A |  | 100% | start no earlier than 2026-08-05 08:00 | Макаревич А | 4h | 4h |
| 269 | 1.116 | **палетообмостчик монтаж в 1ц** |  | 62.62d | 2026-08-12 09:00 A | 2026-10-26 15:00 A |  | 100% |  |  | 16.25h | 16.25h |
| 270 | 1.116.1 | получить договор + счет |  | 1h | 2026-08-12 09:00 A | 2026-08-12 10:00 A |  | 100% | start no earlier than 2026-08-12 09:00 | Зорькин В | 1h | 1h |

| ID | WBS | Task | Type | Duration | Start | Finish | Predecessors | Complete | Actual finish | Constraint | Resources | Work | Actual work |
| --- | --- | --- | --- | --- | --- | --- | --- | --- | --- | --- | --- | --- | --- |
| 271 | 1.116.2 | **согласвоание договор** |  | 2.89d | 2026-08-12 10:00 A | 2026-08-17 09:05 A | 270 | 100% |  |  |  | 0.17h | 0.17h |
| 272 | 1.116.2.1 | передать Маше |  | 5min | 2026-08-12 10:00 A | 2026-08-12 10:05 A |  | 100% |  | start no earlier than 2026-08-12 09:00 | Домоводов К | 0.08h | 0.08h |
| 273 | 1.116.2.2 | контроль |  | 5min | 2026-08-17 09:00 A | 2026-08-17 09:05 A | 272FS+3d | 100% |  | start no earlier than 2026-08-17 09:00 | Домоводов К | 0.08h | 0.08h |
| 274 | 1.116.3 | оплата подать счет | milestone | 0d | 2026-08-12 09:00 A | 2026-08-12 09:00 A |  | 100% |  | start no earlier than 2026-08-12 09:00 | Домоводов К |  |  |
| 275 | 1.116.4 | доставка конетроль |  | 5min | 2026-09-01 09:00 A | 2026-09-01 09:05 A |  | 100% |  | start no earlier than 2026-09-01 09:00 | Зорькин В | 0.08h | 0.08h |
| 276 | 1.116.5 | прокинуть кабель для подключения обмотчика |  | 2h | 2026-10-26 09:00 A | 2026-10-26 11:00 A |  | 100% |  | start no earlier than 2026-10-26 09:00 | Тимофеев В; Николаев; Бундин В | 6h | 6h |
| 277 | 1.116.6 | монтаж |  | 3h | 2026-10-26 11:00 A | 2026-10-26 15:00 A | 276 | 100% |  | start no earlier than 2026-10-23 09:00 | Тимофеев В; Николаев; Бундин В | 9h | 9h |
| 278 | 1.117 | подключить розетку на правой ноге квадропака (отключить квадропак на 5 минут) |  | 2h | 2026-08-11 09:00 A | 2026-08-11 11:00 A |  | 100% |  | start no earlier than 2026-08-11 09:00 | Бобренок В | 2h | 2h |
| 279 | 1.118 | **перенос вентилятор охладителя линия2 в реверс, убрать шкаф** |  | 24.12d | 2026-08-18 09:00 A | 2026-09-16 10:00 A |  | 100% |  |  |  | 38.25h | 38.25h |
| 280 | 1.118.1 | проектирование рамы |  | 2d | 2026-08-19 09:00 A | 2026-08-20 18:00 A |  | 100% |  | start no earlier than 2026-08-19 09:00 | Зорькин В | 16h | 16h |
| 281 | 1.118.2 | чертеж рамы под вентилятор |  | 2h | 2026-08-18 09:00 A | 2026-08-18 11:00 A |  | 100% |  | start no earlier than 2026-08-18 09:00 | Зорькин В; Домоводов К | 4h | 4h |
| 282 | 1.118.3 | заявка вент фитинги |  | 1h | 2026-08-21 09:00 A | 2026-08-21 10:00 A | 281 | 100% |  | start no earlier than 2026-08-21 09:00 | Зорькин В | 1h | 1h |
| 283 | 1.118.4 | конроль поставки |  | 15min | 2026-09-09 09:00 A | 2026-09-09 09:15 A | 282FS+10d | 100% |  | start no earlier than 2026-09-09 09:00 | Зорькин В | 0.25h | 0.25h |
| 284 | 1.118.5 | сборка рама |  | 4h | 2026-09-07 09:00 A | 2026-09-07 13:00 A |  | 100% |  | start no earlier than 2026-09-07 09:00 | Некрасов А; Труфанов А | 8h | 8h |
| 285 | 1.118.6 | модернизация венттилятора/монтаж вентилляции |  | 4h | 2026-09-11 09:00 A | 2026-09-11 13:00 A | 284 | 100% |  | start no earlier than 2026-09-11 09:00 | Некрасов А; Труфанов А | 8h | 8h |
| 286 | 1.118.7 | Подключение улитки, монтаж щитка к стене |  | 1h | 2026-09-16 09:00 A | 2026-09-16 10:00 A |  | 100% |  | start no earlier than 2026-09-16 09:00 | Макаревич А | 1h | 1h |
| 287 | 1.119 | шум зл двигателя 2 линия / смазка |  | 1h | 2026-08-10 08:00 A | 2026-08-10 10:00 A |  | 100% |  | start no earlier than 2026-08-10 08:00 | Тимофеев В | 1h | 1h |
| 288 | 1.120 | натяжка транспортер №2 линия 2 |  | 2h | 2026-08-12 09:00 A | 2026-08-12 11:00 A |  | 100% |  | start no earlier than 2026-08-12 09:00 | Тимофеев В | 2h | 2h |
| 289 | 1.121 | монтаж- подключение внутреннего блока кондиционера |  | 2h | 2026-08-05 09:00 A | 2026-08-05 11:00 A |  | 100% |  | start no earlier than 2026-08-05 09:00 | Труфанов А; Тимофеев В | 4h | 4h |
| 290 | 1.122 | **теко 0,4 -восстановить или заменить блок для тепловухи** |  | 1.12d? | 2026-08-04 09:00 A | 2026-08-05 10:00 |  | 100% | 2026-08-05 18:00 |  | Макаревич А | 17h | 17h |
| 291 | 1.122.1 | проверить подключение транспортера и тепловуху |  | 1d? | 2026-08-05 09:00 A | 2026-08-05 18:00 A |  | 100% |  | start no earlier than 2026-08-05 09:00 | Шуранов Ю | 8h | 8h |
| 292 | 1.123 | замена перегоревших светильников, монтаж доп. Светильников (Шуранов- покажу) |  | 4h | 2026-08-05 09:00 A | 2026-08-05 13:00 A |  | 100% |  | start no earlier than 2026-08-12 09:00 | Труфанов А; Тимофеев В | 8h | 8h |
| 293 | 1.124 | включить мухоловку 1 линия экструдер | manual | 0.5h | 2026-08-02 09:00 A | 2026-08-02 09:30 A |  | 100% |  | start no earlier than 2026-08-02 09:00 | Бобренок В | 0.5h | 0.5h |
| 294 | 1.125 | пропадает питание на весах смесителя 2 линия- проверить | manual | 1h | 2026-08-01 09:00 A | 2026-08-01 10:00 A |  | 100% |  | start no earlier than 2026-08-01 09:00 | Бундин В | 1h | 1h |
| 295 | 1.126 | эксперимент с лейкой жиры |  | 2h | 2026-08-06 09:00 A | 2026-08-06 11:00 A |  | 100% |  | start no earlier than 2026-08-07 09:00 | Тимофеев В | 2h | 2h |
| 296 | 1.127 | камера над компрессором снять и поменять (камеры у нас в кабинете) |  | 1h | 2026-08-03 09:00 A | 2026-08-03 10:00 A |  | 100% |  | start no earlier than 2026-08-03 09:00 | Макаревич А; Тимофеев В | 2h | 2h |
| 297 | 1.128 | на мезонине смотрит на квадропак, поменять и сделать чуть ниже обзор |  | 1h | 2026-08-03 09:00 A | 2026-08-03 10:00 A |  | 100% |  | start no earlier than 2026-08-03 09:00 | Макаревич А; Тимофеев В | 2h | 2h |
| 298 | 1.129 | камера 1 линия повернуть чуть правее и приподнять |  | 1h | 2026-08-03 09:00 A | 2026-08-03 10:00 A |  | 100% |  | start no earlier than 2026-08-03 09:00 | Макаревич А; Тимофеев В | 2h | 2h |
| 299 | 1.130 | камера на углу, где вывозят готовую продукцию с люльки поменять (камеры у нас в кабинете) |  | 2h | 2026-08-03 09:00 A | 2026-08-03 11:00 A |  | 100% |  | start no earlier than 2026-08-03 09:00 | Макаревич А; Тимофеев В | 4h | 4h |
| 300 | 1.131 | повесить камеру над входом в фасовку, чтобы смотрела на коридор и как обрабатывают руки, монтаж кабеля |  | 3h | 2026-08-03 09:00 A | 2026-08-03 12:00 A |  | 100% |  | start no earlier than 2026-08-03 09:00 | Макаревич А; Тимофеев В | 6h | 6h |

| ID | WBS | Task | Type | Duration | Start | Finish | Predecessors | Complete | Constraint | Resources | Work | Actual work |
| --- | --- | --- | --- | --- | --- | --- | --- | --- | --- | --- | --- | --- |
| 301 | 1.132 | **снять камеру зона экструдера и повесить на жирах со стороны экструдера, монтаж кабель** |  | 0.12d | 2026-09-09 09:00 A | 2026-09-09 10:00 A |  | 100% |  |  | 2h | 2h |
| 302 | 1.132.1 | на мойке попробовать снять камеру |  | 1h | 2026-09-09 09:00 A | 2026-09-09 10:00 A |  | 100% | start no earlier than 2026-09-09 09:00 | Труфанов А; Некрасов А | 2h | 2h |
| 303 | 1.133 | открутить полочку на столе на жирах, сделать ребра жесткости |  | 1h | 2026-07-31 09:00 A | 2026-07-31 10:00 A |  | 100% | start no earlier than 2026-07-31 08:00 | Бундин В | 1h | 1h |
| 304 | 1.134 | слив конденсата с компрессора и продуть радиаторы и фильтры |  | 1h | 2026-07-31 08:00 A | 2026-07-31 10:00 A |  | 100% | start no earlier than 2026-07-31 08:00 | Тимофеев В | 1h | 1h |
| 305 | 1.135 | Ревизия головы от Нотис/заключение |  | 1h | 2026-07-27 08:00 A | 2026-07-27 10:00 A |  | 100% | start no earlier than 2026-07-27 08:00 | Дедов В | 1h | 1h |
| 306 | 1.136 | Снять клавиатуру с головы нотис, подготовить ее к замене лежит на верстаке |  | 30min | 2026-07-29 08:00 A | 2026-07-29 09:30 A |  | 100% | start no earlier than 2026-07-29 08:00 | Дедов В | 0.5h | 0.5h |
| 307 | 1.137 | Ремонт клавиатуры от головы нотис, клаву получить на складе, голову взять у нас в кабинете |  | 1h | 2026-09-01 09:00 A | 2026-09-01 10:00 A |  | 100% | start no earlier than 2026-09-01 08:00 | Бундин В | 1h | 1h |
| 308 | 1.138 | **ремонт кондиционер зона фасовки** |  | 0.5d | 2026-07-16 09:00 A | 2026-07-16 13:00 A |  | 100% |  |  | 6h | 6h |
| 309 | 1.138.1 | демонтаж внутреннего блока |  | 2h | 2026-07-16 09:00 A | 2026-07-16 11:00 A |  | 100% | start no earlier than 2026-07-16 09:00 | Некрасов А; Труфанов А | 4h | 4h |
| 310 | 1.138.2 | разборка, отделить испаритель от рамы |  | 1h | 2026-07-16 11:00 A | 2026-07-16 12:00 A | 309 | 100% | start no earlier than 2026-07-15 09:00 | Бундин В | 1h | 1h |
| 311 | 1.138.3 | опресовка в воде |  | 1h | 2026-07-16 12:00 A | 2026-07-16 13:00 A | 310 | 100% | start no earlier than 2026-07-15 09:00 | Бундин В | 1h | 1h |
| 312 | 1.139 | редуктор конвейера выгрузки пакетов квадропак -> обеспечить гибкое соединеине к раме, жесткое будет ломать либо вал либо редутор |  | 2h | 2026-07-16 09:00 A | 2026-07-16 11:00 A |  | 100% | start no earlier than 2026-07-16 09:00 | Некрасов А | 2h | 2h |
| 313 | 1.140 | монтаж светильник под площадку дозатора квадропака |  | 4h | 2026-07-10 09:00 A | 2026-07-10 13:00 A |  | 100% | start no earlier than 2026-07-10 09:00 | Бобренок В | 4h | 4h |
| 314 | 1.141 | **замена вентилятор вытяжка с экструдеров** |  | 2.25d | 2026-07-13 09:00 A | 2026-07-15 11:00 A |  | 100% |  |  | 13h | 13h |
| 315 | 1.141.1 | подключение воздуховоды |  | 4h | 2026-07-13 09:00 A | 2026-07-13 13:00 A |  | 100% | start no earlier than 2026-07-13 09:00 | Некрасов А; Бундин В | 8h | 8h |
| 316 | 1.141.2 | установить крыльчатку на мотор |  | 1h | 2026-07-14 09:00 A | 2026-07-14 10:00 A |  | 100% | start no earlier than 2026-07-14 08:00 | Труфанов А | 1h | 1h |
| 317 | 1.141.3 | устарнить причину вибрации мотора |  | 2h | 2026-07-15 09:00 A | 2026-07-15 11:00 A |  | 100% | start no earlier than 2026-07-15 09:00 | Некрасов А; Труфанов А | 4h | 4h |
| 318 | 1.142 | **сборка дозатор на квадропак** |  | 84.25d | 2026-07-09 08:00 A | 2026-10-22 11:00 A |  | 100% |  |  | 74.83h | 74.83h |
| 319 | 1.142.1 | тест сублиматов №2 1,5 |  | 6h | 2026-10-21 09:00 A | 2026-10-21 16:00 A |  | 100% | start no earlier than 2026-10-21 09:00 | Зорькин В; Труфанов А | 12h | 12h |
| 320 | 1.142.2 | тест сублиматов №2 0,4 |  | 2h | 2026-10-22 09:00 A | 2026-10-22 11:00 A |  | 100% | start no earlier than 2026-10-22 08:00 | Зорькин В; Труфанов А | 4h | 4h |
| 321 | 1.142.3 | установить переключатель блокировки сброса дозатором |  | 30min | 2026-08-15 09:00 A | 2026-08-17 09:30 A |  | 100% | start no earlier than 2026-08-15 09:00 | Труфанов А | 0.5h | 0.5h |
| 322 | 1.142.4 | упорядочить схему |  | 30min | 2026-08-15 09:00 A | 2026-08-17 09:30 A |  | 100% | start no earlier than 2026-08-15 09:00 | Труфанов А | 0.5h | 0.5h |
| 323 | 1.142.5 | транспортировка дозатора в слесарку |  | 1h | 2026-08-04 08:00 A | 2026-08-04 10:00 A |  | 100% | start no earlier than 2026-08-04 08:00 | Труфанов А; Тимофеев В | 2h | 2h |
| 324 | 1.142.6 | установить розетку для дозатора. Вывод кабель сверлить платформу, что бы он был не под ногами и удобен при уборке |  | 2h | 2026-07-09 08:00 A | 2026-07-09 11:00 A |  | 100% | start no earlier than 2026-07-09 08:00 | Бобренок В | 2h | 2h |
| 325 | 1.142.7 | закрепить монитор фото Зорькин |  | 2h | 2026-07-09 08:00 A | 2026-07-09 11:00 A |  | 100% | start no earlier than 2026-07-09 08:00 | Бобренок В | 2h | 2h |
| 326 | 1.142.8 | подключение дозатора к машине / поиск кабеля в 3 цехе / изучение документации |  | 4h | 2026-07-14 09:00 A | 2026-07-14 13:00 A |  | 100% | start no earlier than 2026-07-14 09:00 | Труфанов А | 4h | 4h |
| 327 | 1.142.9 | подключить реле аварии дозатора паралельно датчику отсутствия пакета квадропака (схема прилагается) |  | 1h | 2026-08-12 09:00 A | 2026-08-12 10:00 A | 326 | 100% | start no earlier than 2026-08-12 09:00 | Труфанов А | 1h | 1h |
| 328 | 1.142.10 | калибровка весов и разгон наполнения, тестирование работы |  | 4h | 2026-08-12 09:00 A | 2026-08-12 13:00 A |  | 100% | start no earlier than 2026-08-12 09:00 | Труфанов А | 4h | 4h |
| 329 | 1.142.11 | монтаж кабель выравнивания потенциалов площадка дозатора и площадка квадропака |  | 30min | 2026-08-15 09:00 A | 2026-08-17 09:30 A |  | 100% | start no earlier than 2026-08-15 09:00 | Труфанов А | 0.5h | 0.5h |
| 330 | 1.142.12 | контроль поставки маткериал | milestone | 0d | 2026-08-27 09:00 A | 2026-08-27 09:00 A |  | 100% | start no earlier than 2026-08-27 09:00 | Зорькин В |  |  |
| 331 | 1.142.13 | тестирование весов / разгон |  | 2h | 2026-09-14 09:00 A | 2026-09-14 11:00 A | 330 | 100% | start no earlier than 2026-09-14 09:00 | Зорькин В | 2h | 2h |
| 332 | 1.142.14 | подключить синхронизацию пуска дозатора паралельно катушки открытия заслонки квадропака |  | 4h | 2026-08-04 11:00 A | 2026-08-04 16:00 A | 327 | 100% | start no earlier than 2026-07-16 09:00 | Труфанов А | 4h | 4h |
| 333 | 1.142.15 | монтаж перила на площадку - подготовка |  | 2h | 2026-08-14 09:00 A | 2026-08-14 11:00 A |  | 100% | start no earlier than 2026-08-14 09:00 | Тимофеев В | 2h | 2h |
| 334 | 1.142.16 | монтаж перила на площадку |  | 2h | 2026-08-17 09:00 A | 2026-08-17 11:00 A |  | 100% | start no earlier than 2026-08-17 09:00 | Тимофеев В; Бобренок В | 4h | 4h |
| 335 | 1.142.17 | сверлить для крепления перил |  | 2h | 2026-09-04 09:00 A | 2026-09-04 11:00 A | 331 | 100% | start no earlier than 2026-09-04 09:00 | Макаревич А | 2h | 2h |
| 336 | 1.142.18 | закрыть зад крышку |  | 20min | 2026-09-13 09:00 A | 2026-09-13 09:20 A |  | 100% | start no earlier than 2026-09-13 09:00 | Дедов В | 0.33h | 0.33h |
| 337 | 1.142.19 | сборка дозатор |  | 2h | 2026-09-25 09:00 A | 2026-09-25 11:00 A |  | 100% | start no earlier than 2026-09-28 09:00 | Труфанов А; Некрасов А | 4h | 4h |
| 338 | 1.142.20 | тест компонентов |  | 1h | 2026-09-23 09:00 A | 2026-09-23 10:00 A |  | 100% | start no earlier than 2026-09-23 09:00 | Зорькин В | 1h | 1h |
| 339 | 1.142.21 | установить на пружины раму дозатора + квеличить её массу |  | 4h | 2026-09-25 09:00 A | 2026-09-25 13:00 A |  | 100% | start no earlier than 2026-09-25 08:00 | Некрасов А; Труфанов А | 8h | 8h |
| 340 | 1.142.22 | покупка за нал / найти доп пружины |  | 1h | 2026-09-28 09:00 A | 2026-09-28 10:00 A |  | 100% | start no earlier than 2026-09-28 09:00 | Зорькин В | 1h | 1h |
| 341 | 1.142.23 | увеличить доп пружины, сжались ноль |  | 4h | 2026-10-01 09:00 A | 2026-10-01 13:00 A |  | 100% | start no earlier than 2026-10-02 09:00 | Некрасов А; Труфанов А | 8h | 8h |
| 342 | 1.142.24 | монтаж кнопка дозатор ОН/ОФФ |  | 1h | 2026-09-30 09:00 A | 2026-09-30 10:00 A | 336 | 100% | start no earlier than 2026-09-30 09:00 | Труфанов А | 1h | 1h |
| 343 | 1.142.25 | закрыть металлом пустые места между площадками квадропак и дозатор |  | 2h | 2026-10-07 09:00 A | 2026-10-07 11:00 A | 335 | 100% | start no earlier than 2026-10-07 09:00 | Тимофеев В | 2h | 2h |
| 344 | 1.142.26 | Сделать перегородки в бункер дозатора для увеличения объема секций |  | 3h | 2026-09-02 09:00 A | 2026-09-02 12:00 A |  | 100% | start no earlier than 2026-09-04 09:00 | Тимофеев В | 3h | 3h |
| 345 | 1.143 | навести сортиировка / порядок пандус 1ц |  | 4h | 2026-07-10 09:00 A | 2026-07-10 13:00 A |  | 100% | start no earlier than 2026-07-10 09:00 | Тимофеев В; Амрулин Р | 7h | 7h |

| ID | WBS | Task | Type | Duration | Start | Finish | Predecessors | Complete | Remaining | Actual start | Actual finish | Total slack | Free slack | Constraint | Resources | Work | Actual work |
| --- | --- | --- | --- | --- | --- | --- | --- | --- | --- | --- | --- | --- | --- | --- | --- | --- | --- |
| 346 | 1.144 | **Кондиционер зоны экструдера** |  | 0.5d | 2026-07-07 09:00 A | 2026-07-07 13:00 A |  | 100% |  |  |  |  |  |  |  | 4h | 4h |
| 347 | 1.144.1 | Чистка сливной магистрали |  | 4h | 2026-07-07 09:00 A | 2026-07-07 13:00 A |  | 100% |  |  |  |  |  | start no earlier than 2026-07-07 09:00 | Бундин В | 4h | 4h |
| 348 | 1.145 | **установить датчик давления на экструдер** |  | 49.53d | 2026-07-06 08:00 A | 2026-09-10 14:15 |  | 68% | 15.89d |  |  | 141.06d |  |  |  | 15.25h | 11h |
| 349 | 1.145.1 | контроль поставка фитинги |  | 15min | 2026-09-10 09:00 | 2026-09-10 09:15 |  |  |  |  |  | 141.06d | 0d | start no earlier than 2026-09-10 09:00 | Зорькин В | 0.25h |  |
| 350 | 1.145.2 | монтаж кронштейны для фиксации датчикоа давления 1+2 линия |  | 2h | 2026-07-10 09:00 A | 2026-07-10 11:00 A |  | 100% |  |  |  |  |  | start no earlier than 2026-07-10 09:00 | Макаревич А; Некрасов А | 4h | 4h |
| 351 | 1.145.3 | установить датчики давления через гидравлические шланги |  | 2h | 2026-07-06 08:00 A | 2026-07-06 11:00 A |  | 100% |  |  |  |  |  | start no earlier than 2026-07-06 08:00 | Дедов В | 2h | 2h |
| 352 | 1.145.4 | доработка кожух нож узла для закрытия |  | 2h | 2026-07-07 09:00 A | 2026-07-07 11:00 A |  | 100% |  |  |  |  |  | start no earlier than 2026-07-07 09:00 | Бобренок В | 2h | 2h |
| 353 | 1.145.5 | Прокинуть кабель ШВВП 2х0,75 от датчиков давления до регистраторов, сделать по красоте. |  | 3h | 2026-07-10 09:00 A | 2026-07-10 12:00 A |  | 100% |  |  |  |  |  | start no earlier than 2026-07-10 09:00 | Бобренок В | 3h | 3h |
| 354 | 1.145.6 | подключение датчиков давления к регистратору |  | 4h | 2026-09-10 09:15 | 2026-09-10 14:15 | 349 |  |  |  |  | 141.06d |  | start no earlier than 2026-09-02 09:00 | Домоводов К | 4h |  |
| 355 | 1.146 | печь №1 ревизия/замена перемычек |  | 4h | 2026-07-04 09:00 A | 2026-07-06 13:00 A |  | 100% |  |  |  |  |  | start no earlier than 2026-07-04 09:00 | Макаревич А | 4h | 4h |
| 356 | 1.147 | печь №2 ревизия/замена перемычек |  | 2h | 2026-07-16 09:00 A | 2026-07-16 11:00 A |  | 100% |  |  |  |  |  | start no earlier than 2026-07-16 09:00 | Бобренок В | 2h | 2h |
| 357 | 1.148 | **заменить амперметры неиспрвные на ШУ 1 и 2 линия (они на складе приехали сегодня новые посмотреть фото в выдаче)** |  | 1h? | 2026-09-04 09:00 | 2026-09-04 10:00 |  | 100% |  | 2026-09-05 09:00 | 2026-09-11 13:00 |  |  |  |  | 6h | 6h |
| 358 | 1.148.1 | монтаж - оказалить не те |  | 2h | 2026-09-05 09:00 A | 2026-09-05 11:00 A |  | 100% |  |  |  |  |  | start no earlier than 2026-09-05 09:00 | Дедов В | 2h | 2h |
| 359 | 1.148.2 | контроль датч тока | milestone | 0d | 2026-09-09 09:00 A | 2026-09-09 09:00 A |  | 100% |  |  |  |  |  | start no earlier than 2026-09-09 09:00 | Зорькин В |  |  |
| 360 | 1.148.3 | монтаж датчиковтока на 2л |  | 4h | 2026-09-11 09:00 A | 2026-09-11 13:00 A |  | 100% |  |  |  |  |  | start no earlier than 2026-09-11 09:00 | Макаревич А | 4h | 4h |
| 361 | 1.149 | **ставим 2 частотника на вентиляторы вытяжки с печек №1 и 2** |  | 0.5d | 2026-07-02 09:00 A | 2026-07-02 13:00 A |  | 100% |  |  |  |  |  |  |  | 4h | 4h |
| 362 | 1.149.1 | подключение к улиткам вытяжки 1 и 2 линия (помошника дадим) |  | 4h | 2026-07-02 09:00 A | 2026-07-02 13:00 A |  | 100% |  |  |  |  |  | start no earlier than 2026-07-02 09:00 | Тимофеев В | 4h | 4h |
| 363 | 1.150 | подключить частотный привод вентилятор на площадке жиротопки |  | 4h | 2026-07-14 09:00 A | 2026-07-14 13:00 A |  | 100% |  |  |  |  |  | start no earlier than 2026-07-14 09:00 | Дедов В | 4h | 4h |
| 364 | 1.151 | установка частотника для улитку в жиротопке (по телефону расскажу) |  | 4h | 2026-07-02 09:00 A | 2026-07-02 13:00 A |  | 100% |  |  |  |  |  | start no earlier than 2026-07-02 09:00 | Дедов В | 4h | 4h |
| 365 | 1.152 | заменить шнеки и гильзы на 2 линии (ставим усиленные, 2 гильзы) по уровню (операторы помогут) | manual | 10h | 2026-07-05 09:00 A | 2026-07-06 11:00 A |  | 100% |  |  |  |  |  | start no earlier than 2026-07-05 09:00 | Бундин В | 10h | 10h |
| 366 | 1.153 | **поменять фильтрующую ткань на фильтрах кондиционеров 1 цех** |  | 0.25d | 2026-07-01 09:00 A | 2026-07-01 11:00 A |  | 100% |  |  |  |  |  |  |  | 4h | 4h |
| 367 | 1.153.1 | установка фильтров закрываем внутренние блоки |  | 2h | 2026-07-01 09:00 A | 2026-07-01 11:00 A |  | 100% |  |  |  |  |  | start no earlier than 2026-07-01 09:00 | Макаревич А; Некрасов А | 4h | 4h |
| 368 | 1.154 | изготовление кронштейна для установки вентилятора крепим на место в зоне экструдера |  | 2h | 2026-06-30 09:00 A | 2026-06-30 11:00 A |  | 100% |  |  |  |  |  | start no earlier than 2026-06-30 09:00 | Некрасов А; Тимофеев В | 4h | 4h |
| 369 | 1.155 | снять на всех валах барабанов колеса, будем покрывать полиуретаном |  | 3h | 2026-06-29 09:00 A | 2026-06-29 12:00 A |  | 100% |  |  |  |  |  | start no earlier than 2026-06-29 09:00 | Бундин В | 3h | 3h |
| 370 | 1.156 | ревизия шестеренок питателя 2 линия, если нужно замена с зип- питатель синий склад |  | 3h | 2026-06-29 09:00 A | 2026-06-29 12:00 A |  | 100% |  |  |  |  |  | start no earlier than 2026-06-29 09:00 | Бундин В | 3h | 3h |
| 371 | 1.157 | повесить полочки у ОТК в кабинете- крепеж по гипсокортону у меня на столе |  | 1h | 2026-06-26 09:00 A | 2026-06-26 10:00 A |  | 100% |  |  |  |  |  | start no earlier than 2026-06-26 09:00 | Тимофеев В; Дедов В | 2h | 2h |
| 372 | 1.158 | нормально прикрутить светильник на стойке со сканером QR- кодов на фасовке, если нужно заменить на другой | manual | 2h | 2026-07-03 09:00 A | 2026-07-03 11:00 A |  | 100% |  |  |  |  |  | start no earlier than 2026-07-03 09:00 | Макаревич А | 2h | 2h |
| 373 | 1.159 | прикрутить розетку возле ШУ приточки |  | 1h | 2026-07-04 09:00 A | 2026-07-06 10:00 A |  | 100% |  |  |  |  |  | start no earlier than 2026-07-04 09:00 | Дедов В | 1h | 1h |
| 374 | 1.160 | заменить светильник 50Вт на жиротопке | manual | 2h | 2026-06-27 09:00 A | 2026-06-27 11:00 A |  | 100% |  |  |  |  |  | start no earlier than 2026-06-27 09:00 | Дедов В | 2h | 2h |
| 375 | 1.161 | мойка внутрених и внешних блоков керхером |  | 4h | 2026-06-24 09:00 A | 2026-06-24 13:00 A |  | 100% |  |  |  |  |  | start no earlier than 2026-06-24 09:00 | Тимофеев В; Дедов В | 8h | 8h |
| 376 | 1.162 | 1 линия средняя зона печи 115А |  | 2h | 2026-07-01 09:00 A | 2026-07-01 11:00 A |  | 100% |  |  |  |  |  | start no earlier than 2026-07-01 09:00 | Некрасов А | 2h | 2h |
| 377 | 1.163 | продуть внешний блок кондиционера (посередине) |  | 2h | 2026-06-24 09:00 A | 2026-06-24 11:00 A |  | 100% |  |  |  |  |  | start no earlier than 2026-06-24 09:00 | Тимофеев В | 2h | 2h |
| 378 | 1.164 | слить конденсат и продуть радиаторы на компрессоре |  | 1h | 2026-06-22 09:00 A | 2026-06-22 10:00 A |  | 100% |  |  |  |  |  | start no earlier than 2026-06-22 08:00 | Бундин В | 1h | 1h |
| 379 | 1.165 | взять ключи на складе и повесить возле каждого щитка | manual | 1h | 2026-07-05 09:00 A | 2026-07-05 10:00 A |  | 100% |  |  |  |  |  | start no earlier than 2026-07-05 09:00 | Бундин В | 1h | 1h |
| 380 | 1.166 | заменить монтажную коробку- пускатели улиток, зона экструдера | manual | 1h | 2026-06-30 09:00 A | 2026-06-30 10:00 A |  | 100% |  |  |  |  |  | start no earlier than 2026-06-30 09:00 | Бундин В | 1h | 1h |
| 381 | 1.167 | герметизация стыков в душевой женской, потечка воды | manual | 1h | 2026-06-21 09:00 A | 2026-06-21 10:00 A |  | 100% |  |  |  |  |  | start no earlier than 2026-06-21 09:00 | Бундин В | 1h | 1h |

| ID | WBS | Task | Duration | Start | Finish | Predecessors | Complete | Actual start | Actual finish | Constraint | Resources | Work | Actual work |
| --- | --- | --- | --- | --- | --- | --- | --- | --- | --- | --- | --- | --- | --- |
| 382 | 1.168 | **вернуть колбу уровня подачи воды на 2 линию** | 1h? | 2026-06-26 09:00 | 2026-06-26 10:00 |  | 100% | 2026-06-29 09:00 | 2026-06-29 18:00 |  |  | 8h | 8h |
| 383 | 1.168.1 | найти колбу | 1d? | 2026-06-29 09:00 A | 2026-06-29 18:00 A |  | 100% |  |  | start no earlier than 2026-06-29 09:00 | Шуранов Ю | 8h | 8h |
| 384 | 1.169 | отключить кондеры и продуть внешние блоки кондиционеров 1 ц. | 2h | 2026-06-20 09:00 A | 2026-06-22 11:00 A |  | 100% |  |  | start no earlier than 2026-06-20 09:00 | Бундин В | 2h | 2h |
| 385 | 1.170 | **померить верхний воздуховод и трассу для подключения новой улитки** | 1d? | 2026-06-22 09:00 A | 2026-06-22 18:00 A |  | 100% |  |  |  | Тимофеев В; Зорькин В | 24h | 24h |
| 386 | 1.170.1 | заказать переходник | 1d? | 2026-06-22 09:00 A | 2026-06-22 18:00 A |  | 100% |  |  | start no earlier than 2026-06-22 08:00 | Зорькин В | 8h | 8h |
| 387 | 1.171 | слив конденсата с компрессора и продуть радиаторы и фильтры | 1h | 2026-06-14 09:00 A | 2026-06-15 10:00 A |  | 100% |  |  | start no earlier than 2026-06-14 09:00 | Бобренок В | 1h | 1h |
| 388 | 1.172 | **закрепить редуктор к отводящему транспортеру** | 1d? | 2026-06-17 09:00 A | 2026-06-17 18:00 A |  | 100% |  |  |  | Некрасов А | 16h | 16h |
| 389 | 1.172.1 | сделать надежное крепление на мойке | 1d? | 2026-06-17 09:00 A | 2026-06-17 18:00 A |  | 100% |  |  | start no earlier than 2026-06-17 09:00 | Бундин В | 8h | 8h |
| 390 | 1.173 | заменить сальник на вакууматоре (редуктор) | 1h | 2026-06-11 09:00 A | 2026-06-11 10:00 A |  | 100% |  |  | start no earlier than 2026-06-11 09:00 | Тимофеев В | 1h | 1h |
| 391 | 1.174 | законтрогаить шпильки-ножки запайщиков | 1h | 2026-06-12 09:00 A | 2026-06-12 10:00 A |  | 100% |  |  | start no earlier than 2026-06-12 09:00 | Бундин В | 1h | 1h |
| 392 | 1.175 | настроить подачу масла на квадропаке по пневмо системе (спросить у Дедова) | 1h | 2026-06-10 09:00 A | 2026-06-10 10:00 A |  | 100% |  |  | start no earlier than 2026-06-10 09:00 | Труфанов А | 1h | 1h |
| 393 | 1.176 | **проверить давление в гидроаккумуляторе водоподготовки** | 0.25d | 2026-06-10 09:00 A | 2026-06-10 11:00 A |  | 100% |  |  |  | Дедов В | 4h | 4h |
| 394 | 1.176.1 | замена мембраны | 2h | 2026-06-10 09:00 A | 2026-06-10 11:00 A |  | 100% |  |  | start no earlier than 2026-06-10 09:00 | Дедов В | 2h | 2h |
| 395 | 1.177 | **готовить в зип сетку оборотную для печей (нижняя)** | 0.5d | 2026-06-09 09:00 A | 2026-06-09 13:00 A |  | 100% |  |  |  |  | 4.5h | 4.5h |
| 396 | 1.177.1 | проверка материал | 30min | 2026-06-09 09:00 A | 2026-06-09 09:30 A |  | 100% |  |  | start no earlier than 2026-06-09 09:00 | Тимофеев В | 0.5h | 0.5h |
| 397 | 1.177.2 | сборка | 4h | 2026-06-09 09:00 A | 2026-06-09 13:00 A |  | 100% |  |  | start no earlier than 2026-06-09 09:00 | Тимофеев В | 4h | 4h |
| 398 | 1.178 | подключить частотный привод насос жир 2 линия/ при остановке | 2h | 2026-06-07 09:00 A | 2026-06-08 11:00 A |  | 100% |  |  | start no earlier than 2026-06-07 09:00 | Дедов В | 2h | 2h |
| 399 | 1.179 | **жиротопка текет сальник насоса** | 36.03d? | 2026-06-28 09:00 A | 2026-08-18 09:15 A |  | 100% |  |  |  |  | 18.5h | 18.5h |
| 400 | 1.179.1 | замена насос из зип | 1h | 2026-06-28 09:00 A | 2026-06-29 10:00 A |  | 100% |  |  | start no earlier than 2026-06-28 09:00 | Дедов В | 1h | 1h |
| 401 | 1.179.2 | замена сальник на снятом насосе | 1h | 2026-06-28 10:00 A | 2026-06-29 10:00 A | 400 | 100% |  |  | start no earlier than 2026-06-17 09:00 | Дедов В | 1h | 1h |
| 402 | 1.179.3 | заказать | 1d? | 2026-06-29 09:00 A | 2026-06-29 18:00 A |  | 100% |  |  | start no earlier than 2026-06-29 09:00 | Шуранов Ю | 8h | 8h |
| 403 | 1.179.4 | ревизия прогресса утечки | 15min | 2026-08-05 09:00 A | 2026-08-05 09:15 A |  | 100% |  |  | start no earlier than 2026-08-05 09:00 | Дедов В | 0.25h | 0.25h |
| 404 | 1.179.5 | контроль наличия сальника | 15min | 2026-08-18 09:00 A | 2026-08-18 09:15 A |  | 100% |  |  | start no earlier than 2026-08-18 09:00 | Шуранов Ю | 0.25h | 0.25h |
| 405 | 1.179.6 | замена сальника | 1d? | 2026-08-05 09:00 A | 2026-08-05 18:00 A |  | 100% |  |  | start no earlier than 2026-08-05 09:00 | Дедов В | 8h | 8h |
| 406 | 1.180 | ремонт весов напольный (палетные) проверить кабель на обрыв | 3h | 2026-06-11 09:00 A | 2026-06-11 12:00 A |  | 100% |  |  | start no earlier than 2026-06-11 09:00 | Дедов В | 3h | 3h |
| 407 | 1.181 | печь №2 проверка токов, тен, замена | 2h | 2026-06-04 09:00 A | 2026-06-04 11:00 A |  | 100% |  |  | start no earlier than 2026-06-04 09:00 | Некрасов А; Бундин В | 4h | 4h |
| 408 | 1.182 | изготовление шторки после приемного лотка циклона | 2h | 2026-06-04 09:00 A | 2026-06-04 11:00 A |  | 100% |  |  | start no earlier than 2026-06-04 09:00 | Бундин В | 2h | 2h |

| ID | WBS | Task | Type | Duration | Start | Finish | Predecessors | Complete | Remaining | Total slack | Free slack | Constraint | Resources | Work | Actual work |
| --- | --- | --- | --- | --- | --- | --- | --- | --- | --- | --- | --- | --- | --- | --- | --- |
| 409 | 1.183 | **на аппликаторе настроить печать QR-кода на пакет, чтобы не размазывало (по тел. Объясню)** |  | 3.12d | 2026-06-04 09:00 A | 2026-06-09 10:00 A |  | 100% |  |  |  |  |  | 2h | 2h |
| 410 | 1.183.1 | тест (подключить доп. Датчик -настроить печать без размытия, картридж находиться у Луговских подписанный) |  | 1h | 2026-06-04 09:00 A | 2026-06-04 10:00 A |  | 100% |  |  |  | start no earlier than 2026-06-04 09:00 | Дедов В | 1h | 1h |
| 411 | 1.183.2 | тест |  | 1h | 2026-06-09 09:00 A | 2026-06-09 10:00 A |  | 100% |  |  |  | start no earlier than 2026-06-09 09:00 | Тимофеев В | 1h | 1h |
| 412 | 1.184 | целкает аппликатор -разобраться, устранить |  | 1h | 2026-06-03 08:00 A | 2026-06-03 10:00 A |  | 100% |  |  |  | start no earlier than 2026-06-03 08:00 | Дедов В | 1h | 1h |
| 413 | 1.185 | **установить резервную трубку/штангу с форсункой на подачу жира** |  | 31d | 2026-09-08 09:00 A | 2026-10-09 18:00 |  | 10% | 27.9d | 112.59d |  |  |  | 10h | 1h |
| 414 | 1.185.1 | проект-схема разработать |  | 1h | 2026-09-08 09:00 A | 2026-09-08 10:00 A |  | 100% |  |  |  | start no earlier than 2026-09-08 09:00 | Домоводов К | 1h | 1h |
| 415 | 1.185.2 | разработать спецкронштейн крепления 4х трубок |  | 1h | 2026-09-10 09:00 | 2026-09-10 10:00 |  |  |  | 132.47d | 19.88d | start no earlier than 2026-09-10 09:00 | Домоводов К | 1h |  |
| 416 | 1.185.3 | монтаж спец кронштенна |  | 1h | 2026-10-01 09:00 | 2026-10-01 10:00 | 415FS+1d |  |  | 112.59d | 0d | start no earlier than 2026-10-01 09:00 | Тимофеев В | 1h |  |
| 417 | 1.185.4 | заявка фитинги / тройники / краны / трубка |  | 1h | 2026-10-01 10:00 | 2026-10-01 11:00 | 414FS+1d, 416 |  |  | 112.59d | 0d | start no earlier than 2026-06-03 08:00 | Зорькин В | 1h |  |
| 418 | 1.185.5 | доставка контроль | milestone | 0d | 2026-10-07 11:00 | 2026-10-07 11:00 | 417FS+5d |  |  | 112.59d | 0d | start no earlier than 2026-06-03 08:00 | Зорькин В |  |  |
| 419 | 1.185.6 | сборка в мастерской |  | 4h | 2026-10-08 11:00 | 2026-10-08 16:00 | 418FS+1d |  |  | 112.59d | 0d | start no earlier than 2026-06-15 09:00 | Тимофеев В | 4h |  |
| 420 | 1.185.7 | монтаж на линию |  | 2h | 2026-10-09 16:00 | 2026-10-09 18:00 | 419FS+1d |  |  | 112.59d |  | start no earlier than 2026-06-03 08:00 | Тимофеев В | 2h |  |
| 421 | 1.186 | **установить автоматику запуска шнека + смеситель по датчику уровня сырья в бункере экструдера** |  | 26d? | 2026-11-02 09:00 A | 2026-12-01 18:00 |  |  | 25.89d? | 70.59d |  |  |  | 19.17h | 0.08h |
| 422 | 1.186.1 | разработка схема / компановка (составить список материалов) |  | 1h | 2026-11-02 09:00 | 2026-11-02 10:00 |  |  |  | 96.22d | 0d | start no earlier than 2026-11-02 09:00 | Дедов В | 1h |  |
| 423 | 1.186.2 | заявка датчики / пускатели / эл щит |  | 2h | 2026-11-02 10:00 | 2026-11-02 12:00 | 422 |  |  | 96.22d |  | start no earlier than 2026-06-04 09:00 | Домоводов К | 2h |  |
| 424 | 1.186.3 | доставка контроль |  | 5min | 2026-11-09 12:00 A | 2026-11-09 12:05 A | 423FS+7d | 100% |  |  |  | start no earlier than 2026-06-03 08:00 | Зорькин В | 0.08h | 0.08h |
| 425 | 1.186.4 | контроль поставки |  | 5min | 2026-11-10 12:05 | 2026-11-10 12:10 | 424FS+1d |  |  | 86.2d | 15.6d | start no earlier than 2026-06-03 08:00 | Зорькин В | 0.08h |  |
| 426 | 1.186.5 | сборка ШУ |  | 1d? | 2026-11-30 09:00 | 2026-11-30 18:00 | 425 |  |  | 70.59d | 0d | start no earlier than 2026-11-30 09:00 | Дедов В | 8h |  |
| 427 | 1.186.6 | монтаж в линию |  | 1d? | 2026-12-01 09:00 | 2026-12-01 18:00 | 426 |  |  | 70.59d |  | start no earlier than 2026-06-03 08:00 | Дедов В | 8h |  |
| 428 | 1.187 | поставить на двигатели накопительных столов тепловые реле |  | 2h | 2026-06-15 09:00 | 2026-06-15 11:00 |  |  |  | 205.34d |  | start no earlier than 2026-06-15 09:00 | Дедов В | 2h |  |
| 429 | 1.188 | влагоотделитель крышки загрузки квадропак треснул- замена |  | 1h | 2026-06-10 09:00 | 2026-06-10 10:00 |  |  |  | 208.47d |  | start no earlier than 2026-06-10 09:00 | Дедов В | 1h |  |
| 430 | 1.189 | установка ПЧ на насос жира 2 линия |  | 2h | 2026-06-02 09:00 A | 2026-06-02 11:00 A |  | 100% |  |  |  | start no earlier than 2026-06-02 09:00 | Дедов В | 2h | 2h |
| 431 | 1.190 | установка ПЧ на барабаны жиров 1 и 2 линия |  | 2h | 2026-06-02 09:00 A | 2026-06-02 11:00 A |  | 100% |  |  |  | start no earlier than 2026-06-02 09:00 | Дедов В | 2h | 2h |
| 432 | 1.191 | **рассекатели после шлюзовика 1 и 2 линия сделать, чтобы корм равномерно ложился по поверхности сетки** |  | 5.25d | 2026-06-03 09:00 A | 2026-06-10 11:00 A |  | 100% |  |  |  |  |  | 11h | 11h |
| 433 | 1.191.1 | после обеда будет остановка 2 линия- модернизация рассекателя |  | 1h | 2026-06-03 09:00 A | 2026-06-03 10:00 A |  | 100% |  |  |  | start no earlier than 2026-06-03 09:00 | Бундин В | 1h | 1h |

| ID | WBS | Task | Duration | Start | Finish | Predecessors | Complete | Remaining | Total slack | Constraint | Resources | Work | Actual work |
| --- | --- | --- | --- | --- | --- | --- | --- | --- | --- | --- | --- | --- | --- |
| 434 | 1.191.2 | **установить зубчатую пластину для выравнивания слоя на входе в печь** | 5.25d | 2026-06-03 09:00 A | 2026-06-10 11:00 A |  | 100% |  |  |  |  | 10h | 10h |
| 435 | 1.191.2.1 | подготовиьт чертеж | 2h | 2026-06-03 09:00 A | 2026-06-03 11:00 A |  | 100% |  |  | start no earlier than 2026-06-03 08:00 | Домоводов К | 2h | 2h |
| 436 | 1.191.2.2 | изготовить | 6h | 2026-06-05 09:00 A | 2026-06-05 16:00 A | 435 | 100% |  |  | start no earlier than 2026-06-05 09:00 | Бундин В | 6h | 6h |
| 437 | 1.191.2.3 | монтаж | 2h | 2026-06-10 09:00 A | 2026-06-10 11:00 A | 436 | 100% |  |  | start no earlier than 2026-06-10 09:00 | Некрасов А | 2h | 2h |
| 438 | 1.192 | **монтаж 2х прожекторов на барабаны жиров** | 0.25d | 2026-06-02 09:00 A | 2026-06-02 11:00 A |  | 100% |  |  |  |  | 2h | 2h |
| 439 | 1.192.1 | подключить в ШУ самого транспортера на автомат | 2h | 2026-06-02 09:00 A | 2026-06-02 11:00 A |  | 100% |  |  | start no earlier than 2026-06-02 09:00 | Макаревич А | 2h | 2h |
| 440 | 1.193 | **проверка вентилятор упавший в зимний период. Тест на месте** | 6.25d | 2026-06-05 09:00 A | 2026-06-15 11:00 A |  | 100% |  |  |  |  | 10h | 10h |
| 441 | 1.193.1 | изготовить подиум под улитку | 6h | 2026-06-05 09:00 A | 2026-06-05 16:00 A |  | 100% |  |  | start no earlier than 2026-06-05 09:00 | Тимофеев В | 6h | 6h |
| 442 | 1.193.2 | перенос вентилятора | 2h | 2026-06-15 09:00 A | 2026-06-15 11:00 A |  | 100% |  |  | start no earlier than 2026-06-15 09:00 | Тимофеев В; Некрасов А | 4h | 4h |
| 443 | 1.194 | прачка 1ц замена светильник | 1h | 2026-05-29 09:00 A | 2026-05-29 10:00 A |  | 100% |  |  | start no earlier than 2026-05-29 08:00 | Бундин В | 1h | 1h |
| 444 | 1.195 | запайщик замена нихром | 1h | 2026-05-29 09:00 A | 2026-05-29 10:00 A |  | 100% |  |  | start no earlier than 2026-05-29 08:00 | Бундин В | 1h | 1h |
| 445 | 1.196 | устранить провисание патрубка подачи ГДЗ линия 2 | 1h | 2026-08-31 09:00 A | 2026-08-31 10:00 A |  | 100% |  |  | start no earlier than 2026-08-31 09:00 | Тимофеев В | 1h | 1h |
| 446 | 1.197 | крепеление РР магистраль ф20 воздух в склад гдз | 15min | 2026-05-27 09:00 A | 2026-05-27 09:15 A |  | 100% |  |  | start no earlier than 2026-05-27 09:00 | Бундин В | 0.25h | 0.25h |
| 447 | 1.198 | **перевод насосов ГДЗ на канистры с трассой на насос > 1/2** | 3.25d | 2026-05-28 09:00 A | 2026-06-02 11:00 |  | 50% | 1.62d | 214.34d |  |  | 4h | 2h |
| 448 | 1.198.1 | подготовка канистры установить штуцер, подготовить шланг + фитинги на насос | 2h | 2026-05-28 09:00 A | 2026-05-28 11:00 A |  | 100% |  |  | start no earlier than 2026-05-28 09:00 | Бундин В | 2h | 2h |
| 449 | 1.198.2 | монаж на линию 1 | 2h | 2026-06-02 09:00 | 2026-06-02 11:00 | 448 |  |  | 214.34d | start no earlier than 2026-06-02 09:00 | Бундин В | 2h |  |
| 450 | 1.199 | **с тена печей осыпается оребрение, попадая в продукт** | 10.5d | 2026-05-27 09:00 A | 2026-06-10 13:00 A |  | 100% |  |  |  |  | 11h | 11h |
| 451 | 1.199.1 | осмотр тенов печей линия 1 и линия 2 на предмет отслоения оребрения. Очистка / замена | 3h | 2026-05-27 09:00 A | 2026-05-27 12:00 A |  | 100% |  |  | start no earlier than 2026-05-27 09:00 | Некрасов А | 3h | 3h |
| 452 | 1.199.2 | замена неисправных тенов линия 2, по диагностике Некрасова 27.05 (токи) 2 линия | 4h | 2026-06-02 09:00 A | 2026-06-02 13:00 A |  | 100% |  |  | start no earlier than 2026-06-02 09:00 | Некрасов А | 4h | 4h |
| 453 | 1.199.3 | замена прогнувшихся тен | 4h | 2026-06-10 09:00 A | 2026-06-10 13:00 A |  | 100% |  |  | start no earlier than 2026-06-10 09:00 | Некрасов А | 4h | 4h |
| 454 | 1.200 | перенести частотный привод ШУ печи 1л для доступа обслуживания | 2h | 2026-06-02 09:00 A | 2026-06-02 11:00 A |  | 100% |  |  | start no earlier than 2026-06-02 09:00 | Дедов В | 2h | 2h |
| 455 | 1.201 | нет фазы линия 2 печь оперативно | 1h | 2026-05-26 09:00 A | 2026-05-26 10:00 A |  | 100% |  |  | start no earlier than 2026-05-26 09:00 | Тимофеев В; Бундин В | 2h | 2h |
| 456 | 1.202 | замена твердотельное реле фаза В 2шт (найти пробитый) | 30min | 2026-05-27 09:00 A | 2026-05-27 09:30 A |  | 100% |  |  | start no earlier than 2026-05-27 09:00 | Бундин В | 0.5h | 0.5h |
| 457 | 1.203 | выравнивание потенциалов ШУ тв реле печей 1 и 2 | 1h | 2026-05-27 09:00 A | 2026-05-27 10:00 A |  | 100% |  |  | start no earlier than 2026-05-27 09:00 | Бундин В | 1h | 1h |

| ID | WBS | Task | Type | Duration | Start | Finish | Predecessors | Complete | Constraint | Resources | Work | Actual work |
| --- | --- | --- | --- | --- | --- | --- | --- | --- | --- | --- | --- | --- |
| 458 | 1.204 | **заменить фитинги с гайками (они на складе) на жирах 1 + 2 линия** |  | 28d | 2026-05-27 09:00 A | 2026-07-04 11:00 A |  | 100% |  |  | 6.08h | 6.08h |
| 459 | 1.204.1 | доставка шланг 8х12мм. Контроль |  | 5min | 2026-05-27 09:00 A | 2026-05-27 09:05 A |  | 100% | start no earlier than 2026-05-27 09:00 | Шуранов Ю | 0.08h | 0.08h |
| 460 | 1.204.2 | замена 2 линия |  | 2h | 2026-05-27 09:00 A | 2026-05-27 11:00 A |  | 100% | start no earlier than 2026-05-27 09:00 | Тимофеев В | 2h | 2h |
| 461 | 1.204.3 | замена 1 линия |  | 2h | 2026-06-15 09:00 A | 2026-06-15 11:00 A |  | 100% | start no earlier than 2026-06-15 09:00 | Тимофеев В | 2h | 2h |
| 462 | 1.204.4 | проверить где не поставлены фитинги с гайками- поменять | manual | 2h | 2026-07-04 09:00 A | 2026-07-04 11:00 A |  | 100% | start no earlier than 2026-07-04 09:00 | Тимофеев В | 2h | 2h |
| 463 | 1.205 | подключить Sаvema на теко 0,4 через ИБП (ибп на складе) |  | 1h | 2026-05-26 09:00 A | 2026-05-26 10:00 A |  | 100% | start no earlier than 2026-05-26 09:00 | Дедов В | 1h | 1h |
| 464 | 1.206 | найти и закрутить мотор-редукторы на транспортерах и отписаться на каких были не прикручены и не законтрогаек. |  | 1h | 2026-05-25 09:00 A | 2026-05-25 10:00 A |  | 100% | start no earlier than 2026-05-25 09:00 | Макаревич А | 1h | 1h |
| 465 | 1.207 | транспортер с жиров на виброохладитель- поменять кнопку стоп 2 линия | manual | 1h | 2026-05-27 09:00 A | 2026-05-27 10:00 A |  | 100% | start no earlier than 2026-05-27 09:00 | Дедов В | 1h | 1h |
| 466 | 1.208 | демонтировать на накопительном столе квадропака силиконовую резинку по диаметру | manual | 1h | 2026-05-24 09:00 A | 2026-05-24 10:00 A |  | 100% | start no earlier than 2026-05-24 09:00 | Макаревич А | 1h | 1h |
| 467 | 1.209 | **конв №2 линия 2 нижний вал нет защиты подшипников (был фетр)** |  | 9.16d | 2026-08-19 09:00 A | 2026-09-01 10:15 A |  | 100% |  |  | 5.25h | 5.25h |
| 468 | 1.209.1 | разборка, ревизия, подбор / чертеж уплотнеия |  | 2h | 2026-08-26 09:00 A | 2026-08-26 11:00 A |  | 100% | start no earlier than 2026-08-26 09:00 | Тимофеев В | 2h | 2h |
| 469 | 1.209.2 | заявка уплотнение |  | 1h | 2026-08-19 09:00 A | 2026-08-19 10:00 A |  | 100% | start no earlier than 2026-08-19 09:00 | Шуранов Ю | 1h | 1h |
| 470 | 1.209.3 | контроль поставки |  | 15min | 2026-09-01 10:00 A | 2026-09-01 10:15 A | 469FS+10d | 100% | start no earlier than 2026-08-12 09:00 | Шуранов Ю | 0.25h | 0.25h |
| 471 | 1.209.4 | монтаж уплотнения |  | 2h | 2026-08-31 09:00 A | 2026-08-31 11:00 A | 470FS+1d | 100% | start no earlier than 2026-08-12 09:00 | Тимофеев В | 2h | 2h |
| 472 | 1.210 | вентилятор на охладителе верхний краний слишком большой - переделать крепление |  | 1h | 2026-08-26 09:00 A | 2026-08-26 10:00 A |  | 100% | start no earlier than 2026-08-26 09:00 | Тимофеев В | 1h | 1h |
| 473 | 1.211 | устанить утечку на мойке зона экструдера |  | 1h | 2023-03-10 09:00 A | 2023-03-10 10:00 A |  | 100% |  | Бобренок В | 1h | 1h |
| 474 | 1.212 | выдать шестигранные болты и шайбы на ножевой узел экструдерщикам (штук 20) |  | 1h | 2026-05-21 09:00 A | 2026-05-21 10:00 A |  | 100% | start no earlier than 2026-05-21 08:00 | Бундин В | 1h | 1h |
| 475 | 1.213 | приварить болты к заслонке подачи гранулы на квадропаке (остановить, с мастером согласовать) |  | 1h | 2026-05-26 09:00 A | 2026-05-26 10:00 A |  | 100% | start no earlier than 2026-05-26 09:00 | Бобренок В | 1h | 1h |
| 476 | 1.214 | увеличить диаметр отверстия, чтобы горловина подачи сух. Гидрализата проходила (жиротопка) |  | 1h | 2026-05-20 09:00 A | 2026-05-20 10:00 A |  | 100% | start no earlier than 2026-05-20 09:00 | Некрасов А | 1h | 1h |
| 477 | 1.215 | посмотреть приточку, выпадает часто в аварию по насосу |  | 2h | 2026-05-18 08:00 A | 2026-05-18 11:00 A |  | 100% | start no earlier than 2026-05-18 08:00 | Дедов В | 2h | 2h |
| 478 | 1.216 | замена светильника в зоне завоза навесок (работа на высоте) |  | 2h | 2026-05-15 09:00 A | 2026-05-15 11:00 A |  | 100% | start no earlier than 2026-05-15 09:00 | Некрасов А; Труфанов А | 4h | 4h |
| 479 | 1.217 | закрепить встиряхиватель полного пакета №1 квадропак |  | 1h | 2026-05-14 08:00 A | 2026-05-14 10:00 A |  | 100% | start no earlier than 2026-05-14 08:00 | Бобренок В | 1h | 1h |
| 480 | 1.218 | замена лампа светильник гардероб М = на короткий. |  | 1h | 2026-05-13 09:00 A | 2026-05-13 10:00 A |  | 100% | start no earlier than 2026-05-13 09:00 | Бундин В | 1h | 1h |
| 481 | 1.219 | устранить потерю мощности печи в 2х фазах |  | 2h | 2026-05-12 08:00 A | 2026-05-12 11:00 A |  | 100% | start no earlier than 2026-05-12 08:00 | Тимофеев В; Бобренок В | 4h | 4h |
| 482 | 1.220 | квадропак изготовить и заменить текстолит на термоноже |  | 2h | 2026-05-12 09:00 A | 2026-05-12 11:00 A |  | 100% | start no earlier than 2026-05-12 08:00 | Некрасов А | 2h | 2h |

| ID | WBS | Task | Type | Duration | Start | Finish | Predecessors | Complete | Constraint | Resources | Work | Actual work |
| --- | --- | --- | --- | --- | --- | --- | --- | --- | --- | --- | --- | --- |
| 483 | 1.221 | **бак стабилизации воды-утечка** |  | 0.25d | 2026-05-22 09:00 A | 2026-05-22 11:00 A |  | 100% |  | Тимофеев В | 4h | 4h |
| 484 | 1.221.1 | монтаж подачи воды 2 линия в прекондиционер |  | 2h | 2026-05-22 09:00 A | 2026-05-22 11:00 A |  | 100% | start no earlier than 2026-05-22 09:00 | Тимофеев В | 2h | 2h |
| 485 | 1.222 | **парогенератор 1ц ремонт по гарантии** |  | 30d? | 2026-04-27 09:00 A | 2026-06-05 18:00 A |  | 100% |  |  | 11.33h | 11.33h |
| 486 | 1.222.1 | отправить ПГ на ремонт орг курьера |  | 10min | 2026-04-27 09:00 A | 2026-04-27 09:10 A |  | 100% | start no earlier than 2026-04-27 08:00 | Шуранов Ю | 0.17h | 0.17h |
| 487 | 1.222.2 | контроль ремонт |  | 10min | 2026-05-04 09:10 A | 2026-05-04 09:20 A | 486FS+5d | 100% | start no earlier than 2026-04-27 08:00 | Шуранов Ю | 0.17h | 0.17h |
| 488 | 1.222.3 | нужно посмотреть парогенератор там релюха не щелкает- может разберешься, он находиться на складе у Веры |  | 2h | 2026-05-11 09:00 A | 2026-05-11 11:00 A |  | 100% | start no earlier than 2026-05-11 09:00 | Дедов В | 2h | 2h |
| 489 | 1.222.4 | орг ремонт по гарантии |  | 1h | 2026-05-13 09:00 A | 2026-05-13 10:00 A |  | 100% | start no earlier than 2026-05-13 09:00 | Шуранов Ю | 1h | 1h |
| 490 | 1.222.5 | контроль возврата |  | 1d? | 2026-06-05 09:00 A | 2026-06-05 18:00 A |  | 100% | start no earlier than 2026-06-05 09:00 | Шуранов Ю | 8h | 8h |
| 491 | 1.223 | проверить мотор-редуктор на накопительном столе фасовка и | manual | 4h | 2026-05-11 09:00 A | 2026-05-11 13:00 A |  | 100% | start no earlier than 2026-05-11 09:00 | Бундин В | 4h | 4h |
| 492 | 1.224 | прикрутить ножку на 2 столе (ножка у Луговских в кабинете) |  | 1h | 2026-05-12 09:00 A | 2026-05-12 10:00 A |  | 100% | start no earlier than 2026-05-12 08:00 | Бундин В | 1h | 1h |
| 493 | 1.225 | **отодвинуть миксер подачи сухого гидрализата, чтобы сыпал не на ребра барабана, а на обод выхода** |  | 0.38d | 2026-05-08 08:00 A | 2026-05-08 12:00 A |  | 100% |  |  | 3h | 3h |
| 494 | 1.225.1 | перекрутить платформу миксера подачи сухого гидрализата снизу, чтобы дуло не задевало барабан |  | 3h | 2026-05-08 08:00 A | 2026-05-08 12:00 A |  | 100% | start no earlier than 2026-05-08 08:00 | Макаревич А | 3h | 3h |
| 495 | 1.226 | монтаж светильник в районе ВРУ сверху (зона экструдера) |  | 2h | 2026-05-16 09:00 A | 2026-05-18 11:00 A |  | 100% | start no earlier than 2026-05-16 09:00 | Макаревич А | 2h | 2h |
| 496 | 1.227 | закрепить трубу п/п на фасовке в углу, где стеллаж на клипсы к стене |  | 1h | 2026-05-07 08:00 A | 2026-05-07 10:00 A |  | 100% | start no earlier than 2026-05-07 08:00 | Бобренок В | 1h | 1h |
| 497 | 1.228 | прикрутить пускатели запуска вытяжки перед лестницей на 2 этаж зона экструдера и розетки |  | 2h | 2026-05-06 08:00 A | 2026-05-06 11:00 A |  | 100% | start no earlier than 2026-05-06 08:00 | Бобренок В | 2h | 2h |
| 498 | 1.229 | нет напряжения в розетке для инсектицидного светильника, корридор где вывозят готовую продукцию |  | 1h | 2026-05-07 09:00 A | 2026-05-07 10:00 A |  | 100% | start no earlier than 2026-05-07 09:00 | Бобренок В | 1h | 1h |
| 499 | 1.230 | подключить через счетчик подачу жира |  | 2h | 2026-05-05 08:00 A | 2026-05-05 11:00 A |  | 100% | start no earlier than 2026-05-05 08:00 | Тимофеев В | 2h | 2h |
| 500 | 1.231 | **повесить на места светильники инсектицидные (замена ламп)** |  | 0.38d | 2026-05-05 09:00 A | 2026-05-05 12:00 A |  | 100% |  |  | 3h | 3h |
| 501 | 1.231.1 | заменить инсектицидные лампы в светильниках (количество, которое поменял -записать) |  | 3h | 2026-05-05 09:00 A | 2026-05-05 12:00 A |  | 100% | start no earlier than 2026-05-05 08:00 | Бундин В | 3h | 3h |
| 502 | 1.232 | на жиротопке установить газ лифты (они на складе) |  | 1h | 2026-05-05 08:00 A | 2026-05-05 10:00 A |  | 100% | start no earlier than 2026-05-05 08:00 | Бобренок В | 1h | 1h |
| 503 | 1.233 | **дверь вход в столовую вкрыть заглушки и установить личинку с ключами (взять на складе)** |  | 14.12d | 2026-05-13 09:00 A | 2026-06-02 10:00 A |  | 100% |  |  | 42.5h | 42.5h |
| 504 | 1.233.1 | заказать ручку / ответ |  | 30min | 2026-05-13 09:00 A | 2026-05-13 09:30 A |  | 100% | start no earlier than 2026-05-13 09:00 | Шуранов Ю | 0.5h | 0.5h |
| 505 | 1.233.2 | конроль |  | 5d | 2026-05-18 09:00 A | 2026-05-22 18:00 A | 504 | 100% | start no earlier than 2026-05-18 09:00 | Карабанов | 40h | 40h |
| 506 | 1.233.3 | замена |  | 1h | 2026-05-30 09:00 A | 2026-06-01 10:00 A | 505 | 100% | start no earlier than 2026-05-30 09:00 | Тимофеев В | 1h | 1h |
| 507 | 1.233.4 | перевернуть замок ручкой вверх, личика переворачивается в любую сторону |  | 1h | 2026-06-02 09:00 A | 2026-06-02 10:00 A |  | 100% | start no earlier than 2026-06-02 09:00 | Макаревич А | 1h | 1h |
| 508 | 1.234 | поставить шпонки на питатель в слесарке |  | 1h | 2026-05-04 09:00 A | 2026-05-04 10:00 A |  | 100% | start no earlier than 2026-05-04 08:00 | Тимофеев В | 1h | 1h |
| 509 | 1.235 | установить транспортер на 1 линии |  | 1h | 2026-05-04 08:00 A | 2026-05-04 10:00 A |  | 100% | start no earlier than 2026-05-04 08:00 | Дедов В | 1h | 1h |
| 510 | 1.236 | собрать транспортер ковшевой (валы приехали, фетр на складе) |  | 4h | 2026-04-30 08:00 A | 2026-04-30 13:00 A |  | 100% | start no earlier than 2026-04-30 08:00 | Дедов В | 4h | 4h |

| ID | WBS | Task | Type | Duration | Start | Finish | Predecessors | Complete | Constraint | Resources | Work | Actual work |
| --- | --- | --- | --- | --- | --- | --- | --- | --- | --- | --- | --- | --- |
| 511 | 1.237 | **со старой ленты снять ковши в слесарке** |  | 0.5d | 2026-05-05 09:00 A | 2026-05-05 13:00 A |  | 100% |  |  | 4h | 4h |
| 512 | 1.237.1 | подготовить ленту с ковшами (150 мм между ковшами) лента на складе 5120мм в кольце и унести на желтый склад |  | 4h | 2026-05-05 09:00 A | 2026-05-05 13:00 A |  | 100% | start no earlier than 2026-05-05 09:00 | Бундин В | 4h | 4h |
| 513 | 1.238 | **разбираем улитки циклон и печи, замена подшипников** |  | 1d? | 2026-06-03 09:00 A | 2026-06-03 18:00 A |  | 100% |  | Тимофеев В; Бундин В | 16h | 16h |
| 514 | 1.238.1 | проверка подшипников на улитках печей |  | 1d? | 2026-06-03 09:00 A | 2026-06-03 18:00 A |  | 100% | start no earlier than 2026-06-03 09:00 |  |  |  |
| 515 | 1.239 | ТО Теко 1,5 (чистка тен, смазка штоков пневмоцилиндров, подшипников) |  | 3h | 2026-04-28 09:00 A | 2026-04-28 12:00 A |  | 100% | start no earlier than 2026-04-28 09:00 | Дедов В | 3h | 3h |
| 516 | 1.240 | ТО Теко 0,4 (чистка тен, смазка штоков пневмоцилиндров, подшипников) |  | 3h | 2026-04-28 09:00 A | 2026-04-28 12:00 A |  | 100% | start no earlier than 2026-04-28 09:00 | Дедов В | 3h | 3h |
| 517 | 1.241 | полное ТО квадропака (чистка тен, смазка штоков пневмоцилиндров, шприцевание подшипников, протяжка болтовых соединений) |  | 3h | 2026-04-28 09:00 A | 2026-04-28 12:00 A |  | 100% | start no earlier than 2026-04-28 09:00 | Дедов В | 3h | 3h |
| 518 | 1.242 | **модернизация трассы слива зона мойки экструдеров** |  | 20d? | 2026-04-27 09:00 A | 2026-05-23 10:00 A |  | 100% |  |  | 15.5h | 15.5h |
| 519 | 1.242.1 | заявка соединения и гидрозатвор |  | 15min | 2026-04-27 09:00 A | 2026-04-27 09:15 A |  | 100% | start no earlier than 2026-04-27 08:00 | Шуранов Ю | 0.25h | 0.25h |
| 520 | 1.242.2 | контроль доставки |  | 15min | 2026-05-04 09:15 A | 2026-05-04 09:30 A | 519FS+5d | 100% | start no earlier than 2026-04-27 08:00 | Шуранов Ю | 0.25h | 0.25h |
| 521 | 1.242.3 | монтаж |  | 1d? | 2026-05-06 09:30 A | 2026-05-07 09:30 A | 520FS+2d | 100% | start no earlier than 2026-04-27 08:00 | Тимофеев В | 8h | 8h |
| 522 | 1.242.4 | заявка на бурить стену / получить счет |  | 1h | 2026-04-28 09:00 A | 2026-04-28 10:00 A |  | 100% | start no earlier than 2026-04-28 09:00 | Зорькин В | 1h | 1h |
| 523 | 1.242.5 | расчет угла бурения. Замер + зхарисовать схему |  | 4h | 2026-05-13 09:00 A | 2026-05-13 13:00 A | 522 | 100% | start no earlier than 2026-05-13 09:00 | Зорькин В | 4h | 4h |
| 524 | 1.242.6 | орг работу подрядчика по бурению |  | 1h | 2026-05-20 09:00 A | 2026-05-20 10:00 A | 523 | 100% | start no earlier than 2026-05-20 09:00 | Зорькин В | 1h | 1h |
| 525 | 1.242.7 | запенить стыки в месте бурения | manual | 1h | 2026-05-23 09:00 A | 2026-05-23 10:00 A |  | 100% | start no earlier than 2026-05-23 09:00 | Бобренок В | 1h | 1h |
| 526 | 1.243 | взять на складе 2 гофросифона и заменить на мойке экструдер |  | 1h | 2026-04-24 09:00 A | 2026-04-24 10:00 A |  | 100% | start no earlier than 2026-04-24 08:00 | Бундин В | 1h | 1h |
| 527 | 1.244 | заменить монтажную коробку на 150х200мм -она у них на стяжках. Коробка новая на складе | manual | 1h | 2026-04-26 09:00 A | 2026-04-26 10:00 A |  | 100% | start no earlier than 2026-04-26 09:00 | Бобренок В | 1h | 1h |
| 528 | 1.245 | под мойкой в зоне экструдера на слив 3 греющего кабеля, нужно разобраться |  | 1h | 2026-04-24 09:00 A | 2026-04-24 10:00 A |  | 100% | start no earlier than 2026-04-24 08:00 | Шуранов Ю | 1h | 1h |
| 529 | 1.246 | жиротопка течет сальник, проверить и устранить течи везде. Чистка фильтров. |  | 2h | 2026-04-28 09:00 A | 2026-04-28 11:00 A |  | 100% | start no earlier than 2026-04-28 09:00 | Тимофеев В | 2h | 2h |
| 530 | 1.247 | ТО печи линия 1 ( вскрыть, ревизия- замена перемычек и т.д.) |  | 4h | 2026-04-23 09:00 A | 2026-04-23 13:00 A |  | 100% | start no earlier than 2026-04-23 08:00 | Бундин В | 4h | 4h |
| 531 | 1.248 | протянуть кабель UTP от столя Луговских до шкафа серверного (расскажу как протянуть по звонку) |  | 4h | 2026-04-23 09:00 A | 2026-04-23 13:00 A |  | 100% | start no earlier than 2026-04-23 08:00 | Бундин В | 4h | 4h |
| 532 | 1.249 | **подключить приточку как было** |  | 0.25d | 2026-04-29 09:00 A | 2026-04-29 11:00 A |  | 100% |  | Дедов В | 4h | 4h |
| 533 | 1.249.1 | подключить сервопривод на шибер и подключить |  | 2h | 2026-04-29 09:00 A | 2026-04-29 11:00 A |  | 100% | start no earlier than 2026-04-29 09:00 | Дедов В | 2h | 2h |
| 534 | 1.250 | **замена ленты на транспортере тип 2 2 линия (дособрать)** |  | 1.5d | 2026-04-24 09:00 A | 2026-04-27 13:00 A |  | 100% |  |  | 6h | 6h |
| 535 | 1.250.1 | со снятой ленты транспортера тип 2 снять все ковши (готовим для замены на 1 линии) |  | 2h | 2026-04-24 09:00 A | 2026-04-24 11:00 A |  | 100% | start no earlier than 2026-04-24 09:00 | Бундин В | 2h | 2h |
| 536 | 1.250.2 | установка ковшей со старой ленты на новую со склада 400х 5120мм |  | 4h | 2026-04-25 09:00 A | 2026-04-27 13:00 A |  | 100% | start no earlier than 2026-04-25 09:00 | Макаревич А | 4h | 4h |

| ID | WBS | Task | Duration | Start | Finish | Predecessors | Complete | Constraint | Resources | Work | Actual work |
| --- | --- | --- | --- | --- | --- | --- | --- | --- | --- | --- | --- |
| 537 | 1.251 | **система угольной фильтрации вытяжных газов с печей и пневотранспорта** | 0.25d | 2026-04-21 09:00 A | 2026-04-21 11:00 A |  | 100% |  |  | 3h | 3h |
| 538 | 1.251.1 | подготовить пластины 200*200 5мм для анкерения колон к полу ф12 6шт | 2h | 2026-04-21 09:00 A | 2026-04-21 11:00 A |  | 100% | start no earlier than 2026-04-21 09:00 | Бундин В | 2h | 2h |
| 539 | 1.251.2 | подготовить пластины 100*100 5мм для анкерения колон к стене 8шт | 1h | 2026-04-21 09:00 A | 2026-04-21 10:00 A |  | 100% | start no earlier than 2026-04-21 09:00 | Бундин В | 1h | 1h |
| 540 | 1.252 | проверка фильтров воды с редуктором в прекондиционер на ТО | 1h | 2026-04-22 09:00 A | 2026-04-22 10:00 A |  | 100% | start no earlier than 2026-04-22 09:00 | Бундин В | 1h | 1h |
| 541 | 1.253 | **заменить фильтры на жиротопка** | 17.12d | 2026-09-14 09:00 A | 2026-10-01 10:00 A |  | 100% |  |  | 2.25h | 2.25h |
| 542 | 1.253.1 | выяснить тип фильтров, заказ катриджи | 1h | 2026-09-14 09:00 A | 2026-09-14 10:00 A |  | 100% | start no earlier than 2026-09-14 09:00 | Зорькин В | 1h | 1h |
| 543 | 1.253.2 | контроль | 15min | 2026-09-24 10:00 A | 2026-09-24 10:15 A | 542FS+10d | 100% | start no earlier than 2026-04-22 09:00 | Зорькин В | 0.25h | 0.25h |
| 544 | 1.253.3 | замена | 1h | 2026-10-01 09:00 A | 2026-10-01 10:00 A | 543 | 100% | start no earlier than 2026-10-01 09:00 | Бобренок В | 1h | 1h |
| 545 | 1.254 | проверить напряжение в розетке конатушка вывоза готовой продукции | 1h | 2026-04-19 09:00 A | 2026-04-20 10:00 A |  | 100% | start no earlier than 2026-04-19 09:00 | Дедов В | 1h | 1h |
| 546 | 1.255 | **на 1 линии подготовить из оргстекла обратные крышки транспортера тип 2 (ковшевой), согласовать остановка с мастером и установить** | 0.12d | 2026-04-24 09:00 A | 2026-04-24 10:00 A |  | 100% |  | Бобренок В | 2h | 2h |
| 547 | 1.255.1 | перекрутить оргстекло (операторы подскажут в чем проблема) | 1h | 2026-04-24 09:00 A | 2026-04-24 10:00 A |  | 100% | start no earlier than 2026-04-24 09:00 | Бобренок В | 1h | 1h |
| 548 | 1.256 | проверить гидроаккумуляторы парогенераторов 1 и 2 линия и 100литровый в комнате стабилизации воды, если нужно качаем 2 очка. | 2h | 2026-04-19 09:00 A | 2026-04-20 11:00 A |  | 100% | start no earlier than 2026-04-19 09:00 | Макаревич А | 2h | 2h |
| 549 | 1.257 | проверка фильтров на редукторы экструдеров | 1h | 2026-04-24 09:00 A | 2026-04-24 10:00 A |  | 100% | start no earlier than 2026-04-24 09:00 | Тимофеев В | 1h | 1h |
| 550 | 1.258 | проверка токов, всех перемычек, шприцевание всех подшипников печи №2 | 3h | 2026-04-23 09:00 A | 2026-04-23 12:00 A |  | 100% | start no earlier than 2026-04-24 09:00 | Бобренок В | 3h | 3h |
| 551 | 1.259 | на питателе заменить втулки линия 1 и 2 | 2h | 2026-04-15 08:00 A | 2026-04-15 11:00 A |  | 100% | start no earlier than 2026-04-15 08:00 | Бобренок В | 2h | 2h |
| 552 | 1.260 | проверить радиатор приточки (протечки, есть ли подача горячей воды), если нет - выключить приточку, чтобы не разморозить! | 1h | 2026-04-14 09:00 A | 2026-04-14 10:00 A |  | 100% | start no earlier than 2026-04-14 08:00 | Труфанов А | 1h | 1h |
| 553 | 1.261 | приварить левую ногу мезонина на фасовке (штабелером сместили) | 1h | 2026-04-15 09:00 A | 2026-04-15 10:00 A |  | 100% | start no earlier than 2026-04-15 09:00 | Бобренок В | 1h | 1h |
| 554 | 1.262 | на печи №1 прошприцевать подшипники, проверить токи, если нужно вскрываем на ревизию перемычек | 3h | 2026-04-14 09:00 A | 2026-04-14 12:00 A |  | 100% | start no earlier than 2026-04-14 08:00 | Труфанов А | 3h | 3h |
| 555 | 1.263 | замена электродной группы на парогенераторе линия №1 (электроды подготовили в слесарке) | 4h | 2026-04-14 09:00 A | 2026-04-14 13:00 A |  | 100% | start no earlier than 2026-04-14 08:00 | Труфанов А | 4h | 4h |
| 556 | 1.264 | на квадропаке тена выставить в параллель | 1h | 2026-04-13 09:00 A | 2026-04-13 10:00 A |  | 100% | start no earlier than 2026-04-13 08:00 | Труфанов А | 1h | 1h |
| 557 | 1.265 | покрасить подиум под циклонами линия 1 и 2 | 2h | 2026-04-22 09:00 A | 2026-04-22 11:00 A |  | 100% | start no earlier than 2026-04-22 09:00 | Бундин В | 2h | 2h |
| 558 | 1.266 | подготовить лекало на приемный лоток транспортера тип 2 (у них в работе картонка, можно по ней и сделать), если будет остановка приварить | 1h | 2026-04-27 09:00 A | 2026-04-27 10:00 A |  | 100% | start no earlier than 2026-04-27 09:00 | Тимофеев В | 1h | 1h |
| 559 | 1.267 | на пнемоулитку поставить пистолет (зона экструдера) | 1h | 2026-04-11 09:00 A | 2026-04-13 10:00 A |  | 100% | start no earlier than 2026-04-11 09:00 | Макаревич А | 1h | 1h |
| 560 | 1.268 | установить фильтр на кондиционер между печками (фильтр у Луговских) | 1h | 2026-04-22 09:00 A | 2026-04-22 10:00 A |  | 100% | start no earlier than 2026-04-22 09:00 | Труфанов А | 1h | 1h |

| ID | WBS | Task | Type | Duration | Start | Finish | Predecessors | Complete | Remaining | Actual start | Actual finish | Total slack | Free slack | Constraint | Resources | Work | Actual work |
| --- | --- | --- | --- | --- | --- | --- | --- | --- | --- | --- | --- | --- | --- | --- | --- | --- | --- |
| 561 | 1.269 | **зафиксировать ручку в туалет (закрутить)** |  | 856.12d | 2023-03-22 09:00 A | 2026-04-22 10:00 |  | 100% |  |  | 2026-05-05 10:00 |  |  |  |  | 2h | 2h |
| 562 | 1.269.1 | заказать ручки |  | 1h | 2023-03-22 09:00 A | 2023-03-22 10:00 A |  | 100% |  |  |  |  |  |  | Шуранов Ю | 1h | 1h |
| 563 | 1.269.2 | установка (заменить ручку, взять на складе) |  | 1h | 2026-05-05 09:00 A | 2026-05-05 10:00 A |  | 100% |  |  |  |  |  | start no earlier than 2026-05-05 09:00 | Бобренок В | 1h | 1h |
| 564 | 1.270 | ТО теко 1,5 (чистка тен, смазка штоков пневмоцилиндров, подшипников) | manual | 3h | 2026-04-25 09:00 A | 2026-04-25 12:00 A |  | 100% |  |  |  |  |  | start no earlier than 2026-04-25 09:00 | Труфанов А | 3h | 3h |
| 565 | 1.271 | слить конденсат с компрессора, чистка фильтров и радиаторов | manual | 2h | 2026-04-12 09:00 A | 2026-04-12 11:00 A |  | 100% |  |  |  |  |  | start no earlier than 2026-04-12 09:00 | Макаревич А | 2h | 2h |
| 566 | 1.272 | **заказать газлифт жиротопка** |  | 11.12d? | 2026-04-22 09:00 A | 2026-05-06 10:00 |  | 100% |  |  | 2026-08-18 09:20 |  |  |  |  | 84.08h | 84.08h |
| 567 | 1.272.1 | доставка |  | 10d | 2026-04-22 09:00 A | 2026-05-05 18:00 A |  | 100% |  |  |  |  |  | start no earlier than 2026-04-22 09:00 | Карабанов | 80h | 80h |
| 568 | 1.272.2 | **установка газ лифт** |  | 69.04d | 2026-05-13 09:00 A | 2026-08-18 09:20 A |  | 100% |  |  |  |  |  |  |  | 4.08h | 4.08h |
| 569 | 1.272.2.1 | контроль поставки / размер |  | 20min | 2026-08-18 09:00 A | 2026-08-18 09:20 A |  | 100% |  |  |  |  |  | start no earlier than 2026-08-18 09:00 | Шуранов Ю | 0.33h | 0.33h |
| 570 | 1.272.2.2 | наварить уголок для площадки упора газлифта |  | 1h | 2026-05-13 09:00 A | 2026-05-13 10:00 A |  | 100% |  |  |  |  |  | start no earlier than 2026-05-13 09:00 | Труфанов А; Некрасов А | 2h | 2h |
| 571 | 1.272.2.3 | заявка газлифт с меньшей усилием/ выяснить координата |  | 30min | 2026-05-27 09:00 A | 2026-05-27 09:30 A |  | 100% |  |  |  |  |  | start no earlier than 2026-05-27 09:00 | Зорькин В | 0.5h | 0.5h |
| 572 | 1.272.2.4 | доставка контроль |  | 15min | 2026-08-12 09:00 A | 2026-08-12 09:15 A | 571FS+10d | 100% |  |  |  |  |  | start no earlier than 2026-05-13 09:00 | Зорькин В | 0.25h | 0.25h |
| 573 | 1.272.2.5 | замена |  | 1h | 2026-08-12 09:00 A | 2026-08-12 10:00 A |  | 100% |  |  |  |  |  | start no earlier than 2026-08-12 09:00 | Бобренок В | 1h | 1h |
| 574 | 1.273 | убрать диммер за еврокубом, где завозят навески (провода заизолировать и спрятать в кабель-канал) |  | 1h | 2026-04-10 08:00 A | 2026-04-10 10:00 A |  | 100% |  |  |  |  |  | start no earlier than 2026-04-10 08:00 | Бобренок В | 1h | 1h |
| 575 | 1.274 | закрыть монтажную коробку над дверью зона жиров выход |  | 1h | 2026-04-09 08:00 A | 2026-04-09 10:00 A |  | 100% |  |  |  |  |  | start no earlier than 2026-04-09 08:00 | Бобренок В | 1h | 1h |
| 576 | 1.275 | **на аппликаторе установить принтер (взять на складе)** |  | 3h? | 2026-04-10 09:00 | 2026-04-10 12:00 |  | 100% |  | 2026-04-09 08:00 | 2026-05-14 10:00 |  |  |  |  | 5h | 5h |
| 577 | 1.275.1 | монтаж витой пары от аппликатора до шкафа где вывозят ГП справа |  | 4h | 2026-04-09 08:00 A | 2026-04-09 13:00 A |  | 100% |  |  |  |  |  | start no earlier than 2026-04-09 08:00 | Бобренок В | 4h | 4h |
| 578 | 1.275.2 | тест принтера |  | 1h | 2026-05-14 09:00 A | 2026-05-14 10:00 A |  | 100% |  |  |  |  |  | start no earlier than 2026-05-14 09:00 | Зорькин В | 1h | 1h |
| 579 | 1.276 | замена шнек+гильзы (б/у) на 2 линии |  | 4h | 2026-04-09 08:00 A | 2026-04-09 13:00 A |  | 100% |  |  |  |  |  | start no earlier than 2026-04-09 08:00 | Тимофеев В | 4h | 4h |
| 580 | 1.277 | закрепить светильник в комнатке перед выходом, где вывозят готовую продукцию справа, оторвался | manual | 1h | 2026-04-08 09:00 A | 2026-04-08 10:00 A |  | 100% |  |  |  |  |  | start no earlier than 2026-04-08 08:00 | Бундин В | 1h | 1h |
| 581 | 1.278 | **замена лент на аппликаторе, подумать какой сделать отражатель для фотометки, чтобы не цепляло пакеты в работе** |  | 0.5d | 2026-05-27 09:00 | 2026-05-27 13:00 |  |  |  |  |  |  |  |  |  | 4h |  |
| 582 | 1.278.1 | замена ленеты |  | 4h | 2026-10-12 09:00 | 2026-10-12 13:00 |  |  |  |  |  | 112.09d |  | start no earlier than 2026-10-12 09:00 | Тимофеев В | 4h |  |
| 583 | 1.279 | **замена ленты пролистывателя** |  | 34d | 2026-09-18 09:00 A | 2026-10-27 18:00 |  | 32% | 23.15d |  |  | 99.59d |  |  |  | 11.75h | 3.75h |
| 584 | 1.279.1 | Полная дефектовка пролистывателя, снятие лент/замена |  | 3h | 2026-09-18 09:00 A | 2026-09-18 12:00 A |  | 100% |  |  |  |  |  | start no earlier than 2026-09-18 09:00 | Тимофеев В | 3h | 3h |
| 585 | 1.279.2 | заявка на ремень клиновый для ленты + клей |  | 30min | 2026-09-18 12:00 A | 2026-09-18 12:30 A | 584 | 100% |  |  |  |  |  | start no earlier than 2026-09-18 08:00 | Зорькин В | 0.5h | 0.5h |
| 586 | 1.279.3 | контроль доставки |  | 15min | 2026-09-25 12:30 A | 2026-09-25 12:45 A | 585FS+7d | 100% |  |  |  |  |  | start no earlier than 2026-09-18 08:00 | Зорькин В | 0.25h | 0.25h |
| 587 | 1.279.4 | склеить ремень |  | 4h | 2026-10-26 09:00 | 2026-10-26 13:00 | 586FS+1d |  |  |  |  | 99.59d | 0d | start no earlier than 2026-10-26 09:00 | Тимофеев В | 4h |  |
| 588 | 1.279.5 | замена лент |  | 4h | 2026-10-27 14:00 | 2026-10-27 18:00 | 587FS+1d |  |  |  |  | 99.59d |  | start no earlier than 2026-10-26 09:00 | Тимофеев В | 4h |  |
| 589 | 1.280 | подготовить электродную группу для парогенератора (собрать) |  | 2h | 2026-04-08 09:00 A | 2026-04-08 11:00 A |  | 100% |  |  |  |  |  | start no earlier than 2026-04-08 08:00 | Бундин В | 2h | 2h |

| ID | WBS | Task | Type | Duration | Start | Finish | Predecessors | Complete | Constraint | Resources | Work | Actual work |
| --- | --- | --- | --- | --- | --- | --- | --- | --- | --- | --- | --- | --- |
| 590 | 1.281 | **просыпается гранула на пересыпке с барабана в конвейер** |  | 0.5d | 2026-04-08 09:00 A | 2026-04-08 13:00 A |  | 100% |  |  | 6h | 6h |
| 591 | 1.281.1 | пододвинуть ближе к барабану конвейер + охладитель + вентилятор |  | 2h | 2026-04-08 09:00 A | 2026-04-08 11:00 A |  | 100% | start no earlier than 2026-04-08 09:00 | Бобренок В | 2h | 2h |
| 592 | 1.281.2 | доработка приемного лотка конвейера |  | 4h | 2026-04-08 09:00 A | 2026-04-08 13:00 A |  | 100% | start no earlier than 2026-04-08 09:00 | Некрасов А | 4h | 4h |
| 593 | 1.282 | забрать 2 рохли с пандуса, снять колеса в зип (зад- перед), а сами рохли в контейнер |  | 3h | 2026-04-04 09:00 A | 2026-04-06 12:00 A |  | 100% | start no earlier than 2026-04-04 09:00 | Труфанов А | 3h | 3h |
| 594 | 1.283 | **квадропак модернизация регулировки пластины нажима роликов для захвата пакета** |  | 2.12d | 2026-04-15 09:00 A | 2026-04-17 10:00 A |  | 100% |  |  | 3h | 3h |
| 595 | 1.283.1 | регулировочной тягой отвезти нажимную площадку на 5мм (остановить работу на 10 минут, согласовать с мастером) |  | 1h | 2026-04-17 09:00 A | 2026-04-17 10:00 A |  | 100% | start no earlier than 2026-04-17 09:00 | Бобренок В | 1h | 1h |
| 596 | 1.283.2 | изготовление пластины на ногу по аналогии как на первой ноге |  | 1h | 2026-04-15 09:00 A | 2026-04-15 10:00 A | 595 | 100% | start no earlier than 2026-04-15 09:00 | Бобренок В | 1h | 1h |
| 597 | 1.283.3 | монтаж |  | 1h | 2026-04-15 10:00 A | 2026-04-15 11:00 A | 596 | 100% | start no earlier than 2026-04-10 09:00 | Бобренок В | 1h | 1h |
| 598 | 1.284 | изготовить крышку на приямок слива канализации под раковинами зона экструдер. Из нерж, с ручкой. |  | 4h | 2026-04-02 08:00 A | 2026-04-02 13:00 A |  | 100% | start no earlier than 2026-04-02 08:00 | Бобренок В | 4h | 4h |
| 599 | 1.285 | выпрямить погнутые роль-ворота на рампе - в сторону слесарки (нужно откутить левую направляшку и вставить воротину на место) |  | 1h | 2026-04-02 08:00 A | 2026-04-02 10:00 A |  | 100% | start no earlier than 2026-04-02 08:00 | Бобренок В | 1h | 1h |
| 600 | 1.286 | **выключатель света на входе в гидролизатную закрепить сам рычаг переключения, проскальзывает** |  | 15.12d | 2026-04-06 09:00 A | 2026-04-27 10:00 A |  | 100% |  | Макаревич А | 123h | 123h |
| 601 | 1.286.1 | заказать выключатель |  | 1h | 2026-04-06 09:00 A | 2026-04-06 10:00 A |  | 100% | start no earlier than 2026-04-06 08:00 | Шуранов Ю | 1h | 1h |
| 602 | 1.286.2 | замена выключателя (выключатель в слесарке тебе показывал) |  | 1h | 2026-04-25 09:00 A | 2026-04-27 10:00 A |  | 100% | start no earlier than 2026-04-25 09:00 | Бобренок В | 1h | 1h |
| 603 | 1.287 | на пандусе 1 цеха справа - пометить шнеки и гильзы что они рабочие и вывести в контейнер |  | 2h | 2026-04-01 08:00 A | 2026-04-01 11:00 A |  | 100% | start no earlier than 2026-04-01 08:00 | Бобренок В | 2h | 2h |
| 604 | 1.288 | взять с контейнера пысос- проверить рабочий или нет (если работает выдать в 1 цех) |  | 2h | 2026-04-01 08:00 A | 2026-04-01 11:00 A |  | 100% | start no earlier than 2026-04-01 08:00 | Бобренок В | 2h | 2h |
| 605 | 1.289 | заменить плату интерфейса RS485 |  | 1h | 2026-04-04 09:00 A | 2026-04-06 10:00 A |  | 100% | start no earlier than 2026-04-04 09:00 | Труфанов А | 1h | 1h |
| 606 | 1.290 | замена шнеки 1 линия |  | 4h | 2026-03-31 08:00 A | 2026-03-31 13:00 A |  | 100% | start no earlier than 2026-03-31 08:00 | Тимофеев В; Бобренок В | 8h | 8h |
| 607 | 1.291 | замер износ шнеков |  | 1h | 2026-03-31 08:00 A | 2026-03-31 10:00 A |  | 100% | start no earlier than 2026-03-31 08:00 | Тимофеев В; Бобренок В; Зорькин В | 3h | 3h |
| 608 | 1.292 | почистить канальные вентиляторы вытяжки в курилке |  | 2h | 2026-03-28 09:00 A | 2026-03-30 11:00 A |  | 100% | start no earlier than 2026-03-28 09:00 | Бундин В | 2h | 2h |
| 609 | 1.293 | монтаж розетки на ногу нотис справа для подключения весов |  | 2h | 2026-03-27 09:00 A | 2026-03-27 11:00 A |  | 100% | start no earlier than 2026-03-27 09:00 | Труфанов А | 2h | 2h |
| 610 | 1.294 | добавить вибрации на виброохладителе линия 2 (согласовать с мастером, если будет остановка) |  | 2h | 2026-04-30 09:00 A | 2026-04-30 11:00 A | 619 | 100% |  | Бундин В | 2h | 2h |
| 611 | 1.295 | **замена ленты конвейер 2 линия 2** |  | 12.38d | 2026-04-07 09:00 A | 2026-04-23 12:00 A |  | 100% |  |  | 15h | 15h |
| 612 | 1.295.1 | взять ленту 400мм и начать крепить ковши для транспортера тип 2 (посчитать количество на транспортере) | manual | 9h | 2026-04-07 09:00 A | 2026-04-08 10:00 A |  | 100% | start no earlier than 2026-04-07 09:00 | Тимофеев В | 9h | 9h |
| 613 | 1.295.2 | замена ленты |  | 3h | 2026-04-23 09:00 A | 2026-04-23 12:00 A |  | 100% | start no earlier than 2026-04-23 09:00 | Тимофеев В; Бундин В | 6h | 6h |
| 614 | 1.296 | заменить на штабелере второй АКБ в зоне экструдера |  | 1h | 2026-03-28 09:00 A | 2026-03-30 10:00 A |  | 100% | start no earlier than 2026-03-28 09:00 | Дедов В | 1h | 1h |
| 615 | 1.297 | на кпп №1 опустить на 10см кабель в гофре для камер видеонаблюдения | manual | 2h | 2026-03-28 09:00 A | 2026-03-28 11:00 A |  | 100% | start no earlier than 2026-03-28 09:00 | Бундин В | 2h | 2h |
| 616 | 1.298 | вход охладителя 1 линии - нужно на среднем лотке между уровнями сделать сбоков шторки (фото скину) |  | 2h | 2026-03-28 09:00 A | 2026-03-30 11:00 A |  | 100% | start no earlier than 2026-03-28 09:00 | Бундин В | 2h | 2h |
| 617 | 1.299 | на первой линии под выходом из печи прикрутить на стенку оргстекло (Слава готовил по размерам оргстекло) |  | 1h | 2026-03-28 09:00 A | 2026-03-30 10:00 A |  | 100% | start no earlier than 2026-03-28 09:00 | Труфанов А | 1h | 1h |
| 618 | 1.300 | На пробниках оторвали разъем питания, нужно припаять |  | 2h | 2026-03-27 09:00 A | 2026-03-27 11:00 A |  | 100% | start no earlier than 2026-03-27 09:00 | Дедов В | 2h | 2h |
| 619 | 1.301 | подготовить 1 ленты с ковшами для транспортера тип 2 (зип) |  | 1d? | 2026-04-29 09:00 A | 2026-04-29 18:00 A |  | 100% | start no earlier than 2026-04-29 09:00 | Шуранов Ю | 8h | 8h |
| 620 | 1.302 | замена на старые капролонновые втулки в питателе линия 1 |  | 1h | 2026-03-26 09:00 A | 2026-03-26 10:00 A |  | 100% | start no earlier than 2026-03-26 09:00 | Тимофеев В | 1h | 1h |
| 621 | 1.303 | сделать на 2 линии вставыш на ленту транспортера тип 2 и установить на транспортер |  | 4h | 2026-03-25 09:00 A | 2026-03-25 13:00 A |  | 100% | start no earlier than 2026-03-25 09:00 | Некрасов А; Бобренок В | 8h | 8h |
| 622 | 1.304 | герметизация мезонина подачи навесок по шву |  | 1h | 2026-04-15 09:00 A | 2026-04-15 10:00 A |  | 100% | start no earlier than 2026-04-15 09:00 | Бобренок В | 1h | 1h |

| ID | WBS | Task | Type | Duration | Start | Finish | Complete | Remaining | Actual start | Actual finish | Constraint | Resources | Work | Actual work |
| --- | --- | --- | --- | --- | --- | --- | --- | --- | --- | --- | --- | --- | --- | --- |
| 623 | 1.305 | **на 2 линии на хомуты закрепить горловину к бункеру подачи сухого гидрализата (все расскажу)** |  | 0.25d | 2026-04-27 09:00 A | 2026-04-27 11:00 A | 100% |  |  |  |  | Некрасов А | 4h | 4h |
| 624 | 1.305.1 | на горловине подачи сухого гидрализата приварить выход под углом 45 градусов (углы из нерж есть в 3 цехе) |  | 2h | 2026-04-27 09:00 A | 2026-04-27 11:00 A | 100% |  |  |  | start no earlier than 2026-04-27 09:00 | Макаревич А | 2h | 2h |
| 625 | 1.306 | **разобрать с двух сторон питатель 2 линия - ревизия шестеренок и втулок спереди (оставить все разобранное)** |  | 2h | 2026-03-24 09:00 | 2026-03-24 11:00 | 100% |  | 2026-03-26 09:00 | 2026-03-26 11:00 |  |  | 2h | 2h |
| 626 | 1.306.1 | собрать питатель, ревизия втулок, подшипников, шнеков, шестеренок. Подогнать капролонновые втулки |  | 2h | 2026-03-26 09:00 A | 2026-03-26 11:00 A | 100% |  |  |  | start no earlier than 2026-03-26 09:00 | Тимофеев В | 2h | 2h |
| 627 | 1.307 | пульт управления кондиционером в зоне экструдера- закрепить гофру и заизолировать разрыв гофры, закрепить к стенке |  | 1h | 2026-03-24 08:00 A | 2026-03-24 10:00 A | 100% |  |  |  | start no earlier than 2026-03-24 08:00 | Бобренок В | 1h | 1h |
| 628 | 1.308 | блок питания для весов на жирах развалился, стянуть изолентой |  | 1h | 2026-03-24 08:00 A | 2026-03-24 10:00 A | 100% |  |  |  | start no earlier than 2026-03-24 08:00 | Бобренок В | 1h | 1h |
| 629 | 1.309 | **ремонт /отключить 2 вентилятора охладитель 1 линия** |  | 801d | 2023-06-21 09:00 A | 2026-07-15 18:00 A | 100% |  |  |  |  | Тимофеев В | 12801h | 12801h |
| 630 | 1.309.1 | заказать в зип |  | 6392h | 2023-06-21 09:00 A | 2026-07-15 18:00 A | 100% |  |  |  |  | Шуранов Ю | 6392h | 6392h |
| 631 | 1.309.2 | заменить 2 вентилятора |  | 1h | 2026-04-04 09:00 A | 2026-04-06 10:00 A | 100% |  |  |  |  | Макаревич А | 1h | 1h |
| 632 | 1.310 | демонтаж крышка лотка в проеме между краем площадки вентиляции приточной и проемом ворот вход в кооридор завода навесок |  | 383520min | 2023-06-21 09:00 A | 2026-07-15 18:00 A | 100% |  |  |  |  | Труфанов А | 6392h | 6392h |
| 633 | 1.311 | стук шнек 2 линия - проверить, при необходимости разобрать |  | 3h | 2026-04-27 09:00 A | 2026-04-27 12:00 A | 100% |  |  |  | start no earlier than 2026-04-27 09:00 | Тимофеев В; Бобренок В | 6h | 6h |
| 634 | 1.312 | слить конденсат и продуть все радиаторы компрессор |  | 1h | 2026-03-21 09:00 A | 2026-03-23 10:00 A | 100% |  |  |  | start no earlier than 2026-03-21 09:00 | Дедов В | 1h | 1h |
| 635 | 1.313 | закрепить аварийную кнопку в гидролизатной (фото в чате будет) / пожарный выключатель |  | 1h | 2026-03-22 09:00 A | 2026-03-23 10:00 A | 100% |  |  |  | start no earlier than 2026-03-22 09:00 | Бобренок В | 1h | 1h |
| 636 | 1.314 | кнопки на управление ворот зона жиров поднять и закпепить выше |  | 2h | 2026-03-18 08:00 A | 2026-03-18 11:00 A | 100% |  |  |  | start no earlier than 2026-03-18 08:00 | Макаревич А | 2h | 2h |
| 637 | 1.315 | закрепить все отбойники где завозят навески экструдерщики |  | 2h | 2026-03-18 08:00 A | 2026-03-18 11:00 A | 100% |  |  |  | start no earlier than 2026-03-18 08:00 | Макаревич А | 2h | 2h |
| 638 | 1.316 | закрыить все электро шкафы |  | 30min | 2026-03-17 08:00 A | 2026-03-17 09:30 A | 100% |  |  |  | start no earlier than 2026-03-17 08:00 | Бобренок В | 0.5h | 0.5h |
| 639 | 1.317 | поломоечная машинка устранить течь |  | 1h | 2026-03-17 08:00 A | 2026-03-17 10:00 A | 100% |  |  |  | start no earlier than 2026-03-17 08:00 | Бобренок В | 1h | 1h |
| 640 | 1.318 | закрыить крышку на пробниках, задняя стенка прикрутить |  | 30min | 2026-03-17 08:00 A | 2026-03-17 09:30 A | 100% |  |  |  | start no earlier than 2026-03-17 08:00 | Бобренок В | 0.5h | 0.5h |
| 641 | 1.319 | продувка кабельного лотка |  | 2h | 2026-03-18 09:00 A | 2026-03-18 11:00 A | 100% |  |  |  | start no earlier than 2026-03-18 09:00 | Труфанов А; Некрасов А | 4h | 4h |
| 642 | 1.320 | монтаж крючков под халаты. Получить у мастера |  | 1h | 2026-03-17 08:00 A | 2026-03-17 10:00 A | 100% |  |  |  | start no earlier than 2026-03-17 08:00 | Бобренок В | 1h | 1h |
| 643 | 1.321 | **установить расходомеры пара на ПГ** |  | 0.38d | 2026-04-01 09:00 | 2026-04-01 12:00 |  | 0.38d | 2026-10-12 09:00 |  |  |  | 3h |  |
| 644 | 1.321.1 | монтаж 1 линия расходомер / кабель / блок питания | manual | 3h | 2026-10-12 09:00 A | 2026-10-12 12:00 |  | 3h |  |  | start no earlier than 2026-10-12 09:00 | Некрасов А | 3h |  |
| 645 | 1.322 | **монтаж регистратор данных линия 1 и 2:** |  | 0.25d | 2026-03-18 09:00 A | 2026-03-18 11:00 A | 100% |  |  |  |  |  | 2h | 2h |
| 646 | 1.322.1 | подключение линия 1 |  | 2h | 2026-03-18 09:00 A | 2026-03-18 11:00 A | 100% |  |  |  | start no earlier than 2026-03-18 09:00 | Домоводов К | 2h | 2h |
| 647 | 1.323 | бойлер на экструдере - установить трубку на клапан сброса и смонтировать её ы раковину |  | 1h | 2026-03-14 09:00 A | 2026-03-16 10:00 A | 100% |  |  |  | start no earlier than 2026-03-14 09:00 | Бундин В | 1h | 1h |
| 648 | 1.324 | смазать дверную ручку (входную) |  | 1h | 2026-03-15 09:00 A | 2026-03-16 10:00 A | 100% |  |  |  | start no earlier than 2026-03-15 09:00 | Бундин В | 1h | 1h |
| 649 | 1.325 | сделать ручку дверную (вход на упаковку) |  | 1h | 2026-03-15 09:00 A | 2026-03-16 10:00 A | 100% |  |  |  | start no earlier than 2026-03-15 09:00 | Бундин В | 1h | 1h |
| 650 | 1.326 | дверная ручка в туалет (подкрутить) |  | 1h | 2026-03-15 09:00 A | 2026-03-16 10:00 A | 100% |  |  |  | start no earlier than 2026-03-15 09:00 | Бундин В | 1h | 1h |
| 651 | 1.327 | штабелер экструдера натянуть цепь |  | 1h | 2026-03-13 08:00 A | 2026-03-13 10:00 A | 100% |  |  |  | start no earlier than 2026-03-13 08:00 | Дедов В | 1h | 1h |
| 652 | 1.328 | установить розетку возле роутера. Место монтажа фото от Шуранова |  | 2h | 2026-03-14 09:00 A | 2026-03-16 11:00 A | 100% |  |  |  | start no earlier than 2026-03-14 09:00 | Бундин В | 2h | 2h |
| 653 | 1.329 | линия 1 лоток охладителя под конвейером (по фото) - поднять на 3см, что бы не цеплял сетку. Снять / пересверлить крепеж |  | 2h | 2026-03-14 09:00 A | 2026-03-16 11:00 A | 100% |  |  |  | start no earlier than 2026-03-14 09:00 | Бундин В | 2h | 2h |
| 654 | 1.330 | изготовтиь полочку для роутера с "крышей. Двух скатная". |  | 4h | 2026-03-14 09:00 A | 2026-03-16 13:00 A | 100% |  |  |  | start no earlier than 2026-03-14 09:00 | Бундин В | 4h | 4h |

| ID | WBS | Task | Type | Duration | Start | Finish | Predecessors | Complete | Constraint | Resources | Work | Actual work |
| --- | --- | --- | --- | --- | --- | --- | --- | --- | --- | --- | --- | --- |
| 655 | 1.331 | **АКБ штабелер на навесках** |  | 43d | 2026-03-13 08:00 A | 2026-05-12 18:00 A |  | 100% |  |  | 2h | 2h |
| 656 | 1.331.1 | заявка на новые АКБ, отправить | milestone | 0d | 2026-03-13 08:00 A | 2026-03-13 08:00 A |  | 100% | start no earlier than 2026-03-13 08:00 | Шуранов Ю |  |  |
| 657 | 1.331.2 | получить счет | milestone | 0d | 2026-03-16 09:00 A | 2026-03-16 09:00 A | 656 | 100% | start no earlier than 2026-03-16 09:00 | Шуранов Ю |  |  |
| 658 | 1.331.3 | доставыка\ |  | 40d | 2026-03-16 09:00 A | 2026-05-12 18:00 A | 657 | 100% | start no earlier than 2026-03-13 08:00 |  |  |  |
| 659 | 1.331.4 | замена (получить на складе 2 АКБ и поменять на штабелере) |  | 2h | 2026-03-25 09:00 A | 2026-03-25 11:00 A |  | 100% | start no earlier than 2026-03-25 09:00 | Бобренок В | 2h | 2h |
| 660 | 1.332 | замена шнеков на 1 линии по команде. Подготовить / старые увезти |  | 1h | 2026-03-14 09:00 A | 2026-03-16 10:00 A |  | 100% | start no earlier than 2026-03-14 09:00 | Бобренок В; Некрасов А | 2h | 2h |
| 661 | 1.333 | **заменить мятый профлист коррдиор подачи навесок** |  | 32.25d | 2026-03-13 09:00 A | 2026-04-28 11:00 A |  | 100% |  |  | 85h | 85h |
| 662 | 1.333.1 | расчет материал / заявка |  | 1h | 2026-03-13 09:00 A | 2026-03-13 10:00 A |  | 100% | start no earlier than 2026-03-13 09:00 | Шуранов Ю | 1h | 1h |
| 663 | 1.333.2 | доставка |  | 10d | 2026-03-13 10:00 A | 2026-03-27 10:00 A | 662 | 100% | start no earlier than 2026-03-12 08:00 | Карабанов | 80h | 80h |
| 664 | 1.333.3 | замена |  | 2h | 2026-04-28 09:00 A | 2026-04-28 11:00 A | 663 | 100% | start no earlier than 2026-04-28 09:00 | Некрасов А; Труфанов А | 4h | 4h |
| 665 | 1.334 | **заменить аллюминевый скотч на швах вентиляции** |  | 18.25d | 2026-03-12 09:00 A | 2026-04-07 11:00 A |  | 100% |  |  | 82.33h | 82.33h |
| 666 | 1.334.1 | заявка |  | 20min | 2026-03-12 09:00 A | 2026-03-12 09:20 A |  | 100% | start no earlier than 2026-03-12 08:00 | Зорькин В | 0.33h | 0.33h |
| 667 | 1.334.2 | доставка |  | 10d | 2026-03-12 09:20 A | 2026-03-26 09:20 A | 666 | 100% | start no earlier than 2026-03-12 08:00 | Карабанов | 80h | 80h |
| 668 | 1.334.3 | замена (также на улитках печей, циклона, стык регулировки шибера улитки) | manual | 2h | 2026-04-07 09:00 A | 2026-04-07 11:00 A | 667 | 100% | start no earlier than 2026-04-07 09:00 | Бундин В | 2h | 2h |
| 669 | 1.335 | **замена скорлупа утеплитель горячих труб печи** |  | 16d | 2026-03-13 09:00 A | 2026-04-05 11:00 A |  | 100% |  |  | 83h | 83h |
| 670 | 1.335.1 | заявка |  | 1h | 2026-03-13 09:00 A | 2026-03-13 10:00 A |  | 100% | start no earlier than 2026-03-13 09:00 | Зорькин В | 1h | 1h |
| 671 | 1.335.2 | доставка |  | 10d | 2026-03-13 10:00 A | 2026-03-27 10:00 A | 670 | 100% | start no earlier than 2026-03-12 08:00 | Карабанов | 80h | 80h |
| 672 | 1.335.3 | замена | manual | 2h | 2026-04-05 09:00 A | 2026-04-05 11:00 A | 671 | 100% | start no earlier than 2026-04-05 09:00 | Бундин В | 2h | 2h |
| 673 | 1.336 | **купить прокатный запайщик** |  | 85.12d? | 2026-03-16 09:00 A | 2026-07-13 10:00 A |  | 100% |  |  | 11h | 11h |
| 674 | 1.336.1 | поиск / заявка |  | 2h | 2026-03-16 09:00 A | 2026-03-16 11:00 A |  | 100% | start no earlier than 2026-03-16 09:00 | Зорькин В | 2h | 2h |
| 675 | 1.336.2 | получить счет + договор |  | 1h | 2026-05-12 09:00 A | 2026-05-12 10:00 A | 674 | 100% | start no earlier than 2026-05-12 09:00 | Зорькин В | 1h | 1h |
| 676 | 1.336.3 | оплата | milestone | 0d | 2026-05-12 10:00 A | 2026-05-12 10:00 A | 675 | 100% | start no earlier than 2026-03-12 08:00 | Домоводов К |  |  |
| 677 | 1.336.4 | доставка |  | 40d | 2026-05-12 10:00 A | 2026-07-13 10:00 A | 676 | 100% | start no earlier than 2026-03-12 08:00 |  |  |  |
| 678 | 1.336.5 | приемка / сборка |  | 1d? | 2026-06-29 09:00 A | 2026-06-29 18:00 A | 677 | 100% | start no earlier than 2026-03-12 08:00 | Тимофеев В | 8h | 8h |
| 679 | 1.337 | сборка рохли 2шт |  | 1h | 2026-03-13 09:00 A | 2026-03-13 10:00 A |  | 100% | start no earlier than 2026-03-13 09:00 | Тимофеев В | 1h | 1h |
| 680 | 1.338 | изготовить герметичную крышку на подачку гидролизата |  | 2h | 2026-05-20 09:00 A | 2026-05-20 11:00 A |  | 100% | start no earlier than 2026-05-20 09:00 | Дедов В; Шуранов Ю | 4h | 4h |

| ID | WBS | Task | Type | Duration | Start | Finish | Predecessors | Complete | Actual start | Actual finish | Constraint | Resources | Work | Actual work |
| --- | --- | --- | --- | --- | --- | --- | --- | --- | --- | --- | --- | --- | --- | --- |
| 681 | 1.339 | **установить крышку печи торцевую с стороны экструдера на шарниры** |  | 12.5d | 2026-03-25 09:00 | 2026-04-10 13:00 |  | 100% | 2026-03-06 09:00 | 2026-09-11 13:00 |  |  | 88.08h | 88.08h |
| 682 | 1.339.1 | заказ шарниры |  | 5min | 2026-03-06 09:00 A | 2026-03-06 09:05 A |  | 100% |  |  | start no earlier than 2026-03-06 08:00 | Шуранов Ю | 0.08h | 0.08h |
| 683 | 1.339.2 | доставка |  | 10d | 2026-03-06 09:05 A | 2026-03-20 09:05 A | 682 | 100% |  |  | start no earlier than 2026-03-06 08:00 | Карабанов | 80h | 80h |
| 684 | 1.339.3 | монтаж линия 1 |  | 4h | 2026-05-13 09:00 A | 2026-05-13 13:00 A | 683 | 100% |  |  | start no earlier than 2026-05-13 09:00 | Бобренок В | 4h | 4h |
| 685 | 1.339.4 | монтаж линия 1 и 2 печи (чтобы открывалась и не мешала открыванию лотку сверху) | manual | 4h | 2026-09-11 09:00 A | 2026-09-11 13:00 A | 683 | 100% |  |  | start no earlier than 2026-09-11 09:00 | Макаревич А | 4h | 4h |
| 686 | 1.340 | **квадропак заменить пружины на лапках** |  | 10.12d | 2026-03-18 09:00 A | 2026-04-01 10:00 A |  | 100% |  |  |  |  | 3h | 3h |
| 687 | 1.340.1 | попытка заменить |  | 1h | 2026-03-18 09:00 A | 2026-03-18 10:00 A |  | 100% |  |  | start no earlier than 2026-03-18 09:00 | Дедов В | 1h | 1h |
| 688 | 1.340.2 | проврить ролики на износ / заказать |  | 1h | 2026-03-19 09:00 A | 2026-03-19 10:00 A |  | 100% |  |  | start no earlier than 2026-03-19 08:00 | Зорькин В | 1h | 1h |
| 689 | 1.340.3 | проверить / разрабоать полпн прижимная пластина регулировка |  | 1h | 2026-04-01 09:00 A | 2026-04-01 10:00 A |  | 100% |  |  | start no earlier than 2026-04-01 09:00 | Шуранов Ю | 1h | 1h |
| 690 | 1.341 | **звонок на ворота по привозу навесок** |  | 37.25d | 2026-03-05 09:00 A | 2026-04-27 11:00 A |  | 100% |  |  |  |  | 82.5h | 82.5h |
| 691 | 1.341.1 | заявка на сирену / звонок |  | 30min | 2026-03-05 09:00 A | 2026-03-05 09:30 A |  | 100% |  |  | start no earlier than 2026-03-05 09:00 | Шуранов Ю | 0.5h | 0.5h |
| 692 | 1.341.2 | доставка |  | 10d | 2026-03-12 09:00 A | 2026-03-25 18:00 A | 691 | 100% |  |  | start no earlier than 2026-03-12 08:00 | Карабанов | 80h | 80h |
| 693 | 1.341.3 | монтаж кнопка и звонок на складе (кнопку устанавливаем справа от ворот- звонок возле ВРУ слева |  | 2h | 2026-04-25 09:00 A | 2026-04-27 11:00 A | 692 | 100% |  |  | start no earlier than 2026-04-25 09:00 | Бобренок В | 2h | 2h |
| 694 | 1.342 | **установить профлист на левую стену** |  | 47d? | 2026-03-12 09:00 A | 2026-05-15 18:00 A |  | 100% |  |  |  |  | 185.5h | 185.5h |
| 695 | 1.342.1 | расчет материал с Олегом |  | 1h | 2026-03-12 09:00 A | 2026-03-12 10:00 A |  | 100% |  |  | start no earlier than 2026-03-12 09:00 | Шуранов Ю | 1h | 1h |
| 696 | 1.342.2 | заявка |  | 30min | 2026-03-19 09:00 A | 2026-03-19 09:30 A | 695 | 100% |  |  | start no earlier than 2026-03-19 09:00 | Шуранов Ю | 0.5h | 0.5h |
| 697 | 1.342.3 | доставка |  | 10d | 2026-03-19 09:30 A | 2026-04-02 09:30 A | 696 | 100% |  |  | start no earlier than 2026-03-04 08:00 | Карабанов | 80h | 80h |
| 698 | 1.342.4 | монтаж пробный ряд |  | 4h | 2026-04-22 09:00 A | 2026-04-22 13:00 A |  | 100% |  |  | start no earlier than 2026-04-22 09:00 | Некрасов А; Олег; Труфанов А | 12h | 12h |
| 699 | 1.342.5 | монтаж каркас |  | 1d? | 2026-04-23 14:00 A | 2026-04-24 13:00 A | 697, 698FS+1d | 100% |  |  | start no earlier than 2026-04-22 09:00 | Некрасов А; Труфанов А | 16h | 16h |
| 700 | 1.342.6 | монтаж лист |  | 6h | 2026-04-28 09:00 A | 2026-04-28 16:00 A | 699 | 100% |  |  | start no earlier than 2026-04-28 09:00 | Некрасов А; Труфанов А | 12h | 12h |
| 701 | 1.342.7 | монтаж уровень 2 |  | 4d | 2026-05-12 09:00 A | 2026-05-15 18:00 A |  | 100% |  |  | start no earlier than 2026-05-12 08:00 | Некрасов А; Труфанов А | 64h | 64h |
| 702 | 1.343 | **модернизация вентиляции** |  | 135.5d | 2026-03-13 09:00 A | 2026-09-15 13:00 A |  | 100% |  |  |  |  | 14.5h | 14.5h |
| 703 | 1.343.1 | заявка врезки для отбора проб |  | 15min | 2026-08-21 09:00 A | 2026-08-21 09:15 A |  | 100% |  |  | start no earlier than 2026-08-21 09:00 | Зорькин В | 0.25h | 0.25h |
| 704 | 1.343.2 | контроль доставки врезки для отбора проб |  | 15min | 2026-09-09 09:00 A | 2026-09-09 09:15 A | 703FS+7d | 100% |  |  | start no earlier than 2026-09-09 09:00 | Зорькин В | 0.25h | 0.25h |
| 705 | 1.343.3 | монтаж врезки для отбора проб |  | 4h | 2026-09-15 09:00 A | 2026-09-15 13:00 A | 704FS+1d | 100% |  |  | start no earlier than 2026-09-15 09:00 | Некрасов А; Труфанов А | 8h | 8h |
| 706 | 1.343.4 | составить схему, расчет |  | 2h | 2026-03-13 09:00 A | 2026-03-13 11:00 A |  | 100% |  |  | start no earlier than 2026-03-13 09:00 | Домоводов К | 2h | 2h |
| 707 | 1.343.5 | монтаж вентиляторов |  | 4h | 2026-05-12 09:00 A | 2026-05-12 13:00 A |  | 100% |  |  | start no earlier than 2026-05-12 08:00 | оплот | 4h | 4h |

| ID | WBS | Task | Type | Duration | Start | Finish | Predecessors | Complete | Constraint | Resources | Work | Actual work |
| --- | --- | --- | --- | --- | --- | --- | --- | --- | --- | --- | --- | --- |
| 708 | 1.344 | **заменаить фитинги на жирах** |  | 44.12d | 2026-02-19 09:00 A | 2026-04-22 10:00 A |  | 100% |  |  | 81.5h | 81.5h |
| 709 | 1.344.1 | заявка |  | 30min | 2026-02-19 09:00 A | 2026-02-19 09:30 A |  | 100% | start no earlier than 2026-02-19 09:00 | Шуранов Ю | 0.5h | 0.5h |
| 710 | 1.344.2 | доставка |  | 10d | 2026-02-19 09:30 A | 2026-03-05 09:30 A | 709 | 100% |  | Карабанов | 80h | 80h |
| 711 | 1.344.3 | контроль поставки | milestone | 0d | 2026-03-12 08:00 A | 2026-03-12 08:00 A | 710 | 100% | start no earlier than 2026-03-12 08:00 | Шуранов Ю |  |  |
| 712 | 1.344.4 | контроль. Пришли опять не те | milestone | 0min | 2026-03-12 09:00 A | 2026-03-12 09:00 A | 710, 711 | 100% | start no earlier than 2026-03-12 09:00 | Зорькин В |  |  |
| 713 | 1.344.5 | контроль | milestone | 0d | 2026-04-01 09:00 A | 2026-04-01 09:00 A |  | 100% | start no earlier than 2026-04-01 09:00 | Зорькин В |  |  |
| 714 | 1.344.6 | замена |  | 1h | 2026-04-22 09:00 A | 2026-04-22 10:00 A | 712FS+2d | 100% | start no earlier than 2026-04-22 09:00 | Бобренок В | 1h | 1h |
| 715 | 1.345 | **жиротопка замена воздухоотводчиков** |  | 24.12d | 2026-03-04 09:00 A | 2026-04-07 10:00 A |  | 100% |  |  | 41.25h | 41.25h |
| 716 | 1.345.1 | заявка |  | 15min | 2026-03-04 09:00 A | 2026-03-04 09:15 A |  | 100% | start no earlier than 2026-03-04 09:00 | Зорькин В | 0.25h | 0.25h |
| 717 | 1.345.2 | доставка |  | 5d | 2026-03-04 09:15 A | 2026-03-11 09:15 A | 716 | 100% | start no earlier than 2026-02-27 08:00 | Карабанов | 40h | 40h |
| 718 | 1.345.3 | замена |  | 1h | 2026-04-07 09:00 A | 2026-04-07 10:00 A | 717 | 100% | start no earlier than 2026-04-07 09:00 | Бундин В | 1h | 1h |
| 719 | 1.346 | **увеличить освещение в зоне квадропака** |  | 11.12d | 2026-03-04 09:00 A | 2026-03-19 10:00 A |  | 100% |  |  | 83.5h | 83.5h |
| 720 | 1.346.1 | составить список мматериал для монтажа |  | 30min | 2026-03-04 09:00 A | 2026-03-04 09:30 A |  | 100% | start no earlier than 2026-03-04 09:00 | Зорькин В; Шуранов Ю | 1h | 1h |
| 721 | 1.346.2 | заявка трос, светильники |  | 30min | 2026-03-04 09:30 A | 2026-03-04 10:00 A | 720 | 100% | start no earlier than 2026-02-27 08:00 | Шуранов Ю | 0.5h | 0.5h |
| 722 | 1.346.3 | доставка |  | 10d | 2026-03-05 10:00 A | 2026-03-19 10:00 A | 721FS+1d | 100% | start no earlier than 2026-02-27 08:00 | Карабанов | 80h | 80h |
| 723 | 1.346.4 | монтаж |  | 2h | 2026-03-06 09:00 A | 2026-03-06 11:00 A |  | 100% | start no earlier than 2026-03-06 09:00 | Бобренок В | 2h | 2h |
| 724 | 1.347 | **установить орг стекло/нерж на обратный ход ленты на раму конвейера** |  | 38.25d | 2026-03-03 09:00 A | 2026-04-24 11:00 A |  | 100% |  |  | 83.5h | 83.5h |
| 725 | 1.347.1 | заявка нерж |  | 30min | 2026-03-03 09:00 A | 2026-03-03 09:30 A |  | 100% | start no earlier than 2026-03-03 09:00 | Зорькин В | 0.5h | 0.5h |
| 726 | 1.347.2 | доставка |  | 10d | 2026-03-03 09:30 A | 2026-03-17 09:30 A | 725 | 100% | start no earlier than 2026-03-02 09:00 | Карабанов | 80h | 80h |
| 727 | 1.347.3 | подготовка материала в размер по аналогии 2 линии |  | 1h | 2026-04-15 09:00 A | 2026-04-15 10:00 A | 726 | 100% | start no earlier than 2026-04-15 09:00 | Бундин В | 1h | 1h |
| 728 | 1.347.4 | установка на остановке 1 линии (переустановить) |  | 2h | 2026-04-24 09:00 A | 2026-04-24 11:00 A |  | 100% | start no earlier than 2026-04-24 09:00 | Бобренок В | 2h | 2h |
| 729 | 1.348 | **установить роутер в зону экструдера для регистрации данных** |  | 2.12d | 2026-03-02 09:00 A | 2026-03-04 10:00 A |  | 100% |  |  | 10.17h | 10.17h |
| 730 | 1.348.1 | монтаж кабель / розетка, роутер |  | 4h | 2026-03-02 09:00 A | 2026-03-02 13:00 A |  | 100% | start no earlier than 2026-03-02 09:00 | Некрасов А; Труфанов А | 8h | 8h |
| 731 | 1.348.2 | Монтаж розетки для роутера |  | 1h | 2026-03-03 09:00 A | 2026-03-03 10:00 A |  | 100% | start no earlier than 2026-03-03 09:00 | Тимофеев В | 1h | 1h |
| 732 | 1.348.3 | Заявка Айтишнику на монтаж наконечников |  | 10min | 2026-03-03 09:00 A | 2026-03-03 09:10 A |  | 100% | start no earlier than 2026-03-03 09:00 | Зорькин В | 0.17h | 0.17h |
| 733 | 1.348.4 | Монтаж штекеров на кабель |  | 1h | 2026-03-04 09:00 A | 2026-03-04 10:00 A |  | 100% | start no earlier than 2026-03-04 09:00 | Коленкоров | 1h | 1h |

| ID | WBS | Task | Duration | Start | Finish | Predecessors | Complete | Constraint | Resources | Work | Actual work |
| --- | --- | --- | --- | --- | --- | --- | --- | --- | --- | --- | --- |
| 734 | 1.349 | **ремонт приточной вентиляции** | 47.25d | 2026-02-26 09:00 A | 2026-05-04 11:00 A |  | 100% |  |  | 334.5h | 334.5h |
| 735 | 1.349.1 | заявка калорифер | 30min | 2026-03-04 09:00 A | 2026-03-04 09:30 A |  | 100% | start no earlier than 2026-03-04 09:00 | Зорькин В | 0.5h | 0.5h |
| 736 | 1.349.2 | доставка | 10d | 2026-03-04 09:30 A | 2026-03-20 09:30 A | 735 | 100% |  | Карабанов | 80h | 80h |
| 737 | 1.349.3 | замена калорифер | 4h | 2026-03-11 09:00 A | 2026-03-11 13:00 A |  | 100% | start no earlier than 2026-03-11 09:00 | Некрасов А; Труфанов А | 8h | 8h |
| 738 | 1.349.4 | дать фото насоса | 20min | 2026-02-26 09:00 A | 2026-02-26 09:20 A |  | 100% | start no earlier than 2026-02-26 08:00 | Бундин В | 0.33h | 0.33h |
| 739 | 1.349.5 | заявка насос вода | 30min | 2026-03-02 09:30 A | 2026-03-02 10:00 A | 735, 738 | 100% | start no earlier than 2026-02-26 08:00 | Зорькин В | 0.5h | 0.5h |
| 740 | 1.349.6 | доставка | 10d | 2026-03-02 10:00 A | 2026-03-16 10:00 A | 739 | 100% | start no earlier than 2026-02-26 08:00 | Карабанов | 80h | 80h |
| 741 | 1.349.7 | контроль доставки насос и заслонка | 10min | 2026-03-24 09:00 A | 2026-03-24 09:10 A |  | 100% | start no earlier than 2026-03-24 08:00 | Зорькин В | 0.17h | 0.17h |
| 742 | 1.349.8 | замена насоса | 1h | 2026-03-25 09:10 A | 2026-03-25 10:10 A | 741FS+1d | 100% | start no earlier than 2026-03-24 09:00 | Труфанов А | 1h | 1h |
| 743 | 1.349.9 | заявка привод заслонки | 30min | 2026-03-04 09:00 A | 2026-03-04 09:30 A | 739 | 100% | start no earlier than 2026-03-04 09:00 | Зорькин В | 0.5h | 0.5h |
| 744 | 1.349.10 | доставка | 10d | 2026-03-04 09:30 A | 2026-03-18 09:30 A | 743 | 100% | start no earlier than 2026-02-26 08:00 | Карабанов | 80h | 80h |
| 745 | 1.349.11 | замена привода заслонки | 1h | 2026-05-04 09:00 A | 2026-05-04 10:00 A | 741FS+1d | 100% | start no earlier than 2026-05-04 09:00 | Бобренок В | 1h | 1h |
| 746 | 1.349.12 | заявка фильтры на приточная вентиляция | 30min | 2026-03-04 09:00 A | 2026-03-04 09:30 A |  | 100% | start no earlier than 2026-03-04 09:00 | Зорькин В | 0.5h | 0.5h |
| 747 | 1.349.13 | доставка | 10d | 2026-03-04 09:30 A | 2026-03-18 09:30 A | 746 | 100% | start no earlier than 2026-02-27 08:00 | Карабанов | 80h | 80h |
| 748 | 1.349.14 | замена | 2h | 2026-05-04 09:00 A | 2026-05-04 11:00 A | 747 | 100% | start no earlier than 2026-05-04 09:00 | Некрасов А | 2h | 2h |
| 749 | 1.350 | **монтаж регистратор данных линия 1 и 2:** | 1.12d | 2026-02-24 09:00 A | 2026-02-25 10:00 A |  | 100% |  |  | 5h | 5h |
| 750 | 1.350.1 | установить розетку и автомат для для блока питания в ШУ экструдера, без подключения | 2h | 2026-02-24 09:00 A | 2026-02-24 11:00 A |  | 100% | start no earlier than 2026-02-24 09:00 | Дедов В | 2h | 2h |
| 751 | 1.350.2 | монтаж безподключения кабель RS485 по аналогии с линия 3 - только часотный привод. На складе. | 1h | 2026-02-24 09:00 A | 2026-02-24 10:00 A |  | 100% | start no earlier than 2026-02-24 09:00 | Дедов В | 1h | 1h |
| 752 | 1.350.3 | подключение розеток для блока питания в ШУ | 1h | 2026-02-25 09:00 A | 2026-02-25 10:00 A |  | 100% | start no earlier than 2026-02-25 09:00 | Некрасов А | 1h | 1h |
| 753 | 1.350.4 | монтаж пультов управления и индикации регистратор, по аналогии с линия 3 | 1h | 2026-02-25 09:00 A | 2026-02-25 10:00 A |  | 100% | start no earlier than 2026-02-25 09:00 | Некрасов А | 1h | 1h |
| 754 | 1.351 | заменить пластик втулку на металл деталь уплотнение вала прекондицинера 2 линия | 1d? | 2025-09-08 09:00 A | 2025-09-08 18:00 A |  | 100% | start no earlier than 2025-09-08 09:00 |  |  |  |
| 755 | 1.352 | **баки жир 2 линия устноавить наконечники. От 23.05.25** | 265.25d | 2025-04-16 09:00 A | 2026-04-22 11:00 A |  | 100% |  |  | 42.5h | 42.5h |
| 756 | 1.352.1 | заявка на наконечнки | 30min | 2025-04-16 09:00 A | 2025-04-16 09:30 A |  | 100% | start no earlier than 2025-04-16 09:00 | Зорькин В | 0.5h | 0.5h |
| 757 | 1.352.2 | доставка | 5d | 2025-04-16 09:30 A | 2025-04-23 09:30 A | 756 | 100% | start no earlier than 2025-04-14 09:00 | Мультан | 40h | 40h |
| 758 | 1.352.3 | ТО каблей, клемников | 2h | 2026-04-22 09:00 A | 2026-04-22 11:00 A | 757 | 100% | start no earlier than 2026-04-22 09:00 | Труфанов А | 2h | 2h |

| ID | WBS | Task | Duration | Start | Finish | Predecessors | Complete | Actual finish | Constraint | Resources | Work | Actual work |
| --- | --- | --- | --- | --- | --- | --- | --- | --- | --- | --- | --- | --- |
| 759 | 1.353 | **установить фильтры на жир** | 89.12d? | 2025-05-14 09:00 A | 2025-09-16 10:00 A |  | 100% |  |  |  | 50h | 50h |
| 760 | 1.353.1 | изготовить переходники токарь разместить | 1h | 2025-09-08 09:00 A | 2025-09-08 10:00 A |  | 100% |  | start no earlier than 2025-09-08 09:00 | Зорькин В | 1h | 1h |
| 761 | 1.353.2 | контроль доставки | 5d | 2025-09-08 10:00 A | 2025-09-15 10:00 A | 760 | 100% |  | start no earlier than 2025-09-08 09:00 | Зорькин В | 40h | 40h |
| 762 | 1.353.3 | замена | 1d? | 2025-09-15 10:00 A | 2025-09-16 10:00 A | 761 | 100% |  | start no earlier than 2025-09-08 09:00 | Тимофеев В | 8h | 8h |
| 763 | 1.353.4 | установить фильтры на жир 2шт через краны на тройник | 1h | 2025-05-14 09:00 A | 2025-05-14 10:00 A |  | 100% |  | start no earlier than 2025-05-14 09:00 | Тимофеев В | 1h | 1h |
| 764 | 1.354 | **палетные ворота подача навесок + подача жир** | 14d? | 2025-07-17 09:00 A | 2025-08-05 18:00 A |  | 100% |  |  |  | 32h | 32h |
| 765 | 1.354.1 | подготовить чертеж | 1d? | 2025-07-17 09:00 A | 2025-07-17 18:00 A |  | 100% |  | start no earlier than 2025-07-17 09:00 | Зорькин В | 8h | 8h |
| 766 | 1.354.2 | сборка рамы | 2d | 2025-07-25 09:00 A | 2025-07-28 18:00 A | 765 | 100% |  | start no earlier than 2025-07-25 09:00 | Некрасов А | 16h | 16h |
| 767 | 1.354.3 | монтаж | 1d? | 2025-08-05 09:00 A | 2025-08-05 18:00 A | 766 | 100% |  | start no earlier than 2025-08-05 09:00 | Некрасов А | 8h | 8h |
| 768 | 1.355 | защита подшипников паронтом + подготовка | 4h | 2025-06-18 09:00 A | 2025-06-18 13:00 A |  | 100% |  | start no earlier than 2025-06-18 09:00 | Тимофеев В | 4h | 4h |
| 769 | 1.356 | **квадропак ТО + составить карту смазки и ТО + составить список ЗИП** | 0.5d | 2025-04-02 09:00 A | 2025-04-02 13:00 A |  | 100% |  |  |  | 4h | 4h |
| 770 | 1.356.1 | оформить карту ТО | 4h | 2025-04-02 09:00 A | 2025-04-02 13:00 A |  | 100% |  | start no earlier than 2025-04-02 09:00 | Зорькин В | 4h | 4h |
| 771 | 1.357 | **квадропак некрасивый шов - золотинка** | 104.25d | 2025-01-13 09:00 A | 2025-06-06 11:00 |  | 100% | 2025-04-17 16:30 |  |  | 8h | 8h |
| 772 | 1.357.1 | **изготовление термоножа с вставкойвставкой** | 0.12d | 2025-01-13 09:00 A | 2025-01-13 10:00 A |  | 100% |  |  |  | 1h | 1h |
| 773 | 1.357.1.1 | чертеж | 1h | 2025-01-13 09:00 A | 2025-01-13 10:00 A |  | 100% |  | start no earlier than 2025-01-13 09:00 | Зорькин В | 1h | 1h |
| 774 | 1.357.2 | **установка тефлона на термонож** | 42.25d | 2025-04-17 09:00 A | 2025-06-06 11:00 |  | 100% | 2025-04-17 16:30 |  |  | 7h | 7h |
| 775 | 1.357.2.1 | разработать метод крепления | 30min | 2025-04-17 09:00 A | 2025-04-17 09:30 A |  | 100% |  | start no earlier than 2025-04-17 09:00 | Зорькин В; Шуранов Ю | 1h | 1h |
| 776 | 1.357.2.2 | чертеж | 4h | 2025-04-17 09:30 A | 2025-04-17 14:30 A | 775 | 100% |  | start no earlier than 2025-01-17 09:00 | Зорькин В | 4h | 4h |
| 777 | 1.357.2.3 | орг изготовление деталей | 2h | 2025-04-17 14:30 A | 2025-04-17 16:30 A | 776 | 100% |  | start no earlier than 2025-04-16 09:00 | Шуранов Ю | 2h | 2h |
| 778 | 1.358 | **режет кабель ЛУКАС силовой в лотке эстакада у КПП** | 444.5d | 2024-08-02 09:00 A | 2026-04-16 13:00 A |  | 100% |  |  |  | 4.5h | 4.5h |
| 779 | 1.358.1 | решение о переговорах ГП | 30min | 2024-08-02 09:00 A | 2024-08-02 09:30 A |  | 100% |  | start no earlier than 2024-08-02 09:00 | Домоводов К | 0.5h | 0.5h |
| 780 | 1.358.2 | перекладка кабель | 4h | 2026-04-16 09:00 A | 2026-04-16 13:00 A |  | 100% |  | start no earlier than 2026-04-16 08:00 | Олег | 4h | 4h |
| 781 | 1.359 | **ШР2.2 замена автомат на циклон на номинальный** | 5.06d | 2026-04-10 09:00 A | 2026-04-17 09:30 A |  | 100% |  |  |  | 41.5h | 41.5h |
| 782 | 1.359.1 | прорверить какой стоит / заявка по мощности мотора | 30min | 2026-04-10 09:00 A | 2026-04-10 09:30 A |  | 100% |  | start no earlier than 2026-04-10 09:00 | Тимофеев В | 0.5h | 0.5h |
| 783 | 1.359.2 | достьавка | 5d | 2026-04-10 09:30 A | 2026-04-17 09:30 A | 782 | 100% |  | start no earlier than 2024-03-04 09:00 | Малинина М | 40h | 40h |
| 784 | 1.359.3 | замена | 1h | 2026-04-16 09:30 A | 2026-04-16 10:30 A | 783 | 100% |  | start no earlier than 2026-04-06 09:00 | Шуранов Ю | 1h | 1h |

| ID | WBS | Task | Type | Duration | Start | Finish | Predecessors | Complete | Remaining | Total slack | Free slack | Constraint | Resources | Work | Actual work |
| --- | --- | --- | --- | --- | --- | --- | --- | --- | --- | --- | --- | --- | --- | --- | --- |
| 785 | 1.360 | **кронштейн фотометки ТЕКО усилить** |  | 10.12d | 2024-09-11 09:00 A | 2024-09-25 10:00 A |  | 100% |  |  |  |  |  | 82h | 82h |
| 786 | 1.360.1 | поиск заявка кронштейна для датчика с регулировкой в3 плоскостях |  | 1h | 2024-09-11 09:00 A | 2024-09-11 10:00 A |  | 100% |  |  |  | start no earlier than 2024-09-11 09:00 | Зорькин В | 1h | 1h |
| 787 | 1.360.2 | доставка |  | 10d | 2024-09-11 10:00 A | 2024-09-25 10:00 A | 786 | 100% |  |  |  | start no earlier than 2024-09-11 09:00 | Мультан | 80h | 80h |
| 788 | 1.360.3 | замена |  | 1h | 2024-09-21 10:00 A | 2024-09-23 10:00 A | 787 | 100% |  |  |  | start no earlier than 2024-09-11 09:00 | Тимофеев В | 1h | 1h |
| 789 | 1.361 | **квадропак греет пневмоцилиндр термоножа** |  | 14.5d | 2024-09-12 09:00 A | 2024-10-02 13:00 A |  | 100% |  |  |  |  |  | 85h | 85h |
| 790 | 1.361.1 | решение о применении теплоизоляц пластины / заявка |  | 1h | 2024-09-12 09:00 A | 2024-09-12 10:00 A |  | 100% |  |  |  | start no earlier than 2024-09-12 09:00 | Зорькин В | 1h | 1h |
| 791 | 1.361.2 | доставка |  | 10d | 2024-09-12 10:00 A | 2024-09-26 10:00 A | 790 | 100% |  |  |  | start no earlier than 2024-09-11 09:00 | Мультан | 80h | 80h |
| 792 | 1.361.3 | замена |  | 4h | 2024-10-02 09:00 A | 2024-10-02 13:00 A | 791 | 100% |  |  |  | start no earlier than 2024-10-02 09:00 | Тимофеев В | 4h | 4h |
| 793 | 1.362 | **ремонт комппрессора - сдать по гарантии** |  | 739.12d | 2023-10-31 09:00 A | 2026-08-31 10:00 A |  | 100% |  |  |  |  |  | 2h | 2h |
| 794 | 1.362.1 | контроль снабжения - отправитьт поставщику |  | 1h | 2023-10-31 09:00 A | 2023-10-31 10:00 A |  | 100% |  |  |  | start no earlier than 2023-10-31 09:00 | Лобанов И | 1h | 1h |
| 795 | 1.362.2 | контроль возврата |  | 1h | 2026-08-31 09:00 A | 2026-08-31 10:00 A | 794 | 100% |  |  |  | start no earlier than 2026-08-31 09:00 | Зорькин В | 1h | 1h |
| 796 | 1.363 | режет металлом изоляцию кабеля в прорходе стены в 1 цех угол комппрессора - обезвредить |  | 1h | 2023-12-28 09:00 A | 2023-12-28 10:00 A |  | 100% |  |  |  | start no earlier than 2023-12-28 09:00 | Бобренок В; Дедов В | 2h | 2h |
| 797 | 1.364 | **карантин и потом удалить** |  | 206.25d? | 2026-03-13 09:00 A | 2026-12-09 11:00 |  | 68% | 65.7d? | 65.34d |  |  |  | 264.17h | 180.42h |
| 798 | 1.364.1 | **замена сетка печи линия 1** |  | 44.09d? | 2026-08-12 09:00 A | 2026-10-02 09:45 |  | 8% | 40.52d? | 119.5d |  |  |  | 9.5h | 1h |
| 799 | 1.364.1.1 | замерить параметры сетки |  | 15min | 2026-08-12 09:00 A | 2026-08-12 09:15 A |  | 100% |  |  |  | start no earlier than 2026-08-12 09:00 | Домоводов К; Тимофеев В | 0.5h | 0.5h |
| 800 | 1.364.1.2 | получить счет на сетку КИТАЙ |  | 15min | 2026-08-17 09:00 A | 2026-08-17 09:15 A | 799 | 100% |  |  |  | start no earlier than 2026-08-17 09:00 | Зорькин В | 0.25h | 0.25h |
| 801 | 1.364.1.3 | контроль оплата | milestone | 0d | 2026-08-21 09:00 A | 2026-08-21 09:00 A | 800FS+2d | 100% |  |  |  | start no earlier than 2026-08-21 09:00 | Зорькин В |  |  |
| 802 | 1.364.1.4 | контроль доставки |  | 15min | 2026-09-30 09:00 A | 2026-09-30 09:15 A | 801FS+30d | 100% |  |  |  | start no earlier than 2026-09-30 09:00 | Зорькин В | 0.25h | 0.25h |
| 803 | 1.364.1.5 | приемка |  | 30min | 2026-09-30 09:15 | 2026-09-30 09:45 | 802 |  |  | 119.5d | 0d | start no earlier than 2026-08-10 08:00 | Зорькин В | 0.5h |  |
| 804 | 1.364.1.6 | замена |  | 1d? | 2026-10-01 09:45 | 2026-10-02 09:45 | 803FS+1d |  |  | 119.5d |  | start no earlier than 2026-09-26 09:00 | Тимофеев В | 8h |  |
| 805 | 1.364.2 | **зависает диспелей на расходомере 2л** |  | 59.06d | 2026-08-11 09:00 A | 2026-10-20 09:30 |  | 82% | 10.74d | 105.53d |  |  |  | 2.75h | 2.25h |
| 806 | 1.364.2.1 | контроль поставки |  | 15min | 2026-08-11 09:00 A | 2026-08-11 09:15 A |  | 100% |  |  |  | start no earlier than 2026-08-11 09:00 | Домоводов К | 0.25h | 0.25h |
| 807 | 1.364.2.2 | замена кабель к монитору |  | 30min | 2026-08-19 09:00 A | 2026-08-19 09:30 A | 806 | 100% |  |  |  | start no earlier than 2026-08-19 09:00 | Домоводов К | 0.5h | 0.5h |
| 808 | 1.364.2.3 | объеденить минус шину контроллера с нулевым проводом оборудования ч/з резистор 10 Ом |  | 30min | 2026-10-20 09:00 | 2026-10-20 09:30 |  |  |  | 105.53d |  | start no earlier than 2026-10-20 09:00 | Дедов В | 0.5h |  |
| 809 | 1.364.2.4 | замена кабель от ЧП к контроллеру на экранированный |  | 30min | 2026-08-24 09:00 A | 2026-08-24 09:30 A |  | 100% |  |  |  | start no earlier than 2026-08-24 09:00 | Домоводов К | 0.5h | 0.5h |
| 810 | 1.364.2.5 | замена блок питания 5в |  | 1h | 2026-08-13 09:00 A | 2026-08-13 10:00 A |  | 100% |  |  |  | start no earlier than 2026-08-13 09:00 | Труфанов А | 1h | 1h |

| ID | WBS | Task | Duration | Start | Finish | Predecessors | Complete | Remaining | Total slack | Free slack | Constraint | Resources | Work | Actual work |
| --- | --- | --- | --- | --- | --- | --- | --- | --- | --- | --- | --- | --- | --- | --- |
| 811 | 1.364.3 | **ревизия красного смесителя 2 линия (просыпается мука)** | 34.03d | 2026-08-17 09:00 A | 2026-09-25 09:15 |  | 92% | 2.62d | 126.56d |  |  |  | 3.25h | 3h |
| 812 | 1.364.3.1 | подтянуть торцевое уплотнение смесителя | 30min | 2026-08-17 09:00 A | 2026-08-17 09:30 A |  | 100% |  |  |  | start no earlier than 2026-08-17 09:00 | Бундин В | 0.5h | 0.5h |
| 813 | 1.364.3.2 | запрос штатное уплотнеие у производителя / заявка | 30min | 2026-08-19 09:00 A | 2026-08-19 09:30 A |  | 100% |  |  |  | start no earlier than 2026-08-19 09:00 | Шуранов Ю | 0.5h | 0.5h |
| 814 | 1.364.3.3 | контроль поставки уплотнение торцевое вала | 15min | 2026-09-25 09:00 | 2026-09-25 09:15 | 813FS+5d |  |  | 126.56d |  | start no earlier than 2026-09-25 09:00 | Зорькин В | 0.25h |  |
| 815 | 1.364.3.4 | замена | 2h | 2026-09-01 09:00 A | 2026-09-01 11:00 A | 814FS+1d | 100% |  |  |  | start no earlier than 2026-09-04 09:00 | Тимофеев В | 2h | 2h |
| 816 | 1.364.4 | **выполнить смотровые люки состояния цепи средниий и верхние этажи. На торцевой крышке с стороны экструдера.** | 37d | 2026-07-14 09:00 A | 2026-09-02 18:00 |  | 13% | 32.29d | 147.59d |  |  |  | 9.17h | 1.17h |
| 817 | 1.364.4.1 | заявка шарниры нерж + бугельный зажим | 1h | 2026-07-14 09:00 A | 2026-07-14 10:00 A |  | 100% |  |  |  | start no earlier than 2026-07-14 08:00 | Домоводов К | 1h | 1h |
| 818 | 1.364.4.2 | контроль доставка | 10min | 2026-08-17 09:00 A | 2026-08-17 09:10 A | 817FS+7d | 100% |  |  |  | start no earlier than 2026-08-17 09:00 | Шуранов Ю | 0.17h | 0.17h |
| 819 | 1.364.4.3 | монтаж 1 линия | 4h | 2026-09-02 09:00 | 2026-09-02 13:00 | 818FS+1d |  |  | 147.59d | 0d | start no earlier than 2026-09-02 09:00 | Макаревич А | 4h |  |
| 820 | 1.364.4.4 | монтаж 2 линия | 4h | 2026-09-02 14:00 | 2026-09-02 18:00 | 819 |  |  | 147.59d |  | start no earlier than 2026-07-14 08:00 | Макаревич А | 4h |  |
| 821 | 1.364.5 | **сборка раковина нерж для мойки конвейер** | 7.25d? | 2026-11-30 09:00 | 2026-12-09 11:00 |  |  |  | 65.34d |  |  |  | 34h |  |
| 822 | 1.364.5.1 | подготовить данные, оформить как проект / инициировать совещание | 2h | 2026-11-30 09:00 | 2026-11-30 11:00 |  |  |  | 65.34d | 0d | start no earlier than 2026-11-30 09:00 | Зорькин В | 2h |  |
| 823 | 1.364.5.2 | совещание с руководителями / фиксация решения | 1d? | 2026-12-01 11:00 | 2026-12-02 11:00 | 822FS+1d |  |  | 65.34d | 0d | start no earlier than 2026-08-31 09:00 | Зорькин В | 8h |  |
| 824 | 1.364.5.3 | подготовить чертеж раковины, проверить материал | 1d? | 2026-12-03 11:00 | 2026-12-04 11:00 | 823FS+1d |  |  | 65.34d | 0d | start no earlier than 2026-09-08 09:00 | Зорькин В | 8h |  |
| 825 | 1.364.5.4 | сборка | 2d | 2026-12-07 11:00 | 2026-12-09 11:00 | 824FS+1d |  |  | 65.34d |  | start no earlier than 2026-07-14 08:00 | Бундин В | 16h |  |
| 826 | 1.364.6 | **изготовить шило для экструдерщиков, они подскажут** | 1h? | 2026-06-26 09:00 | 2026-06-26 10:00 |  |  |  |  |  |  |  | 0.25h |  |
| 827 | 1.364.6.1 | заказать спицы не пустые | 15min | 2026-09-01 09:00 | 2026-09-01 09:15 |  |  |  | 149.56d |  | start no earlier than 2026-09-01 09:00 | Шуранов Ю | 0.25h |  |
| 828 | 1.364.7 | модернизация опроры пневмоцилиндра встряживателя №1 квадропак | 4h | 2026-10-21 09:00 | 2026-10-21 13:00 |  |  |  | 104.09d |  | start no earlier than 2026-10-21 09:00 | Некрасов А | 4h |  |
| 829 | 1.364.8 | **установка фосунок - подача жира 1 линия** | 22.12d? | 2026-06-05 09:00 A | 2026-07-07 10:00 |  | 17% | 18.44d? | 189.47d |  |  |  | 4h | 2h |
| 830 | 1.364.8.1 | сборка кронштейн для фильтров + счетчик/ покраска | 1h | 2026-06-05 09:00 A | 2026-06-05 10:00 A |  | 100% |  |  |  | start no earlier than 2026-06-05 09:00 | Тимофеев В | 1h | 1h |
| 831 | 1.364.8.2 | установка | 1d? | 2026-07-06 09:00 | 2026-07-06 18:00 |  |  |  | 189.59d |  | start no earlier than 2026-07-06 09:00 |  |  |  |
| 832 | 1.364.8.3 | монтаж в линию | 2h | 2026-07-06 09:00 | 2026-07-06 11:00 |  |  |  | 190.34d |  | start no earlier than 2026-07-06 09:00 | Тимофеев В | 2h |  |
| 833 | 1.364.8.4 | монтаж розетка для блок питания 5в для регистратора | 1h | 2026-07-07 09:00 A | 2026-07-07 10:00 A |  | 100% |  |  |  | start no earlier than 2026-07-07 09:00 | Тимофеев В | 1h | 1h |
| 834 | 1.364.9 | **обслуживание инсекьюеров, утлизация отработанных ламп** | 127.12d | 2026-04-21 08:00 A | 2026-10-05 10:00 |  | 98% | 2.84d | 117.47d |  |  |  | 89.5h | 87.5h |
| 835 | 1.364.9.1 | Составить список ламп по цехам и передать Зорькину | 2h | 2026-04-21 08:00 A | 2026-04-21 11:00 A |  | 100% |  |  |  | start no earlier than 2026-04-21 08:00 | Тимофеев В | 2h | 2h |
| 836 | 1.364.9.2 | Заказать новые лампы | 30min | 2026-04-21 10:00 A | 2026-04-21 10:30 A | 835 | 100% |  |  |  | start no earlier than 2026-04-21 08:00 | Зорькин В | 0.5h | 0.5h |
| 837 | 1.364.9.3 | доставка | 10d | 2026-04-21 10:30 A | 2026-05-05 10:30 A | 836 | 100% |  |  |  | start no earlier than 2026-04-21 08:00 | Карабанов | 80h | 80h |
| 838 | 1.364.9.4 | снять все светильники мухоловки, извлечь лампы, уложить аккуратно в коробку (оставить в слесарке отработанные) светильники снятые передать мастеру смены для мытья | 2h | 2026-05-05 10:30 A | 2026-05-05 12:30 A | 837 | 100% |  |  |  | start no earlier than 2026-05-01 09:00 | Бобренок В | 2h | 2h |
| 839 | 1.364.9.5 | после чистки установить лампы в светильники, тусклые замнеить | 2h | 2026-05-12 09:00 A | 2026-05-12 11:00 A | 838 | 100% |  |  |  | start no earlier than 2026-05-12 09:00 | Бундин В | 2h | 2h |
| 840 | 1.364.9.6 | сообщить кол-во замененных ламп нач цехов | 1h | 2026-05-12 11:00 A | 2026-05-12 12:00 A | 839 | 100% |  |  |  | start no earlier than 2026-05-01 09:00 | Шуранов Ю | 1h | 1h |
| 841 | 1.364.9.7 | запрос договор на утилизацию ламп | 1h | 2026-09-14 09:00 | 2026-09-14 10:00 |  |  |  | 137.34d | 19.88d | start no earlier than 2026-09-14 09:00 | Домоводов К | 1h |  |
| 842 | 1.364.9.8 | подготовить лампы к утилизации | 1h | 2026-10-05 09:00 | 2026-10-05 10:00 | 840, 841 |  |  | 117.47d |  | start no earlier than 2026-10-05 09:00 | Тимофеев В | 1h |  |

| ID | WBS | Task | Duration | Start | Finish | Predecessors | Complete | Remaining | Actual start | Total slack | Constraint | Resources | Work | Actual work |
| --- | --- | --- | --- | --- | --- | --- | --- | --- | --- | --- | --- | --- | --- | --- |
| 843 | 1.364.10 | **установить принтер датаматрикс на пролистыватель** | 151d? | 2026-03-13 09:00 A | 2026-09-30 18:00 |  | 20% | 120.8d? |  | 120.59d |  |  | 11h | 3h |
| 844 | 1.364.10.1 | разработка крепления принтера | 1h | 2026-03-13 09:00 A | 2026-03-13 10:00 A |  | 100% |  |  |  | start no earlier than 2026-03-13 08:00 | Зорькин В; Шуранов Ю | 2h | 2h |
| 845 | 1.364.10.2 | настройка ПО с агрегатором | 1d? | 2026-09-30 09:00 | 2026-09-30 18:00 |  |  |  |  | 120.59d | start no earlier than 2026-09-30 09:00 | Домоводов К | 8h |  |
| 846 | 1.364.10.3 | изучение документации | 1h | 2026-05-28 09:00 A | 2026-05-28 10:00 A |  | 100% |  |  |  | start no earlier than 2026-05-28 09:00 | Домоводов К | 1h | 1h |
| 847 | 1.364.11 | **заменить плинтус стена вдольпечи 2** | 11.06d? | 2026-03-26 09:00 | 2026-04-10 09:30 |  | 91% | 1d? | 2026-03-13 09:00 |  |  |  | 96.5h | 80.5h |
| 848 | 1.364.11.1 | заявка | 30min | 2026-03-13 09:00 A | 2026-03-13 09:30 A |  | 100% |  |  |  | start no earlier than 2026-03-13 09:00 | Шуранов Ю | 0.5h | 0.5h |
| 849 | 1.364.11.2 | доставка | 10d | 2026-03-13 09:30 A | 2026-03-27 09:30 A | 848 | 100% |  |  |  | start no earlier than 2026-03-12 08:00 | Карабанов | 80h | 80h |
| 850 | 1.364.11.3 | замена | 1d? | 2026-10-12 09:00 | 2026-10-12 18:00 | 849 |  |  |  | 111.59d | start no earlier than 2026-10-12 09:00 | Некрасов А; Олег | 16h |  |
| 851 | 1.364.12 | **убрать кабеля с пола на упаковке 1 цех** | 0.02d | 2026-09-01 09:00 | 2026-09-01 09:10 |  |  |  |  | 149.57d |  |  | 0.17h |  |
| 852 | 1.364.12.1 | проверить на актуальность | 10min | 2026-09-01 09:00 | 2026-09-01 09:10 |  |  |  |  | 149.57d | start no earlier than 2026-09-01 09:00 | Зорькин В | 0.17h |  |
| 853 | 1.364.13 | **убрать кабеля с пола и заменить переноски штатными розетками - участок жира 1 цех** | 0.01d | 2026-09-01 09:00 | 2026-09-01 09:05 |  |  |  |  | 149.58d |  |  | 0.08h |  |
| 854 | 1.364.13.1 | проверить на актуальность | 5min | 2026-09-01 09:00 | 2026-09-01 09:05 |  |  |  |  | 149.58d | start no earlier than 2026-09-01 09:00 | Зорькин В | 0.08h |  |
| 855 | 1.365 | изготовить ключь для ТП | 2h | 2023-06-21 09:00 A | 2023-06-21 11:00 A |  | 100% |  |  |  | start no earlier than 2023-06-21 09:00 | Домоводов К | 2h | 2h |
| 856 | 1.366 | заменитьт автомат 63С кондиционер 1 цех | 1h | 2023-06-22 09:00 A | 2023-06-22 10:00 A |  | 100% |  |  |  | start no earlier than 2023-06-22 09:00 | Тимофеев В | 1h | 1h |
| 857 | 1.367 | **Барабаны 2 линия дражжировка** | 18d | 2026-04-21 09:00 A | 2026-05-14 18:00 A |  | 100% |  |  |  |  |  | 94.5h | 94.5h |
| 858 | 1.367.1 | Проработать модернизацию форсунок | 3h | 2026-04-22 09:00 A | 2026-04-22 12:00 A |  | 100% |  |  |  | start no earlier than 2026-04-22 09:00 | Зорькин В; Домоводов К | 6h | 6h |
| 859 | 1.367.2 | сделать заявку на доп форсунки, расходники | 30min | 2026-04-22 09:00 A | 2026-04-22 09:30 A |  | 100% |  |  |  | start no earlier than 2026-04-22 09:00 | Зорькин В | 0.5h | 0.5h |
| 860 | 1.367.3 | доставка | 10d | 2026-04-30 09:00 A | 2026-05-14 18:00 A |  | 100% |  |  |  | start no earlier than 2026-04-30 09:00 | Карабанов | 80h | 80h |
| 861 | 1.367.4 | Внедрение и монтаж | 2h | 2026-05-08 09:00 A | 2026-05-08 11:00 A |  | 100% |  |  |  | start no earlier than 2026-05-08 09:00 | Зорькин В; Тимофеев В | 4h | 4h |
| 862 | 1.367.5 | **Парогенератор** | 0.25d | 2026-04-21 09:00 A | 2026-04-21 11:00 A |  | 100% |  |  |  |  |  | 4h | 4h |
| 863 | 1.367.5.1 | Проверить термадатчик (панельтемпературы) TC4R на корректность работы, скачет температура, по необходимости заменить | 2h | 2026-04-21 09:00 A | 2026-04-21 11:00 A |  | 100% |  |  |  | start no earlier than 2026-04-21 08:00 | Бундин В; Зорькин В | 4h | 4h |
| 864 | 1.368 | **Звонок на экструдер** | 14.12d | 2026-04-07 09:00 A | 2026-04-27 10:00 A |  | 100% |  |  |  |  |  | 6h | 6h |
| 865 | 1.368.1 | Протяжка кабеля от ворот к экструдерщикам | 4h | 2026-04-07 09:00 A | 2026-04-07 13:00 A |  | 100% |  |  |  | start no earlier than 2026-04-22 09:00 | Дедов В | 4h | 4h |
| 866 | 1.368.2 | монтаж звонка | 1h | 2026-04-25 09:00 A | 2026-04-27 10:00 A | 865 | 100% |  |  |  | start no earlier than 2026-04-25 09:00 | Дедов В | 1h | 1h |
| 867 | 1.368.3 | монтаж кнопки за воротами | 1h | 2026-04-25 10:00 A | 2026-04-27 10:00 A | 866 | 100% |  |  |  | start no earlier than 2026-04-21 08:00 | Дедов В | 1h | 1h |

| ID | WBS | Task | Type | Duration | Start | Finish | Predecessors | Complete | Actual start | Actual finish | Constraint | Resources | Work | Actual work |
| --- | --- | --- | --- | --- | --- | --- | --- | --- | --- | --- | --- | --- | --- | --- |
| 868 | 1.369 | **Насос гидролизата** |  | 28.01d | 2026-08-04 09:00 A | 2026-09-10 09:05 A |  | 100% |  |  |  |  | 0.42h | 0.42h |
| 869 | 1.369.1 | Заказать ремкомплект шнек, резинка, трубка, связаться с производителем |  | 20min | 2026-08-04 09:00 A | 2026-08-04 09:20 A |  | 100% |  |  | start no earlier than 2026-08-04 09:00 | Зорькин В | 0.33h | 0.33h |
| 870 | 1.369.2 | Доставка контроль сам насос шетсрен |  | 5min | 2026-09-10 09:00 A | 2026-09-10 09:05 A |  | 100% |  |  | start no earlier than 2026-09-10 09:00 | Зорькин В | 0.08h | 0.08h |
| 871 | 1.370 | **Дражжировка конвейер №1 после печки** |  | 122.12d | 2026-04-22 08:00 A | 2026-09-30 10:00 A |  | 100% |  |  |  |  | 13.08h | 13.08h |
| 872 | 1.370.1 | Поставить резьбовые клепки на боковой кожух, где кончается лента |  | 1h | 2026-09-30 09:00 A | 2026-09-30 10:00 A |  | 100% |  |  | start no earlier than 2026-09-30 09:00 | Тимофеев В | 1h | 1h |
| 873 | 1.370.2 | Ремонт насоса от 2 линии 1 цех, статор взять на складе |  | 2h | 2026-09-10 09:00 A | 2026-09-10 11:00 A |  | 100% |  |  | start no earlier than 2026-09-10 09:00 | Некрасов А | 2h | 2h |
| 874 | 1.370.3 | контроль героторная пара оплата |  | 5min | 2026-08-21 09:00 A | 2026-08-21 09:05 A |  | 100% |  |  | start no earlier than 2026-08-21 09:00 | Зорькин В | 0.08h | 0.08h |
| 875 | 1.370.4 | Замена сальника на поворотном столе/проверить |  | 1h | 2026-07-23 09:00 A | 2026-07-23 10:00 A |  | 100% |  |  | start no earlier than 2026-07-23 08:00 | Бундин В | 1h | 1h |
| 876 | 1.370.5 | **дражжировка** |  | 0.62d | 2026-04-22 08:00 A | 2026-04-22 15:00 A |  | 100% |  |  |  |  | 9h | 9h |
| 877 | 1.370.5.1 | Установка рамы для фильтров |  | 3h | 2026-04-22 08:00 A | 2026-04-22 12:00 A |  | 100% |  |  | start no earlier than 2026-04-22 08:00 | Тимофеев В | 3h | 3h |
| 878 | 1.370.5.2 | установка счетчика |  | 1h | 2026-04-22 11:00 A | 2026-04-22 12:00 A | 877 | 100% |  |  | start no earlier than 2026-04-22 08:00 | Тимофеев В | 1h | 1h |
| 879 | 1.370.5.3 | кронштейн под пульт расходомера |  | 2h | 2026-04-22 12:00 A | 2026-04-22 15:00 A | 878 | 100% |  |  | start no earlier than 2026-04-22 08:00 | Тимофеев В | 2h | 2h |
| 880 | 1.370.5.4 | **Парогенератор** |  | 0.38d | 2026-04-22 09:00 A | 2026-04-22 12:00 A |  | 100% |  |  |  |  | 3h | 3h |
| 881 | 1.370.5.4.1 | чистка парогенераторов 1 и 2 линия |  | 3h | 2026-04-22 09:00 A | 2026-04-22 12:00 A |  | 100% |  |  | start no earlier than 2026-04-22 08:00 | Бундин В | 3h | 3h |
| 882 | 1.371 | **отмена** |  | 70.75d? | 2026-04-22 09:00 | 2026-07-29 16:00 A |  | 100% | 2026-07-08 09:00 |  |  |  | 12.33h | 12.33h |
| 883 | 1.371.1 | **Парогенератор** |  | 27.5d? | 2026-04-22 09:00 | 2026-05-25 13:00 |  | 100% | 2026-07-08 09:00 | 2026-07-29 16:00 |  |  | 12.33h | 12.33h |
| 884 | 1.371.1.1 | Замена говротрубы 1 линия |  | 1h | 2026-07-08 09:00 A | 2026-07-08 10:00 A |  | 100% |  |  | start no earlier than 2026-07-08 09:00 | Бобренок В | 1h | 1h |
| 885 | 1.371.1.2 | Осмотр стоек где стоит реле давления до расширительного бачка |  | 30min | 2026-07-27 09:00 A | 2026-07-27 09:30 A |  | 100% |  |  | start no earlier than 2026-07-27 09:00 | Тимофеев В | 0.5h | 0.5h |
| 886 | 1.371.1.3 | Составить список материала для ремонта и изготовления стоек |  | 30min | 2026-07-27 09:30 A | 2026-07-27 10:00 A | 885 | 100% |  |  | start no earlier than 2026-05-27 09:00 | Тимофеев В | 0.5h | 0.5h |
| 887 | 1.371.1.4 | Заказать недостающий материал |  | 20min | 2026-07-27 09:00 A | 2026-07-27 09:20 A |  | 100% |  |  | start no earlier than 2026-07-27 09:00 | Зорькин В | 0.33h | 0.33h |
| 888 | 1.371.1.5 | Изготовление стоек |  | 3h | 2026-07-29 09:00 A | 2026-07-29 12:00 A | 886 | 100% |  |  | start no earlier than 2026-07-29 09:00 | Некрасов А | 3h | 3h |
| 889 | 1.371.1.6 | Замена стойки под реле давления |  | 3h | 2026-07-29 12:00 A | 2026-07-29 16:00 A | 888 | 100% |  |  | start no earlier than 2026-05-27 09:00 | Некрасов А | 3h | 3h |
| 890 | 1.371.1.7 | Составить список материалов или заключение по 2-м частотникам из 1 цеха от теко 0,4 (поворотный стол и конвейер) |  | 1h | 2026-07-27 08:00 A | 2026-07-27 10:00 A |  | 100% |  |  | start no earlier than 2026-07-27 08:00 | Дедов В | 1h | 1h |
| 891 | 1.371.1.8 | Взять трубку в нашем кабинете и насверлить по всей длине симметрично отверстия самым маленьким сверлом которое у нас есть (по этому заданию позвонить) |  | 3h | 2026-07-28 08:00 A | 2026-07-28 12:00 A |  | 100% |  |  | start no earlier than 2026-07-28 08:00 | Макаревич А | 3h | 3h |
| 892 | 1.372 | Демонтаж разборка/сборка редукторы шлюз. Питателей циклона 1 и 2 линия | manual | 3h | 2026-04-24 09:00 A | 2026-04-24 12:00 A |  | 100% |  |  | start no earlier than 2026-04-24 09:00 | Бундин В | 3h | 3h |

| ID | WBS | Task | Type | Duration | Start | Finish | Complete | Remaining | Actual start | Total slack | Constraint | Resources | Work | Actual work |
| --- | --- | --- | --- | --- | --- | --- | --- | --- | --- | --- | --- | --- | --- | --- |
| 893 | 1.373 | **Теко 0,4** |  | 0.38d | 2026-04-03 09:00 A | 2026-04-03 12:00 A | 100% |  |  |  |  |  | 3h | 3h |
| 894 | 1.373.1 | замена ковшей | manual | 3h | 2026-04-03 09:00 A | 2026-04-03 12:00 A | 100% |  |  |  | start no earlier than 2026-04-03 09:00 | Макаревич А | 3h | 3h |
| 895 | 2 | **2 цех** |  | 249d? | 2023-11-16 09:00 | 2024-10-29 18:00 | 89% | 28d? | 2024-01-08 09:00 |  |  |  | 3067.5h | 2723.25h |
| 896 | 2.1 | состаивть инструкцию по эксплуатации на пролистыватель |  | 4h | 2026-11-17 09:00 | 2026-11-17 13:00 |  |  |  | 81.09d | start no earlier than 2026-11-17 09:00 | Зорькин В | 4h |  |
| 897 | 2.2 | заменаить лопатки на прекондиционере |  | 4h | 2026-11-19 09:00 | 2026-11-19 13:00 |  |  |  | 79.09d | start no earlier than 2026-11-19 09:00 | Некрасов А; Тимофеев В | 8h |  |
| 898 | 2.3 | ремонт ручка двери заявка битрикс |  | 1h | 2026-11-13 09:00 A | 2026-11-13 10:00 A | 100% |  |  |  | start no earlier than 2026-11-17 09:00 | Дедов В | 1h | 1h |
| 899 | 2.4 | Найти на синем складе лопатки от прекондиционера LT 85 |  | 1h | 2026-11-17 09:00 | 2026-11-17 10:00 |  |  |  | 81.47d | start no earlier than 2026-11-17 09:00 | Тимофеев В | 1h |  |
| 900 | 2.5 | Повешать болер, горизонтальный, на мойке, где экструдер. Попросить помощи пацанов на экструдере |  | 1h | 2026-11-12 09:00 A | 2026-11-12 10:00 A | 100% |  |  |  | start no earlier than 2026-11-12 08:00 | Бундин В | 1h | 1h |
| 901 | 2.6 | Повесить на кухне информационный стенд |  | 1h | 2026-11-11 09:00 A | 2026-11-11 10:00 A | 100% |  |  |  | start no earlier than 2026-11-11 08:00 | Дедов В | 1h | 1h |
| 902 | 2.7 | течь редуктор смесителя с стороны эл мотора - разборка /замена сальник\ |  | 4h | 2026-11-12 09:00 A | 2026-11-12 13:00 A | 100% |  |  |  | start no earlier than 2026-11-12 09:00 | Тимофеев В | 4h | 4h |
| 903 | 2.8 | Замена и ремонт инсектицидных ламп 7 шт (сделана 1шт) |  | 3h | 2026-11-05 09:00 | 2026-11-05 12:00 |  |  |  | 93.22d | start no earlier than 2026-11-05 08:00 | Дедов В | 3h |  |
| 904 | 2.9 | Замена подшипника на прекондиционере передний на остановке |  | 2h | 2026-11-05 09:00 A | 2026-11-05 11:00 A | 100% |  |  |  | start no earlier than 2026-11-05 08:00 | Дедов В | 2h | 2h |
| 905 | 2.10 | Проверить приточку, проконтролировать работу и теплового узла |  | 1h | 2026-11-03 09:00 A | 2026-11-03 10:00 A | 100% |  |  |  | start no earlier than 2026-11-03 08:00 | Дедов В | 1h | 1h |
| 906 | 2.11 | Заземление пролистывателя/кусается/устранить, найти где пробивает на корпус |  | 2h | 2026-11-03 09:00 A | 2026-11-03 11:00 A | 100% |  |  |  | start no earlier than 2026-11-03 08:00 | Дедов В | 2h | 2h |
| 907 | 2.12 | Подключить частотник приточной вентиляции к калориферу |  | 1h | 2026-11-03 09:00 A | 2026-11-03 10:00 A | 100% |  |  |  | start no earlier than 2026-11-03 08:00 | Дедов В | 1h | 1h |
| 908 | 2.13 | Ремонт дегистра в лаборатории |  | 2h | 2026-11-03 09:00 A | 2026-11-03 11:00 A | 100% |  |  |  | start no earlier than 2026-11-03 09:00 | Тимофеев В | 2h | 2h |
| 909 | 2.14 | Установка и пусконаладка пролистывателя и апликатора | manual | 4h | 2026-11-02 09:00 A | 2026-11-02 13:00 A | 100% |  |  |  | start no earlier than 2026-11-02 09:00 | Дедов В | 4h | 4h |
| 910 | 2.15 | повесить светильник в корридоре по пути на экструдер, установить на высоте с которой можно достать со стремянки |  | 2h | 2026-10-30 09:00 A | 2026-10-30 11:00 A | 100% |  |  |  | start no earlier than 2026-10-30 08:00 | Бобренок В | 2h | 2h |
| 911 | 2.16 | Ремонт звонка зона навесок, разобраться, почему не звенит/устранить |  | 1h | 2026-10-30 09:00 A | 2026-10-30 10:00 A | 100% |  |  |  | start no earlier than 2026-10-30 08:00 | Бобренок В | 1h | 1h |
| 912 | 2.17 | Ремонт доводчика 2 цех, зона навесок |  | 1h | 2026-10-30 09:00 A | 2026-10-30 10:00 A | 100% |  |  |  | start no earlier than 2026-10-30 08:00 | Бобренок В | 1h | 1h |
| 913 | 2.18 | Замена бактерицидных ламп. (косте ты платы не отдавал, ищи разъемы) | manual | 30min | 2026-10-31 09:00 A | 2026-10-31 09:30 A | 100% |  |  |  | start no earlier than 2026-10-31 09:00 | Дедов В | 0.5h | 0.5h |
| 914 | 2.19 | На КПП №2 сделать штуцер для набора кубов |  | 1h | 2026-10-30 09:00 A | 2026-10-30 10:00 A | 100% |  |  |  | start no earlier than 2026-10-30 09:00 | Труфанов А; Некрасов А | 2h | 2h |
| 915 | 2.20 | Перекрыть на складе воду питающую 2 цех, переключить бочку в реверс во 2 цеху, вода должна течь в обратку, запитать экструдер через байпас |  | 1h | 2026-10-30 09:00 A | 2026-10-30 10:00 A | 100% |  |  |  | start no earlier than 2026-10-30 09:00 | Труфанов А; Некрасов А | 2h | 2h |
| 916 | 2.21 | Скомплектовать что нужно для безопасного отвода пара на парогенераторе на подрывном клапане |  | 1h | 2026-11-03 09:00 | 2026-11-03 10:00 |  |  |  | 95.47d | start no earlier than 2026-11-03 09:00 | Труфанов А; Некрасов А | 2h |  |
| 917 | 2.22 | поменять лампу на этаже кабинетов в коридоре |  | 1h | 2026-10-28 09:00 A | 2026-10-28 10:00 A | 100% |  |  |  | start no earlier than 2026-10-28 08:00 | Бундин В | 1h | 1h |
| 918 | 2.23 | замена ножек на полибоксах под которые не заезжает рохля |  | 2h | 2026-10-30 09:00 A | 2026-10-30 11:00 A | 100% |  |  |  | start no earlier than 2026-10-30 09:00 | Бобренок В | 2h | 2h |
| 919 | 2.24 | переключить сигнализацию ПГ на независимое питание, что бы не отключалась при откл ПГ |  | 2h | 2026-10-28 09:00 A | 2026-10-28 11:00 A | 100% |  |  |  | start no earlier than 2026-10-28 09:00 | Бобренок В | 2h | 2h |
| 920 | 2.25 | Запустить отопление на экструдере |  | 1h | 2026-10-26 09:00 A | 2026-10-26 10:00 A | 100% |  |  |  | start no earlier than 2026-10-26 08:00 | Дедов В | 1h | 1h |
| 921 | 2.26 | закрепить воздушные шланги на упаковке водль стены на подобии как в ГДЗ |  | 2h | 2026-10-20 09:00 A | 2026-10-20 11:00 A | 100% |  |  |  | start no earlier than 2026-10-20 09:00 | Бундин В | 2h | 2h |
| 922 | 2.27 | установить вентилятор на охладитель который отсутсвует, должен быть снятый с 3ц |  | 1h | 2026-10-20 09:00 A | 2026-10-20 10:00 A | 100% |  |  |  | start no earlier than 2026-10-20 09:00 | Тимофеев В; Николаев | 2h | 2h |
| 923 | 2.28 | резервный кабель у компрессора убрать в лоток |  | 20min | 2026-10-20 09:00 A | 2026-10-20 09:20 A | 100% |  |  |  | start no earlier than 2026-10-20 09:00 | Бундин В | 0.33h | 0.33h |

| ID | WBS | Task | Type | Duration | Start | Finish | Predecessors | Complete | Remaining | Total slack | Constraint | Resources | Work | Actual work |
| --- | --- | --- | --- | --- | --- | --- | --- | --- | --- | --- | --- | --- | --- | --- |
| 924 | 2.29 | **замена трубки на насос гидролизат** |  | 8.25d | 2026-10-20 09:00 A | 2026-10-30 11:00 |  | 27% | 6d | 97.34d |  |  | 2.75h | 0.75h |
| 925 | 2.29.1 | по очереди установить на насосах трубку 12/10 |  | 30min | 2026-10-20 09:00 A | 2026-10-20 09:30 A |  | 100% |  |  | start no earlier than 2026-10-20 09:00 | Тимофеев В | 0.5h | 0.5h |
| 926 | 2.29.2 | контроль поставки фитингов под гайку 12/10 |  | 15min | 2026-10-20 09:00 A | 2026-10-20 09:15 A |  | 100% |  |  | start no earlier than 2026-10-20 09:00 | Зорькин В | 0.25h | 0.25h |
| 927 | 2.29.3 | замена всех трубок на 12/10 |  | 2h | 2026-10-30 09:00 | 2026-10-30 11:00 |  |  |  | 97.34d | start no earlier than 2026-10-30 09:00 | Тимофеев В | 2h |  |
| 928 | 2.30 | **получить образцы пакет мешок на БЕСТРОМ на пленке PE** |  | 1d | 2026-10-22 09:00 A | 2026-10-22 18:00 A |  | 100% |  |  |  |  | 21h | 21h |
| 929 | 2.30.1 | Установка оснастки на бестром, которую привезете. Старую снимаем и вешаем на специальную стойку, ее подготовить |  | 2h | 2026-10-22 09:00 A | 2026-10-22 11:00 A |  | 100% |  |  | start no earlier than 2026-10-22 09:00 | Труфанов А; Некрасов А | 4h | 4h |
| 930 | 2.30.2 | транспортировка штабелер |  | 1h | 2026-10-22 09:00 A | 2026-10-22 10:00 A |  | 100% |  |  | start no earlier than 2026-10-22 09:00 | Труфанов А | 1h | 1h |
| 931 | 2.30.3 | замена головы / настройка / тесты |  | 8h | 2026-10-22 09:00 A | 2026-10-22 18:00 A |  | 100% |  |  | start no earlier than 2026-10-22 09:00 | Зорькин В; Труфанов А | 16h | 16h |
| 932 | 2.31 | Поставить зарядку для поломоечной машинки |  | 1h | 2026-10-14 09:00 A | 2026-10-14 10:00 A |  | 100% |  |  | start no earlier than 2026-10-14 08:00 | Бобренок В | 1h | 1h |
| 933 | 2.32 | Ремонт светильника на углу здания, со стороны склада упаковки |  | 1h | 2026-10-20 09:00 A | 2026-10-20 10:00 A |  | 100% |  |  | start no earlier than 2026-10-20 09:00 | Тимофеев В; Николаев | 2h | 2h |
| 934 | 2.33 | **Борьба с запахом корма на антрисоли офисы** |  | 7.25d | 2026-10-13 09:00 A | 2026-10-21 11:00 A |  | 100% |  |  |  |  | 2.33h | 2.33h |
| 935 | 2.33.1 | Заказать пистолет и очиститель для пены |  | 10min | 2026-10-13 09:00 A | 2026-10-13 09:10 A |  | 100% |  |  | start no earlier than 2026-10-13 09:00 | Зорькин В | 0.17h | 0.17h |
| 936 | 2.33.2 | Контроль |  | 10min | 2026-10-20 09:00 A | 2026-10-20 09:10 A | 935 | 100% |  |  | start no earlier than 2026-10-20 09:00 | Зорькин В | 0.17h | 0.17h |
| 937 | 2.33.3 | Под потолком в корридоре кабинетов дополнительно запенить балку |  | 2h | 2026-10-21 09:00 A | 2026-10-21 11:00 A | 936 | 100% |  |  | start no earlier than 2026-10-21 09:00 | Бобренок В | 2h | 2h |
| 938 | 2.34 | С 3 цеха притащить плитку армстронг и заменить на целую на втором этаже в корридоре, при необходимости вырезать в размер |  | 2h | 2026-10-13 09:00 A | 2026-10-13 11:00 A |  | 100% |  |  | start no earlier than 2026-10-13 08:00 | Бобренок В | 2h | 2h |
| 939 | 2.35 | Сфотать шильдик компрессора (попросить пацанов с фасовки) и скинуть Зорькину |  | 1h | 2026-10-12 09:00 A | 2026-10-12 10:00 A |  | 100% |  |  | start no earlier than 2026-10-12 08:00 | Бундин В | 1h | 1h |
| 940 | 2.36 | Слить весь антифриз с приточки в вентиляции, перемотать соединения ПП к колориферу и насос |  | 2h | 2026-10-12 09:00 A | 2026-10-12 11:00 A |  | 100% |  |  | start no earlier than 2026-10-12 08:00 | Бундин В | 2h | 2h |
| 941 | 2.37 | Открыть приточку под потолком, где кабинеты в корридоре (по возможности найти диффузор и установить его, либо подумать, как ограничить поток) |  | 2h | 2026-10-12 09:00 A | 2026-10-12 11:00 A |  | 100% |  |  | start no earlier than 2026-10-12 08:00 | Бундин В | 2h | 2h |
| 942 | 2.38 | Бежит со стыка в раковине с сифоном, проверить/исправить на жирах |  | 1h | 2026-10-12 09:00 A | 2026-10-12 10:00 A |  | 100% |  |  | start no earlier than 2026-10-12 08:00 | Бундин В | 1h | 1h |
| 943 | 2.39 | Поставить воздухоотводчик с боковым отводом на котел с которого бежало | manual | 1h | 2026-10-12 09:00 A | 2026-10-12 10:00 A | 944 | 100% |  |  |  | Бобренок В | 1h | 1h |
| 944 | 2.40 | Поставить сливной шланг на поломоечную машинку, должен быть на ней | manual | 30min | 2026-10-10 09:00 A | 2026-10-10 09:30 A |  | 100% |  |  | start no earlier than 2026-10-10 09:00 | Бундин В | 0.5h | 0.5h |
| 945 | 2.41 | Собрать новый электрод для парогенератора из цельного нерж прутка, конец немного закруглить лепестковым диском |  | 4h | 2026-10-12 10:00 A | 2026-10-12 15:00 A | 943 | 100% |  |  |  | Бобренок В; Зорькин В | 8h | 8h |
| 946 | 2.42 | Сделать штекер поломоечной машинки. Склеить или взять со старого зарядного и приделать в замен нынешнего, проявить смекалку как это можно сделать. Созвониться с зорькиным |  | 2h | 2026-10-06 09:00 A | 2026-10-06 11:00 A |  | 100% |  |  | start no earlier than 2026-10-06 08:00 | Бобренок В | 2h | 2h |
| 947 | 2.43 | При запуске отопления приточки, как будет давление в системе проверить антифриз, долить |  | 1h | 2026-11-03 09:00 A | 2026-11-03 10:00 A |  | 100% |  |  | start no earlier than 2026-11-03 09:00 | Труфанов А; Некрасов А | 2h | 2h |
| 948 | 2.44 | Устранить течь в вентялиционной, проверить количество антифриза |  | 1h | 2026-10-06 09:00 A | 2026-10-06 10:00 A |  | 100% |  |  | start no earlier than 2026-10-06 09:00 | Бобренок В | 1h | 1h |
| 949 | 2.45 | Перебрать ножевой узел, понять причину люфта/устранить |  | 2h | 2026-10-06 09:00 A | 2026-10-06 11:00 A |  | 100% |  |  | start no earlier than 2026-10-06 09:00 | Бобренок В | 2h | 2h |
| 950 | 2.46 | Откалибровать смеситель |  | 1h | 2026-10-09 09:00 | 2026-10-09 10:00 |  |  |  | 113.47d | start no earlier than 2026-10-09 09:00 | Дедов В | 1h |  |

| ID | WBS | Task | Type | Duration | Start | Finish | Predecessors | Complete | Remaining | Total slack | Free slack | Constraint | Resources | Work | Actual work |
| --- | --- | --- | --- | --- | --- | --- | --- | --- | --- | --- | --- | --- | --- | --- | --- |
| 951 | 2.47 | **востановить работу пирометра печи** |  | 26.25d | 2026-10-21 09:00 A | 2026-11-20 11:00 |  | 67% | 8.75d | 78.34d |  |  |  | 8h | 4h |
| 952 | 2.47.1 | монтаж кабель сигнальный RS485 от пирометра к регистратору на экструдере. Паралельно витой паре - по ней останется питание датчика. |  | 4h | 2026-10-21 09:00 A | 2026-10-21 13:00 A |  | 100% |  |  |  | start no earlier than 2026-10-21 08:00 | Бобренок В | 4h | 4h |
| 953 | 2.47.2 | Подключить кабель датчика пирометра с печи, разобраться, где что |  | 2h | 2026-11-20 09:00 | 2026-11-20 11:00 |  |  |  | 78.34d |  | start no earlier than 2026-11-20 09:00 | Дедов В; Домоводов К | 4h |  |
| 954 | 2.48 | Восстановление платы от рециркуляторной лампы, составление списка комплектующих, подбор аналога платы |  | 3h | 2026-10-07 09:00 A | 2026-10-07 12:00 A |  | 100% |  |  |  | start no earlier than 2026-10-07 09:00 | Дедов В | 3h | 3h |
| 955 | 2.49 | Ремонт шпингалета на воротох, где навески, получить у мастеров, если нет, звони Зорькину | manual | 1h | 2026-10-03 09:00 A | 2026-10-03 10:00 A |  | 100% |  |  |  | start no earlier than 2026-10-03 09:00 | Бобренок В | 1h | 1h |
| 956 | 2.50 | Замена дырявой трубы под парогенератором |  | 1h | 2026-10-08 09:00 A | 2026-10-08 10:00 A |  | 100% |  |  |  | start no earlier than 2026-10-08 09:00 |  |  |  |
| 957 | 2.51 | Плата связи RS485 замена |  | 1h | 2026-10-01 09:00 A | 2026-10-01 10:00 A |  | 100% |  |  |  | start no earlier than 2026-10-01 08:00 | Дедов В | 1h | 1h |
| 958 | 2.52 | Ремонт электрики Бестром (в случае если не будет работать) |  | 4h | 2026-10-07 09:00 A | 2026-10-07 13:00 A |  | 100% |  |  |  | start no earlier than 2026-10-07 09:00 | Дедов В | 4h | 4h |
| 959 | 2.53 | Изготовить пластину для удобного сбора гранулы лопатой, позвонить зорькину | manual | 2h | 2026-10-06 09:00 A | 2026-10-06 11:00 A |  | 100% |  |  |  | start no earlier than 2026-10-06 09:00 | Бобренок В | 2h | 2h |
| 960 | 2.54 | Посмотреть ручки на складе, по возможности замена, если их нет ,сообщить какие закупить. Если ничего нет и ремонт невозможен, фиксируем язычок или убираем его. | manual | 1h | 2026-10-03 09:00 A | 2026-10-03 10:00 A |  | 100% |  |  |  | start no earlier than 2026-10-03 09:00 | Бобренок В | 1h | 1h |
| 961 | 2.55 | Посмотреть пылесос от второго цеха, должен быть в слесарке, если нет, забрать | manual | 1h | 2026-09-29 09:00 A | 2026-09-29 10:00 A |  | 100% |  |  |  | start no earlier than 2026-09-29 09:00 | Бобренок В | 1h | 1h |
| 962 | 2.56 | Включить отопление в лабораторию |  | 1h | 2026-10-02 09:00 A | 2026-10-02 10:00 A |  | 100% |  |  |  | start no earlier than 2026-10-02 09:00 |  |  |  |
| 963 | 2.57 | **Ремонт бактерицидной лампы возле компрессора** |  | 18.25d | 2026-10-02 09:00 A | 2026-10-26 11:00 A |  | 100% |  |  |  |  |  | 3.17h | 3.17h |
| 964 | 2.57.1 | Заявка на плату управления лампы |  | 1h | 2026-10-02 09:00 A | 2026-10-02 10:00 A |  | 100% |  |  |  | start no earlier than 2026-10-02 08:00 | Зорькин В | 1h | 1h |
| 965 | 2.57.2 | контроль |  | 10min | 2026-10-22 09:00 A | 2026-10-22 09:10 A |  | 100% |  |  |  | start no earlier than 2026-10-22 09:00 | Зорькин В | 0.17h | 0.17h |
| 966 | 2.57.3 | Ремонт |  | 2h | 2026-10-26 09:00 A | 2026-10-26 11:00 A | 965 | 100% |  |  |  | start no earlier than 2026-10-26 09:00 | Дедов В | 2h | 2h |
| 967 | 2.58 | **пыление при загрузке при высыпании из мешка в бункер дозатора** |  | 22.53d | 2026-10-01 09:00 A | 2026-10-29 14:15 |  | 11% | 20.16d | 98.06d |  |  |  | 4.75h | 0.5h |
| 968 | 2.58.1 | **изготовить рукав на дозатор для помещения в него мешка из гибкого герметичного матриала** |  | 22.53d | 2026-10-01 09:00 A | 2026-10-29 14:15 |  | 11% | 20.16d | 98.06d |  |  |  | 4.75h | 0.5h |
| 969 | 2.58.1.1 | заявка на силикон/брезент полотно |  | 30min | 2026-10-01 09:00 A | 2026-10-01 09:30 A |  | 100% |  |  |  | start no earlier than 2026-10-01 09:00 | Зорькин В | 0.5h | 0.5h |
| 970 | 2.58.1.2 | доставка контроль |  | 15min | 2026-10-28 09:00 | 2026-10-28 09:15 | 969FS+12d |  |  | 98.06d | 0d | start no earlier than 2026-10-28 09:00 | Зорькин В | 0.25h |  |
| 971 | 2.58.1.3 | изготовление мешка |  | 4h | 2026-10-29 09:15 | 2026-10-29 14:15 | 970FS+1d |  |  | 98.06d |  | start no earlier than 2026-10-22 09:00 | Тимофеев В | 4h |  |
| 972 | 2.59 | **установить аспирационный рукав в зону бункера + фильтр + выход в цех/или общ обменную вент** |  | 17.09d? | 2026-11-04 09:00 | 2026-11-23 09:45 |  |  |  | 77.5d |  |  |  | 8.75h |  |
| 973 | 2.59.1 | заявка на аспирацию как в слесарке |  | 30min | 2026-11-04 09:00 | 2026-11-04 09:30 |  |  |  | 77.5d | 0d | start no earlier than 2026-11-04 09:00 | Зорькин В | 0.5h |  |
| 974 | 2.59.2 | доставка контроль |  | 15min | 2026-11-19 09:30 | 2026-11-19 09:45 | 973FS+15d |  |  | 77.5d | 0d | start no earlier than 2026-09-30 08:00 | Зорькин В | 0.25h |  |
| 975 | 2.59.3 | монтаж аспирационная установка |  | 1d? | 2026-11-20 09:45 | 2026-11-23 09:45 | 974FS+1d |  |  | 77.5d |  | start no earlier than 2026-09-30 08:00 | Тимофеев В | 8h |  |

| ID | WBS | Task | Duration | Start | Finish | Predecessors | Complete | Remaining | Total slack | Free slack | Constraint | Resources | Work | Actual work |
| --- | --- | --- | --- | --- | --- | --- | --- | --- | --- | --- | --- | --- | --- | --- |
| 976 | 2.60 | **пыление при дозации из шнека на продукт** | 0.38d | 2026-10-01 09:00 A | 2026-10-01 12:00 |  | 40% | 0.23d | 120.22d |  |  |  | 5h | 2h |
| 977 | 2.60.1 | установить пластину НЕРЖ на выход шнека для отклонения порошка ближе к барабану | 2h | 2026-10-01 09:00 A | 2026-10-01 11:00 A |  | 100% |  |  |  | start no earlier than 2026-10-01 09:00 | Тимофеев В | 2h | 2h |
| 978 | 2.60.2 | **изготовить /купить патрубок типа 90 колено сантех** | 0.38d | 2026-10-01 09:00 | 2026-10-01 12:00 |  |  |  | 120.22d |  |  |  | 3h |  |
| 979 | 2.60.2.1 | модель + печать на 3д | 2h | 2026-10-01 09:00 | 2026-10-01 11:00 |  |  |  | 120.22d | 0d | start no earlier than 2026-10-01 09:00 | Домоводов К | 2h |  |
| 980 | 2.60.2.2 | монтаж | 1h | 2026-10-01 11:00 | 2026-10-01 12:00 | 979 |  |  | 120.22d |  | start no earlier than 2026-09-30 08:00 | Тимофеев В | 1h |  |
| 981 | 2.61 | **сыпит в одну точку барабана, образуя не нужное кольцо** | 13d | 2026-10-20 09:00 | 2026-11-05 18:00 |  |  |  | 92.59d |  |  |  | 14h |  |
| 982 | 2.61.1 | изготовить отвод на 3д | 4h | 2026-10-20 09:00 | 2026-10-20 13:00 |  |  |  | 104.97d | 1.5d | start no earlier than 2026-10-20 09:00 | Домоводов К | 4h |  |
| 983 | 2.61.2 | монтаж | 1h | 2026-10-22 09:00 | 2026-10-22 10:00 | 982 |  |  | 103.47d |  | start no earlier than 2026-10-22 09:00 | Тимофеев В | 1h |  |
| 984 | 2.61.3 | **перенос дозатора на второй барабан** | 9d | 2026-10-26 09:00 | 2026-11-05 18:00 |  |  |  | 92.59d |  |  |  | 9h |  |
| 985 | 2.61.3.1 | согласовоать с производством технологами старт переноса | 1h | 2026-10-26 09:00 | 2026-10-26 10:00 |  |  |  | 97.47d | 4.88d | start no earlier than 2026-10-26 09:00 | Зорькин В | 1h |  |
| 986 | 2.61.3.2 | изготовить раму - составить чертежи | 2h | 2026-11-04 09:00 | 2026-11-04 11:00 | 985FS+2d |  |  | 92.59d | 0d | start no earlier than 2026-11-04 09:00 | Труфанов А | 2h |  |
| 987 | 2.61.3.3 | сборка рама | 4h | 2026-11-04 11:00 | 2026-11-04 16:00 | 986 |  |  | 92.59d | 0d | start no earlier than 2026-10-02 09:00 | Труфанов А | 4h |  |
| 988 | 2.61.3.4 | перенос шнека дозатора / переключения | 2h | 2026-11-05 16:00 | 2026-11-05 18:00 | 987FS+1d |  |  | 92.59d |  | start no earlier than 2026-09-30 08:00 | Тимофеев В | 2h |  |
| 989 | 2.62 | Продуть всю вентиляшку на жирах с люльки | 2h | 2026-09-29 09:00 A | 2026-09-29 11:00 A |  | 100% |  |  |  | start no earlier than 2026-09-29 08:00 | Бундин В | 2h | 2h |
| 990 | 2.63 | Изготовить носик на подаче сухого гидролизата под уклоном ближе к барабану | 3h | 2026-09-29 09:00 A | 2026-09-29 12:00 A |  | 100% |  |  |  | start no earlier than 2026-09-29 09:00 | Тимофеев В | 3h | 3h |
| 991 | 2.64 | Изготовление рамы на ножках для переноса всего барабана с сухим гидролизатом к нижнему барабану | 4h | 2026-09-29 09:00 | 2026-09-29 13:00 |  |  |  | 122.09d |  | start no earlier than 2026-09-29 09:00 | Тимофеев В | 4h |  |
| 992 | 2.65 | изготовить ножки на бункер нории БЕСТРОМ | 3h | 2026-09-26 09:00 A | 2026-09-26 12:00 A |  | 100% |  |  |  | start no earlier than 2026-09-26 09:00 | Бобренок В | 3h | 3h |
| 993 | 2.66 | **установить 4 трубки с быстросъемами в барабаны жиров** | 3.5d | 2026-09-25 09:00 A | 2026-09-28 13:00 |  | 33% | 2.33d | 123.09d |  |  |  | 6h | 2h |
| 994 | 2.66.1 | подготовить сменную трубку для подачи жира, насверлить резьбу, отверстия | 2h | 2026-09-25 09:00 A | 2026-09-25 11:00 A |  | 100% |  |  |  | start no earlier than 2026-09-25 09:00 | Тимофеев В | 2h | 2h |
| 995 | 2.66.2 | подготовить трубку 3 и 4 | 4h | 2026-09-28 09:00 | 2026-09-28 13:00 |  |  |  | 123.09d |  | start no earlier than 2026-09-28 09:00 | Тимофеев В | 4h |  |
| 996 | 2.67 | кран на жирах нет стопора - вращение на 360 устранить, найти этот кран. | 30min | 2026-09-24 09:00 A | 2026-09-24 09:30 A |  | 100% |  |  |  | start no earlier than 2026-09-24 09:00 | Тимофеев В | 0.5h | 0.5h |
| 997 | 2.68 | Проверить весы на смесителе прыгают в диапазаоне 40кг | 1h | 2026-09-23 09:00 | 2026-09-23 10:00 |  |  |  | 128.47d |  | start no earlier than 2026-09-23 09:00 | Дедов В | 1h |  |
| 998 | 2.69 | **лаборатория** | 0.12d | 2026-09-22 09:00 A | 2026-09-22 10:00 A |  | 100% |  |  |  |  |  | 1.5h | 1.5h |
| 999 | 2.69.1 | Перегорел тэн на дигистре | 30min | 2026-09-22 09:00 A | 2026-09-22 09:30 A |  | 100% |  |  |  | start no earlier than 2026-09-22 09:00 | Тимофеев В | 0.5h | 0.5h |
| 1000 | 2.69.2 | Поставить колбу в лаборотории на бульбуляторе, колба в лаборатории | 1h | 2026-09-22 09:00 A | 2026-09-22 10:00 A |  | 100% |  |  |  | start no earlier than 2026-09-22 09:00 | Тимофеев В | 1h | 1h |
| 1001 | 2.70 | Сделать ручки и щеколду для мусорки на улице | 1h | 2026-09-25 09:00 A | 2026-09-25 10:00 A |  | 100% |  |  |  | start no earlier than 2026-09-25 09:00 | Бундин В | 1h | 1h |
| 1002 | 2.71 | установить трубку жир ф12 - нарезать резьбу под фитинг / сверлить под "струйки" | 2h | 2026-09-24 09:00 A | 2026-09-24 11:00 A |  | 100% |  |  |  | start no earlier than 2026-09-24 09:00 | Тимофеев В | 2h | 2h |

| ID | WBS | Task | Type | Duration | Start | Finish | Predecessors | Complete | Constraint | Resources | Work | Actual work |
| --- | --- | --- | --- | --- | --- | --- | --- | --- | --- | --- | --- | --- |
| 1003 | 2.72 | **система сброса муки с прекондиционера в мешки** |  | 2d? | 2026-09-18 09:00 A | 2026-09-19 18:00 A |  | 100% |  |  | 11h | 11h |
| 1004 | 2.72.1 | Продумать варианты предложить, согласовать с Домоводовым и смонтировать, чтоб можно было вешать мешок на экструдере, под рассекатель потока муки выходящий из прекондиционера, который сделал Макаревич |  | 3h | 2026-09-18 09:00 A | 2026-09-18 12:00 A |  | 100% | start no earlier than 2026-09-18 09:00 | Бобренок В | 3h | 3h |
| 1005 | 2.72.2 | изготовление тележки с креплением для 2х мешков. Покрасить |  | 1d? | 2026-09-19 09:00 A | 2026-09-19 18:00 A |  | 100% | start no earlier than 2026-09-19 09:00 | Бобренок В | 8h | 8h |
| 1006 | 2.73 | Промывка дистилятора в лаборатории |  | 3h | 2026-09-18 09:00 A | 2026-09-18 12:00 A |  | 100% | start no earlier than 2026-09-18 09:00 | Бобренок В | 3h | 3h |
| 1007 | 2.74 | Изготовить стопор для пленки на бестром (Обратиться к пацанам на фасовке или к мастеру, должны подсказать) |  | 2h | 2026-09-16 09:00 A | 2026-09-16 11:00 A |  | 100% | start no earlier than 2026-09-16 08:00 | Бундин В | 2h | 2h |
| 1008 | 2.75 | ремонт лампа бактерициодная (это не инсекюьтер) на ГП (не горит табло). Ревизия. |  | 2h | 2026-09-13 09:00 A | 2026-09-13 11:00 A |  | 100% | start no earlier than 2026-09-13 09:00 | Дедов В | 2h | 2h |
| 1009 | 2.76 | ремонт ворот ГП слетели тросы |  | 2h | 2026-09-11 09:00 A | 2026-09-11 11:00 A |  | 100% | start no earlier than 2026-09-11 08:00 | Бобренок В | 2h | 2h |
| 1010 | 2.77 | ремонт светильник корридор у отк |  | 1h | 2026-09-14 09:00 A | 2026-09-14 10:00 A |  | 100% | start no earlier than 2026-09-14 09:00 | Макаревич А | 1h | 1h |
| 1011 | 2.78 | замена квадрат ручка дверь экструдер |  | 1h | 2026-09-14 09:00 A | 2026-09-14 10:00 A |  | 100% | start no earlier than 2026-09-14 09:00 | Макаревич А | 1h | 1h |
| 1012 | 2.79 | **ревизия сливной шланг моечная машинка** |  | 24.25d | 2026-09-14 09:00 A | 2026-10-09 11:00 A |  | 100% |  |  | 3.5h | 3.5h |
| 1013 | 2.79.1 | ревизия / удлинить |  | 1h | 2026-09-14 09:00 A | 2026-09-14 10:00 A |  | 100% | start no earlier than 2026-09-14 09:00 | Тимофеев В | 1h | 1h |
| 1014 | 2.79.2 | заявка |  | 15min | 2026-09-18 09:00 A | 2026-09-18 09:15 A |  | 100% | start no earlier than 2026-09-18 09:00 | Зорькин В | 0.25h | 0.25h |
| 1015 | 2.79.3 | контроль доставки |  | 15min | 2026-10-07 09:00 A | 2026-10-07 09:15 A | 1014FS+5d | 100% | start no earlier than 2026-10-07 09:00 | Зорькин В | 0.25h | 0.25h |
| 1016 | 2.79.4 | монтаж |  | 2h | 2026-10-09 09:00 A | 2026-10-09 11:00 A | 1015FS+1d | 100% | start no earlier than 2026-10-09 09:00 | Тимофеев В | 2h | 2h |
| 1017 | 2.80 | Проверка системы под давлением, при необходимости заменить шланги на пневматические?? |  | 1h | 2026-09-21 09:00 A | 2026-09-21 10:00 A |  | 100% | start no earlier than 2026-09-22 09:00 | Тимофеев В | 1h | 1h |
| 1018 | 2.81 | Установить трубку на жирах, которую сделал викторович |  | 30min | 2026-09-09 09:00 A | 2026-09-09 09:30 A |  | 100% | start no earlier than 2026-09-09 08:00 | Тимофеев В | 0.5h | 0.5h |
| 1019 | 2.82 | **реверс теплоносителя в приточном калорифере** |  | 28.25d | 2026-08-24 09:00 A | 2026-09-24 11:00 A |  | 100% |  |  | 2.5h | 2.5h |
| 1020 | 2.82.1 | заявка |  | 15min | 2026-08-24 09:00 A | 2026-08-24 09:15 A |  | 100% | start no earlier than 2026-08-24 09:00 | Зорькин В | 0.25h | 0.25h |
| 1021 | 2.82.2 | контроль доставки |  | 15min | 2026-09-14 09:05 A | 2026-09-14 09:20 A | 1233FS+5d | 100% | start no earlier than 2026-09-09 09:00 | Зорькин В | 0.25h | 0.25h |
| 1022 | 2.82.3 | монтаж |  | 2h | 2026-09-24 09:00 A | 2026-09-24 11:00 A | 1234FS+1d | 100% | start no earlier than 2026-09-24 09:00 | Дедов В | 2h | 2h |
| 1023 | 2.83 | востановить потерю токов в печи / ревизия . Замена тенов |  | 4h | 2026-09-09 09:00 A | 2026-09-09 13:00 A |  | 100% | start no earlier than 2026-09-09 09:00 | Бобренок В | 4h | 4h |
| 1024 | 2.84 | Смазка подшипников привода охладителя | manual | 1h | 2026-09-09 09:00 A | 2026-09-09 10:00 A |  | 100% |  | Бобренок В | 1h | 1h |
| 1025 | 2.85 | Обрезать пенку пвх на двери в охладителе ,сделать ее ровной |  | 1h | 2026-09-07 09:00 A | 2026-09-07 10:00 A |  | 100% | start no earlier than 2026-09-05 09:00 | Макаревич А | 1h | 1h |
| 1026 | 2.86 | Переборка парогенератора, поиск неисправности (подключили перемычку между реле времени) |  | 4h | 2026-09-02 09:00 A | 2026-09-02 13:00 A |  | 100% | start no earlier than 2026-09-02 09:00 | Бобренок В | 4h | 4h |

| ID | WBS | Task | Type | Duration | Start | Finish | Predecessors | Complete | Constraint | Resources | Work | Actual work |
| --- | --- | --- | --- | --- | --- | --- | --- | --- | --- | --- | --- | --- |
| 1027 | 2.87 | **Подготовить электрическую часть для подключения второго насоса без частотника (продолжаем эту задачу)** |  | 13.25d | 2026-09-03 09:00 A | 2026-09-17 11:00 A |  | 100% |  |  | 4.17h | 4.17h |
| 1028 | 2.87.1 | установить на линию доп насос (резервный) |  | 1h | 2026-09-10 09:00 A | 2026-09-10 10:00 A |  | 100% | start no earlier than 2026-09-10 09:00 | Тимофеев В | 1h | 1h |
| 1029 | 2.87.2 | монтаж |  | 1h | 2026-09-09 09:00 A | 2026-09-09 10:00 A |  | 100% | start no earlier than 2026-09-09 09:00 | Тимофеев В | 1h | 1h |
| 1030 | 2.87.3 | Переместить розетки со стола, смонтировать площадку к раме и закрепить на эту раму |  | 2h | 2026-09-17 09:00 A | 2026-09-17 11:00 A |  | 100% | start no earlier than 2026-09-17 09:00 | Тимофеев В | 2h | 2h |
| 1031 | 2.87.4 | Подумать место установки автомата |  | 10min | 2026-09-03 09:00 A | 2026-09-03 09:10 A |  | 100% | start no earlier than 2026-09-03 09:00 | Тимофеев В | 0.17h | 0.17h |
| 1032 | 2.88 | Ремонт парогенератора, замена реле давления + отвалился контакт + замена мембраны |  | 1h | 2026-09-02 09:00 A | 2026-09-02 10:00 A |  | 100% | start no earlier than 2026-09-02 08:00 | Труфанов А | 1h | 1h |
| 1033 | 2.89 | Замена редуктора на печи |  | 2h | 2026-09-01 09:00 A | 2026-09-01 11:00 A |  | 100% | start no earlier than 2026-09-01 09:00 | Бундин В | 2h | 2h |
| 1034 | 2.90 | проверка котлов на приточку (замена клапана и тена на большую мощность) | manual | 2h | 2026-09-07 09:00 A | 2026-09-07 11:00 A |  | 100% | start no earlier than 2026-09-07 09:00 | Дедов В | 2h | 2h |
| 1035 | 2.91 | проверка всех котлов на отопление по цеху | manual | 4h | 2026-08-30 09:00 A | 2026-08-30 13:00 A |  | 100% | start no earlier than 2026-08-30 09:00 | Дедов В | 4h | 4h |
| 1036 | 2.92 | закрепить коробку двери снизу (возле ШУ приточка 2 этаж) |  | 2h | 2026-08-28 09:00 A | 2026-08-28 11:00 A |  | 100% | start no earlier than 2026-08-28 09:00 | Макаревич А | 2h | 2h |
| 1037 | 2.93 | **заменить фильтры на воду в цехе (проверить мембрану на гидроаккумуляторе)** |  | 1d? | 2026-08-28 09:00 A | 2026-08-28 18:00 A |  | 100% |  | Бобренок В | 16h | 16h |
| 1038 | 2.93.1 | заказать фильтры |  | 1d? | 2026-08-28 09:00 A | 2026-08-28 18:00 A |  | 100% | start no earlier than 2026-08-28 09:00 | Шуранов Ю | 8h | 8h |
| 1039 | 2.94 | монтаж и подключение розетки для кондиционера в кабинет ОТК |  | 2h | 2026-08-26 08:00 A | 2026-08-26 11:00 A |  | 100% | start no earlier than 2026-08-26 08:00 | Бобренок В | 2h | 2h |
| 1040 | 2.95 | сливной шланг от кондиционеров наш кабинет и Шелепова спрятать в кабель канал 30х25 (он на складе) |  | 2h | 2026-08-26 08:00 A | 2026-08-26 11:00 A |  | 100% | start no earlier than 2026-08-26 08:00 | Бобренок В | 2h | 2h |
| 1041 | 2.96 | сливной шланг от кондиционеров кабинет Сапелина спрятать в кабель канал 30х25 (он на складе) с 10 до 11ч |  | 1h | 2026-08-31 09:00 A | 2026-08-31 10:00 A |  | 100% | start no earlier than 2026-08-31 09:00 | Тимофеев В | 1h | 1h |
| 1042 | 2.97 | замерить токи на оборудование (таблица в слесарке) |  | 3h | 2026-08-27 09:00 A | 2026-08-27 12:00 A |  | 100% | start no earlier than 2026-08-27 09:00 | Бобренок В | 3h | 3h |
| 1043 | 2.98 | **дренаж кондиционеров жир и упаковка установить отдельный насос от жиров** |  | 28.06d | 2026-08-24 09:00 A | 2026-09-24 09:30 A |  | 100% |  |  | 122.5h | 122.5h |
| 1044 | 2.98.1 | заявка насос |  | 30min | 2026-08-24 09:00 A | 2026-08-24 09:30 A |  | 100% | start no earlier than 2026-08-24 09:00 | Шуранов Ю | 0.5h | 0.5h |
| 1045 | 2.98.2 | контроль доставка |  | 15d | 2026-09-02 09:30 A | 2026-09-24 09:30 A | 1044FS+7d | 100% | start no earlier than 2026-08-20 09:00 | Зорькин В | 120h | 120h |
| 1046 | 2.98.3 | Разорвать контур от насоса и сделать слив в раковину | manual | 1h | 2026-09-01 09:00 A | 2026-09-01 10:00 A | 1045FS+1d | 100% | start no earlier than 2026-09-01 09:00 | Некрасов А; Тимофеев В | 2h | 2h |
| 1047 | 2.99 | **бетонирование крыльцо вход в 2ц** |  | 0.02d | 2026-08-31 09:00 A | 2026-08-31 09:10 A |  | 100% |  |  | 0.17h | 0.17h |
| 1048 | 2.99.1 | заявка Олегу |  | 10min | 2026-08-31 09:00 A | 2026-08-31 09:10 A |  | 100% | start no earlier than 2026-08-31 09:00 | Шуранов Ю | 0.17h | 0.17h |
| 1049 | 2.100 | течь кондиционер жиры - контроль работы слива |  | 30min | 2026-08-31 09:00 A | 2026-08-31 09:30 A |  | 100% | start no earlier than 2026-08-31 09:00 | Тимофеев В | 0.5h | 0.5h |
| 1050 | 2.101 | контроль замена фитинги или трубки жир, устранить возможность произвольного срыва |  | 30min | 2026-09-01 09:00 A | 2026-09-01 09:30 A |  | 100% | start no earlier than 2026-09-03 09:00 | Некрасов А; Шуранов Ю | 1h | 1h |

| ID | WBS | Task | Type | Duration | Start | Finish | Predecessors | Complete | Remaining | Total slack | Free slack | Constraint | Resources | Work | Actual work |
| --- | --- | --- | --- | --- | --- | --- | --- | --- | --- | --- | --- | --- | --- | --- | --- |
| 1051 | 2.102 | **разгрузка синего накопителя, в реверс шнек + окно** |  | 5.12d | 2026-08-20 09:00 A | 2026-08-27 10:00 A |  | 100% |  |  |  |  |  | 4h | 4h |
| 1052 | 2.102.1 | выполнить люк в шнеке: вырезать окно, крепеж на шарнир + притвор с уплотнением + застежка | milestone | 0h | 2026-08-20 09:00 A | 2026-08-20 09:00 A |  | 100% |  |  |  | start no earlier than 2026-08-20 09:00 | Некрасов А; Тимофеев В |  |  |
| 1053 | 2.102.2 | быстросъемное крепление |  | 1h | 2026-08-27 09:00 A | 2026-08-27 10:00 A |  | 100% |  |  |  | start no earlier than 2026-08-27 09:00 | Тимофеев В | 1h | 1h |
| 1054 | 2.102.3 | изготовление фланца + труба для крепления гофротрубы ф250 |  | 3h | 2026-08-24 09:00 A | 2026-08-24 12:00 A |  | 100% |  |  |  | start no earlier than 2026-08-24 09:00 | Некрасов А | 3h | 3h |
| 1055 | 2.103 | перенос розетка на стену инсекютер корридор у ОТК |  | 1h | 2026-08-15 09:00 A | 2026-08-17 10:00 A |  | 100% |  |  |  | start no earlier than 2026-08-15 09:00 | Бундин В | 1h | 1h |
| 1056 | 2.104 | перенос инсекютер ниже на фасовке, для возможности доступа операторами |  | 1h | 2026-09-24 09:00 A | 2026-09-24 10:00 A |  | 100% |  |  |  | start no earlier than 2026-09-24 09:00 | Бундин В | 1h | 1h |
| 1057 | 2.105 | изготовить лопатку для датчика сырья, что бы было 2-4 лопасти и ниже на 5-10см |  | 2h | 2026-08-13 09:00 A | 2026-08-13 11:00 A |  | 100% |  |  |  | start no earlier than 2026-08-13 09:00 | Макаревич А | 2h | 2h |
| 1058 | 2.106 | прикрепить план увакуации на место (зона отстоя навесок, стенка мойки) |  | 30min | 2026-08-12 09:00 A | 2026-08-12 09:30 A |  | 100% |  |  |  | start no earlier than 2026-08-12 09:00 | Макаревич А | 0.5h | 0.5h |
| 1059 | 2.107 | ремонт ручка в экструдер 2ц |  | 1h | 2026-08-14 09:00 A | 2026-08-14 10:00 A |  | 100% |  |  |  | start no earlier than 2026-08-14 09:00 | Труфанов А | 1h | 1h |
| 1060 | 2.108 | **установить сифон ф110 в линию слива жиров** |  | 60.31d | 2026-08-12 09:00 A | 2026-10-22 11:30 |  | 29% | 43.08d | 103.28d |  |  |  | 3.5h | 1h |
| 1061 | 2.108.1 | заявка на сифон, планирование монтаж |  | 1h | 2026-08-12 09:00 A | 2026-08-12 10:00 A |  | 100% |  |  |  | start no earlier than 2026-08-12 09:00 | Зорькин В | 1h | 1h |
| 1062 | 2.108.2 | возможно ли убрать сифоны ф50, достаточно ли заслонки без гидрозатвора? Как сделать гидрозатвор ф100 |  | 15min | 2026-10-21 09:00 | 2026-10-21 09:15 |  |  |  | 103.28d | 0d | start no earlier than 2026-10-21 09:00 | Труфанов А | 0.25h |  |
| 1063 | 2.108.3 | решение | milestone | 0d | 2026-10-22 09:15 | 2026-10-22 09:15 | 1062FS+1d |  |  | 103.28d | 0d | start no earlier than 2026-09-08 08:00 | Зорькин В |  |  |
| 1064 | 2.108.4 | контроль доставка |  | 15min | 2026-10-22 09:15 | 2026-10-22 09:30 | 1061FS+7d, 1063 |  |  | 103.28d | 0d | start no earlier than 2026-08-31 09:00 | Зорькин В | 0.25h |  |
| 1065 | 2.108.5 | монтаж |  | 2h | 2026-10-22 09:30 | 2026-10-22 11:30 | 1064 |  |  | 103.28d |  | start no earlier than 2026-09-07 09:00 | Бобренок В | 2h |  |
| 1066 | 2.109 | **установить инсекютер дополнительный на экструдер** |  | 22.25d | 2026-08-21 09:00 A | 2026-09-17 11:00 A |  | 100% |  |  |  |  |  | 2.5h | 2.5h |
| 1067 | 2.109.1 | заявка инстекютер |  | 15min | 2026-08-21 09:00 A | 2026-08-21 09:15 A |  | 100% |  |  |  | start no earlier than 2026-08-21 09:00 | Зорькин В | 0.25h | 0.25h |
| 1068 | 2.109.2 | контроль доставки |  | 15min | 2026-09-09 09:00 A | 2026-09-09 09:15 A | 1067FS+7d | 100% |  |  |  | start no earlier than 2026-09-09 09:00 | Зорькин В | 0.25h | 0.25h |
| 1069 | 2.109.3 | монтаж розетка / кабель |  | 2h | 2026-09-17 09:00 A | 2026-09-17 11:00 A | 1068FS+1d | 100% |  |  |  | start no earlier than 2026-09-17 09:00 | Труфанов А | 2h | 2h |
| 1070 | 2.110 | маркировка канистры гидролизата - передать на время гровер нач цеха 2 |  | 20min | 2026-08-11 09:00 A | 2026-08-11 09:20 A |  | 100% |  |  |  | start no earlier than 2026-08-11 09:00 | Бобренок В | 0.33h | 0.33h |
| 1071 | 2.111 | **ограждение мусорного контейнера у 2ц** |  | 15d | 2026-08-31 09:00 A | 2026-09-15 18:00 A |  | 100% |  |  |  |  |  | 34.75h | 34.75h |
| 1072 | 2.111.1 | схема размещения |  | 1h | 2026-08-31 09:00 A | 2026-08-31 10:00 A |  | 100% |  |  |  | start no earlier than 2026-08-31 09:00 | Зорькин В | 1h | 1h |
| 1073 | 2.111.2 | контроль остатков материала - каркас + обшивка стен |  | 30min | 2026-08-31 10:00 A | 2026-08-31 10:30 A | 1072 | 100% |  |  |  | start no earlier than 2026-08-14 09:00 | Зорькин В | 0.5h | 0.5h |
| 1074 | 2.111.3 | заявка материал / лист |  | 1h | 2026-09-01 10:30 A | 2026-09-01 11:30 A | 1073FS+1d | 100% |  |  |  | start no earlier than 2026-08-10 08:00 | Зорькин В | 1h | 1h |
| 1075 | 2.111.4 | контроль поставка |  | 15min | 2026-09-14 11:30 A | 2026-09-14 11:45 A | 1074FS+10d | 100% |  |  |  | start no earlier than 2026-08-10 08:00 | Зорькин В | 0.25h | 0.25h |
| 1076 | 2.111.5 | монтаж каркас + обшивка |  | 2d | 2026-09-14 09:00 A | 2026-09-15 18:00 A | 1075FS+1d | 100% |  |  |  | start no earlier than 2026-08-10 08:00 | Некрасов А; Тимофеев В | 32h | 32h |

| ID | WBS | Task | Type | Duration | Start | Finish | Predecessors | Complete | Remaining | Total slack | Free slack | Constraint | Resources | Work | Actual work |
| --- | --- | --- | --- | --- | --- | --- | --- | --- | --- | --- | --- | --- | --- | --- | --- |
| 1077 | 2.112 | **установить кондиционер контролерам ОТК в 2ц** |  | 7.38d | 2026-08-19 09:00 A | 2026-08-28 12:00 A |  | 100% |  |  |  |  |  | 7.5h | 7.5h |
| 1078 | 2.112.1 | оапата счет контроль |  | 15min | 2026-08-19 09:00 A | 2026-08-19 09:15 A |  | 100% |  |  |  | start no earlier than 2026-08-19 09:00 | Домоводов К | 0.25h | 0.25h |
| 1079 | 2.112.2 | длоставка контроль |  | 15min | 2026-08-24 09:15 A | 2026-08-24 09:30 A | 1078FS+4d | 100% |  |  |  | start no earlier than 2026-08-17 09:00 | Домоводов К | 0.25h | 0.25h |
| 1080 | 2.112.3 | монтаж |  | 4h | 2026-08-24 09:30 A | 2026-08-24 14:30 A | 1079 | 100% |  |  |  | start no earlier than 2026-08-10 08:00 | оплот | 4h | 4h |
| 1081 | 2.112.4 | монтаж крозетка |  | 3h | 2026-08-28 09:00 A | 2026-08-28 12:00 A | 1080FS-1d | 100% |  |  |  | start no earlier than 2026-08-28 09:00 | Бобренок В | 3h | 3h |
| 1082 | 2.113 | **усиление подогрев приточной вентиляции** |  | 82.53d? | 2026-08-17 09:00 A | 2026-11-20 14:15 |  | 33% | 55.4d? | 78.06d |  |  |  | 18.25h | 6h |
| 1083 | 2.113.1 | планирование мощности для приточная вент до 200 квт + тепл завесы |  | 4h | 2026-08-17 09:00 A | 2026-08-17 13:00 A |  | 100% |  |  |  | start no earlier than 2026-08-17 09:00 | Домоводов К | 4h | 4h |
| 1084 | 2.113.2 | Подключить колорифер в противоток, гибкую подводку получить на складе |  | 2h | 2026-09-24 09:00 A | 2026-09-24 11:00 A |  | 100% |  |  |  | start no earlier than 2026-09-24 08:00 | Дедов В | 2h | 2h |
| 1085 | 2.113.3 | заявка доп котлы + автоматика |  | 4h | 2026-11-09 09:00 | 2026-11-09 13:00 | 1083FS+1d |  |  | 78.06d | 0d | start no earlier than 2026-11-09 09:00 | Домоводов К | 4h |  |
| 1086 | 2.113.4 | контроль поствки |  | 15min | 2026-11-19 14:00 | 2026-11-19 14:15 | 1085FS+10d |  |  | 78.06d | 0d | start no earlier than 2026-08-10 08:00 | Зорькин В | 0.25h |  |
| 1087 | 2.113.5 | монтаж |  | 1d? | 2026-11-19 14:15 | 2026-11-20 14:15 | 1086 |  |  | 78.06d |  | start no earlier than 2026-10-23 09:00 | Некрасов А | 8h |  |
| 1088 | 2.114 | собрать 4 стула и тумбочку. Находятся у мастера |  | 4h | 2026-08-10 08:00 A | 2026-08-10 13:00 A |  | 100% |  |  |  | start no earlier than 2026-08-10 08:00 | Бобренок В | 4h | 4h |
| 1089 | 2.115 | кабель к вентилятору печи примыкание гофры к трубе выполнить без пустот фото Фадеевой |  | 1h | 2026-08-11 09:00 A | 2026-08-11 10:00 A |  | 100% |  |  |  | start no earlier than 2026-08-11 09:00 | Бобренок В | 1h | 1h |
| 1090 | 2.116 | закрыить все эл щщитки на ключь |  | 1h | 2026-08-10 08:00 A | 2026-08-10 10:00 A |  | 100% |  |  |  | start no earlier than 2026-08-10 08:00 | Бобренок В | 1h | 1h |
| 1091 | 2.117 | установить отбойник склад навесок, стена мойки |  | 1h | 2026-08-10 08:00 A | 2026-08-10 10:00 A |  | 100% |  |  |  | start no earlier than 2026-08-10 08:00 | Бобренок В | 1h | 1h |
| 1092 | 2.118 | **обеспечить не менее +15 зимой в зоне хранения навесок** |  | 74d? | 2026-08-04 09:00 A | 2026-11-02 18:00 |  | 31% | 51.03d? | 95.59d |  |  |  | 42.25h | 11.25h |
| 1093 | 2.118.1 | **утепление стены** |  | 53.75d | 2026-09-01 09:00 A | 2026-11-02 16:00 |  | 17% | 44.48d | 95.84d |  |  |  | 13.25h | 1.25h |
| 1094 | 2.118.1.1 | расчет количство утеплителя + профлист/саморезы. Заявка |  | 1h | 2026-09-09 09:00 A | 2026-09-09 10:00 A |  | 100% |  |  |  | start no earlier than 2026-09-09 09:00 | Зорькин В | 1h | 1h |
| 1095 | 2.118.1.2 | получить цену / решение о тепловой завесе | milestone | 0d | 2026-09-01 09:00 A | 2026-09-01 09:00 A |  | 100% |  |  |  | start no earlier than 2026-09-01 09:00 | Домоводов К |  |  |
| 1096 | 2.118.1.3 | контроль даты доставки |  | 15min | 2026-09-14 10:00 A | 2026-09-14 10:15 A | 1094FS+5d | 100% |  |  |  | start no earlier than 2026-08-27 08:00 | Зорькин В | 0.25h | 0.25h |
| 1097 | 2.118.1.4 | монтаж пеноплекса на стену |  | 6h | 2026-11-02 09:00 | 2026-11-02 16:00 | 1096FS+1d |  |  | 95.84d |  | start no earlier than 2026-11-02 09:00 | Бобренок В; Труфанов А | 12h |  |
| 1098 | 2.118.1.5 | решение об утеплении стены сравнить с затратами на тепловые завесы | milestone | 0h | 2026-09-01 09:00 | 2026-09-01 09:00 | 1095, 1114 |  |  | 149.59d |  | start no earlier than 2026-08-24 09:00 | Домоводов К |  |  |
| 1099 | 2.118.2 | **кап ремонт стен зона хранения навесок. Промерзают** |  | 5.12d | 2026-08-04 09:00 A | 2026-08-11 10:00 A |  | 100% |  |  |  |  |  | 5h | 5h |
| 1100 | 2.118.2.1 | установить листы на место склад навесо стена с эл щитком |  | 1h | 2026-08-11 09:00 A | 2026-08-11 10:00 A |  | 100% |  |  |  | start no earlier than 2026-08-11 09:00 | Тимофеев В | 1h | 1h |
| 1101 | 2.118.2.2 | вскрытие стен дя составления плана работ. Демонтировать несколько листов в зоне промерзания (гдещиток) |  | 4h | 2026-08-04 09:00 A | 2026-08-04 13:00 A |  | 100% |  |  |  | start no earlier than 2026-08-04 09:00 | Тимофеев В | 4h | 4h |

| ID | WBS | Task | Type | Duration | Start | Finish | Predecessors | Complete | Remaining | Total slack | Free slack | Constraint | Resources | Work | Actual work |
| --- | --- | --- | --- | --- | --- | --- | --- | --- | --- | --- | --- | --- | --- | --- | --- |
| 1102 | 2.118.3 | **тепловые завесы в 2ц зона подачи навесок** |  | 65d? | 2026-08-17 09:00 A | 2026-11-02 18:00 |  | 20% | 52d? | 95.59d |  |  |  | 23.75h | 4.75h |
| 1103 | 2.118.3.1 | **монтаж теплокалориферов** |  | 28d? | 2026-09-28 09:00 A | 2026-11-02 18:00 |  | 26% | 20.84d? | 95.59d |  |  |  | 10.75h | 2.75h |
| 1104 | 2.118.3.1.1 | заявка |  | 2h | 2026-09-28 09:00 A | 2026-09-28 11:00 A | 1098FS+1d | 100% |  |  |  | start no earlier than 2026-09-28 09:00 | Домоводов К | 2h | 2h |
| 1105 | 2.118.3.1.2 | контроль оплаты\ |  | 15min | 2026-09-30 11:00 A | 2026-09-30 11:15 A | 1104FS+2d | 100% |  |  |  | start no earlier than 2026-09-07 09:00 | Зорькин В | 0.25h | 0.25h |
| 1106 | 2.118.3.1.3 | контроль доставки |  | 15min | 2026-10-19 11:15 A | 2026-10-19 11:30 A | 1105FS+15d | 100% |  |  |  | start no earlier than 2026-08-10 08:00 | Зорькин В | 0.25h | 0.25h |
| 1107 | 2.118.3.1.4 | приемка |  | 15min | 2026-10-20 11:30 A | 2026-10-20 11:45 A | 1106FS+1d | 100% |  |  |  | start no earlier than 2026-08-10 08:00 | Зорькин В | 0.25h | 0.25h |
| 1108 | 2.118.3.1.5 | монтаж калориферов |  | 1d? | 2026-11-02 09:00 | 2026-11-02 18:00 | 1107FS+1d |  |  | 95.59d |  | start no earlier than 2026-11-02 09:00 | Некрасов А | 8h |  |
| 1109 | 2.118.3.2 | **монтаж кабель** |  | 55d? | 2026-08-17 09:00 A | 2026-10-19 18:00 |  | 15% | 46.54d? | 105.59d |  |  |  | 13h | 2h |
| 1110 | 2.118.3.2.1 | планирование мощности |  | 2h | 2026-08-17 09:00 A | 2026-08-17 11:00 A |  | 100% |  |  |  | start no earlier than 2026-08-17 09:00 | Домоводов К | 2h | 2h |
| 1111 | 2.118.3.2.2 | заявка кабель /щиток |  | 2h | 2026-10-05 09:00 | 2026-10-05 11:00 | 1110 |  |  | 110.22d | 0d | start no earlier than 2026-10-05 09:00 | Зорькин В | 2h |  |
| 1112 | 2.118.3.2.3 | контроль доставка |  | 1h | 2026-10-12 11:00 | 2026-10-12 12:00 | 1111FS+5d |  |  | 110.22d | 4.62d | start no earlier than 2026-08-10 08:00 | Зорькин В | 1h |  |
| 1113 | 2.118.3.2.4 | монтаж |  | 1d? | 2026-10-19 09:00 | 2026-10-19 18:00 | 1112FS+1d |  |  | 105.59d |  | start no earlier than 2026-10-19 09:00 | Некрасов А | 8h |  |
| 1114 | 2.118.4 | контроль достаточности если не крепить верхние саморезы |  | 15min | 2026-08-13 09:00 A | 2026-08-13 09:15 A |  | 100% |  |  |  | start no earlier than 2026-08-13 09:00 | Домоводов К | 0.25h | 0.25h |
| 1115 | 2.119 | **дверь в мойку сделать герметичный притвор** |  | 1.25d | 2026-08-14 09:00 A | 2026-08-17 11:00 A |  | 100% |  |  |  |  |  | 2.33h | 2.33h |
| 1116 | 2.119.1 | подбор уплотнителя / заказать |  | 20min | 2026-08-14 09:00 A | 2026-08-14 09:20 A |  | 100% |  |  |  | start no earlier than 2026-08-14 09:00 | Домоводов К | 0.33h | 0.33h |
| 1117 | 2.119.2 | монтаж резинки на клей |  | 2h | 2026-08-16 09:00 A | 2026-08-17 11:00 A |  | 100% |  |  |  | start no earlier than 2026-08-16 09:00 | Бобренок В | 2h | 2h |
| 1118 | 2.120 | **пролистыватель с апликтором заказ** |  | 49d? | 2026-08-10 09:00 A | 2026-10-05 18:00 A |  | 100% |  |  |  |  |  | 9.42h | 9.42h |
| 1119 | 2.120.1 | получить договор + счет |  | 1h | 2026-08-10 09:00 A | 2026-08-10 10:00 A |  | 100% |  |  |  | start no earlier than 2026-08-10 08:00 | Зорькин В | 1h | 1h |
| 1120 | 2.120.2 | **согласвоание договор** |  | 3.02d | 2026-08-12 09:00 A | 2026-08-17 09:10 A |  | 100% |  |  |  |  |  | 0.17h | 0.17h |
| 1121 | 2.120.2.1 | подать договор |  | 5min | 2026-08-12 09:00 A | 2026-08-12 09:05 A |  | 100% |  |  |  | start no earlier than 2026-08-12 09:00 | Домоводов К | 0.08h | 0.08h |
| 1122 | 2.120.2.2 | контроль |  | 5min | 2026-08-17 09:05 A | 2026-08-17 09:10 A | 1121FS+5d | 100% |  |  |  | start no earlier than 2026-08-12 09:00 | Домоводов К | 0.08h | 0.08h |
| 1123 | 2.120.3 | оплата подать счет | milestone | 0d | 2026-08-12 09:00 A | 2026-08-12 09:00 A |  | 100% |  |  |  | start no earlier than 2026-08-12 09:00 | Домоводов К |  |  |
| 1124 | 2.120.4 | доставка конетроль |  | 15min | 2026-09-18 09:00 A | 2026-09-18 09:15 A | 1123FS+30d | 100% |  |  |  | start no earlier than 2026-08-10 08:00 | Зорькин В | 0.25h | 0.25h |
| 1125 | 2.120.5 | монтаж |  | 1d? | 2026-10-05 09:00 A | 2026-10-05 18:00 A | 1124FS+1d | 100% |  |  |  | start no earlier than 2026-10-05 09:00 | Тимофеев В | 8h | 8h |

| ID | WBS | Task | Type | Duration | Start | Finish | Predecessors | Complete | Constraint | Resources | Work | Actual work |
| --- | --- | --- | --- | --- | --- | --- | --- | --- | --- | --- | --- | --- |
| 1126 | 2.121 | **вентиляция мойка приточно-вытяжная 1ц 2 линия** |  | 9.19d | 2026-08-13 09:00 A | 2026-08-26 10:30 A |  | 100% |  |  | 20h | 20h |
| 1127 | 2.121.1 | монтаж вытяжной трубы в колектор. После переноса вентиляторов отключен |  | 4h | 2026-08-17 09:00 A | 2026-08-17 13:00 A |  | 100% | start no earlier than 2026-08-16 09:00 | Бобренок В | 4h | 4h |
| 1128 | 2.121.2 | составить проект |  | 4h | 2026-08-13 09:00 A | 2026-08-13 13:00 A |  | 100% | start no earlier than 2026-08-13 09:00 | Домоводов К | 4h | 4h |
| 1129 | 2.121.3 | заявка материалы |  | 1h | 2026-08-24 09:00 A | 2026-08-24 10:00 A | 1128FS+7d | 100% | start no earlier than 2026-08-24 09:00 | Зорькин В | 1h | 1h |
| 1130 | 2.121.4 | контроль поставки |  | 30min | 2026-08-25 10:00 A | 2026-08-25 10:30 A | 1129FS+1d | 100% | start no earlier than 2026-08-10 08:00 | Зорькин В | 0.5h | 0.5h |
| 1131 | 2.121.5 | монтаж |  | 1d | 2026-08-25 10:30 A | 2026-08-26 10:30 A | 1130 | 100% | start no earlier than 2026-08-10 08:00 | Некрасов А; Тимофеев В | 10.5h | 10.5h |
| 1132 | 2.122 | **выполнить обрамление двери в охладитель, что бы скрыть поверхность** |  | 27.25d | 2026-08-14 09:00 A | 2026-09-17 11:00 A |  | 100% |  |  | 4.5h | 4.5h |
| 1133 | 2.122.1 | заказ декоративный уголок |  | 15min | 2026-08-14 09:00 A | 2026-08-14 09:15 A |  | 100% | start no earlier than 2026-08-14 09:00 | Домоводов К | 0.25h | 0.25h |
| 1134 | 2.122.2 | контроль доставки |  | 15min | 2026-09-09 09:00 A | 2026-09-09 09:15 A | 1133FS+5d | 100% | start no earlier than 2026-09-09 09:00 | Зорькин В | 0.25h | 0.25h |
| 1135 | 2.122.3 | обить дверь в охладитель профлистом оцнк |  | 2h | 2026-09-17 09:00 A | 2026-09-17 11:00 A |  | 100% | start no earlier than 2026-09-17 09:00 | Некрасов А | 2h | 2h |
| 1136 | 2.122.4 | монтаж |  | 2h | 2026-09-03 09:00 A | 2026-09-03 11:00 A | 1134FS+1d | 100% | start no earlier than 2026-09-03 09:00 | Труфанов А | 2h | 2h |
| 1137 | 2.123 | **ремонт осушителя компрессора 2ц** |  | 47.31d | 2026-08-09 09:00 A | 2026-10-04 11:30 A |  | 100% |  |  | 13.58h | 13.58h |
| 1138 | 2.123.1 | проверка давления фреона |  | 1h | 2026-09-17 09:00 A | 2026-09-17 10:00 A |  | 100% | start no earlier than 2026-09-17 09:00 | Труфанов А; Некрасов А | 2h | 2h |
| 1139 | 2.123.2 | заявка фреон 134а |  | 15min | 2026-09-25 09:00 A | 2026-09-25 09:15 A | 1138 | 100% | start no earlier than 2026-09-25 09:00 | Зорькин В | 0.25h | 0.25h |
| 1140 | 2.123.3 | доставка контроль |  | 15min | 2026-10-02 09:15 A | 2026-10-02 09:30 A | 1139FS+7d | 100% | start no earlier than 2026-09-18 08:00 | Зорькин В | 0.25h | 0.25h |
| 1141 | 2.123.4 | заправить хладогент |  | 2h | 2026-10-04 09:30 A | 2026-10-04 11:30 A | 1140FS+1d | 100% | start no earlier than 2026-10-01 09:00 | Некрасов А | 2h | 2h |
| 1142 | 2.123.5 | фото шильдик для поиск в продаже |  | 10min | 2026-08-11 09:00 A | 2026-08-11 09:10 A |  | 100% | start no earlier than 2026-08-11 09:00 | Некрасов А | 0.17h | 0.17h |
| 1143 | 2.123.6 | связь с сервисным отделом получить дату |  | 1h | 2026-08-12 09:00 A | 2026-08-12 10:00 A |  | 100% | start no earlier than 2026-08-12 09:00 | Зорькин В | 1h | 1h |
| 1144 | 2.123.7 | фото шильдик для поиск в продаже |  | 1h | 2026-08-12 09:00 A | 2026-08-12 10:00 A |  | 100% | start no earlier than 2026-08-12 09:00 | Зорькин В | 1h | 1h |
| 1145 | 2.123.8 | слить конденсат с компрессора, чистка фильтров | manual | 3h | 2026-08-09 09:00 A | 2026-08-09 12:00 A |  | 100% | start no earlier than 2026-08-09 09:00 | Бобренок В | 3h | 3h |
| 1146 | 2.123.9 | попробовать смазать подшипники вентилятора осушителя |  | 15min | 2026-08-18 09:00 A | 2026-08-18 09:15 A |  | 100% | start no earlier than 2026-08-18 09:00 | Некрасов А | 0.25h | 0.25h |
| 1147 | 2.123.10 | замер размеров вентилятора |  | 15min | 2026-08-18 09:00 A | 2026-08-18 09:15 A |  | 100% | start no earlier than 2026-08-18 09:00 | Зорькин В; Некрасов А | 0.5h | 0.5h |
| 1148 | 2.123.11 | подбор аналога вентилятора погабариту |  | 1h | 2026-08-18 09:15 A | 2026-08-18 10:15 A | 1147 | 100% | start no earlier than 2026-08-14 09:00 | Зорькин В | 1h | 1h |
| 1149 | 2.123.12 | заменить вентилятор на осушителе (от охладителя, лежит на компрессоре). В 6 утра остановка |  | 2h | 2026-08-19 09:00 A | 2026-08-19 11:00 A |  | 100% | start no earlier than 2026-08-19 09:00 | Бобренок В | 2h | 2h |
| 1150 | 2.123.13 | Заявка в сервис не работает осушитель |  | 10min | 2026-08-31 09:00 A | 2026-08-31 09:10 A |  | 100% | start no earlier than 2026-08-31 09:00 | Зорькин В | 0.17h | 0.17h |
| 1151 | 2.124 | установить защитные крышки на клемник вентиляторов охладителя. От 3д печать | manual | 4h | 2026-09-16 09:00 A | 2026-09-16 13:00 A |  | 100% | start no earlier than 2026-09-16 09:00 | Труфанов А | 4h | 4h |
| 1152 | 2.125 | заменить резинки на красном баке (выдать, если будет остановка, поменять) | manual | 1h | 2026-08-31 09:00 A | 2026-08-31 10:00 A |  | 100% | start no earlier than 2026-08-31 09:00 | Бобренок В | 1h | 1h |
| 1153 | 2.126 | на приемной горловине красного смесителя закрутить второй ленточный хомут, чтобы не выпадала мука |  | 1h | 2026-08-06 09:00 A | 2026-08-06 10:00 A |  | 100% | start no earlier than 2026-08-06 08:00 | Труфанов А | 1h | 1h |

| ID | WBS | Task | Type | Duration | Start | Finish | Predecessors | Complete | Actual start | Actual finish | Constraint | Resources | Work | Actual work |
| --- | --- | --- | --- | --- | --- | --- | --- | --- | --- | --- | --- | --- | --- | --- |
| 1154 | 2.127 | **закрутить болты на петлях двери печи** |  | 0.12d | 2026-09-02 09:00 A | 2026-09-02 10:00 A |  | 100% |  |  |  |  | 1h | 1h |
| 1155 | 2.127.1 | попробовать закрутить на винтовые заклепки |  | 1h | 2026-09-02 09:00 A | 2026-09-02 10:00 A |  | 100% |  |  | start no earlier than 2026-09-04 09:00 | Некрасов А | 1h | 1h |
| 1156 | 2.128 | установка фильтров на подачу жира (осн. + резерв) |  | 2h | 2026-08-06 08:00 A | 2026-08-06 11:00 A |  | 100% |  |  | start no earlier than 2026-08-06 08:00 | Тимофеев В | 2h | 2h |
| 1157 | 2.129 | эксперимент с лейкой подача жиров |  | 1h | 2026-08-06 08:00 A | 2026-08-06 10:00 A |  | 100% |  |  | start no earlier than 2026-08-06 08:00 | Тимофеев В | 1h | 1h |
| 1158 | 2.130 | **по аналогии второй линии насверлить сверлом 1 мм отверстия в трубке для жиров** |  | 0.12d | 2026-08-06 09:00 A | 2026-08-06 10:00 A |  | 100% |  |  |  | Макаревич А | 2h | 2h |
| 1159 | 2.130.1 | установка трубки на жиры |  | 1h | 2026-08-06 09:00 A | 2026-08-06 10:00 A |  | 100% |  |  | start no earlier than 2026-08-06 09:00 | Тимофеев В | 1h | 1h |
| 1160 | 2.131 | поломоечная машинка вырезать из силикона шторку захвата воды |  | 2h | 2026-08-03 08:00 A | 2026-08-03 11:00 A |  | 100% |  |  | start no earlier than 2026-08-03 08:00 | Бобренок В | 2h | 2h |
| 1161 | 2.132 | **втулка фторопласт заказать 26х44х5** |  | 1d? | 2026-08-04 09:00 A | 2026-08-04 18:00 A |  | 100% |  |  |  | Шуранов Ю | 8h | 8h |
| 1162 | 2.132.1 | счет доставка |  | 1d? | 2026-08-04 09:00 A | 2026-08-04 18:00 A |  | 100% |  |  | start no earlier than 2026-08-04 08:00 |  |  |  |
| 1163 | 2.133 | **посмотреть вентилятор Сапелина у нас в кабинете (не работает)** |  | 1d? | 2026-08-04 09:00 A | 2026-08-04 18:00 A |  | 100% |  |  |  | Бобренок В | 8h | 8h |
| 1164 | 2.133.1 | сгорел двигатель |  | 1d? | 2026-08-04 09:00 A | 2026-08-04 18:00 A |  | 100% |  |  | start no earlier than 2026-08-04 08:00 |  |  |  |
| 1165 | 2.134 | слить конденсат с компрессора |  | 0.5h | 2026-08-02 09:00 A | 2026-08-03 09:30 A |  | 100% |  |  | start no earlier than 2026-08-02 09:00 | Бобренок В | 0.5h | 0.5h |
| 1166 | 2.135 | **продолжить изготовление приемной горловины по аналогии 3 ц.** |  | 4h? | 2026-08-10 09:00 | 2026-08-10 13:00 |  | 100% | 2026-07-29 09:00 | 2026-09-04 11:00 |  |  | 14.08h | 14.08h |
| 1167 | 2.135.1 | заказать прут нерж. |  | 1d? | 2026-07-29 09:00 A | 2026-07-29 18:00 A |  | 100% |  |  | start no earlier than 2026-07-29 09:00 | Зорькин В | 8h | 8h |
| 1168 | 2.135.2 | контроль доставка |  | 5min | 2026-08-18 09:00 A | 2026-08-18 09:05 A |  | 100% |  |  | start no earlier than 2026-08-18 09:00 | Зорькин В | 0.08h | 0.08h |
| 1169 | 2.135.3 | изготовление / установка |  | 4h | 2026-08-20 09:00 A | 2026-08-20 13:00 A | 1168 | 100% |  |  | start no earlier than 2026-08-20 09:00 | Макаревич А | 4h | 4h |
| 1170 | 2.135.4 | Корректировка горловины, сделать более плотные зазоры, посмотреть по месту |  | 2h | 2026-09-04 09:00 A | 2026-09-04 11:00 A |  | 100% |  |  | start no earlier than 2026-09-04 09:00 | Макаревич А | 2h | 2h |
| 1171 | 2.136 | прикрутить лотки охладителя, чтобы не задевали сетку (лишние отверстия заварить) | manual | 2h | 2026-08-03 09:00 A | 2026-08-03 11:00 A |  | 100% |  |  | start no earlier than 2026-08-03 09:00 | Бобренок В | 2h | 2h |
| 1172 | 2.137 | чистка фильтров кондиционеров | manual | 1h | 2026-08-01 09:00 A | 2026-08-01 10:00 A |  | 100% |  |  | start no earlier than 2026-08-01 09:00 | Бундин В | 1h | 1h |
| 1173 | 2.138 | слить конденсат с компрессора |  | 1h | 2026-07-30 08:00 A | 2026-07-30 10:00 A |  | 100% |  |  | start no earlier than 2026-07-30 08:00 | Дедов В | 1h | 1h |
| 1174 | 2.139 | слив конденсата с кондиционеров прочистить трубу | manual | 2h | 2026-08-01 09:00 A | 2026-08-01 11:00 A |  | 100% |  |  | start no earlier than 2026-08-01 09:00 | Бундин В | 2h | 2h |
| 1175 | 2.140 | Настройка частотника питателя (созвон с Валентином) |  | 1h | 2026-07-31 09:00 A | 2026-07-31 10:00 A |  | 100% |  |  | start no earlier than 2026-07-31 09:00 | Бундин В | 1h | 1h |
| 1176 | 2.141 | дверь металлическая зона выдачи ГП ревизия, плоход закрывается |  | 1h | 2026-07-15 09:00 A | 2026-07-15 10:00 A |  | 100% |  |  | start no earlier than 2026-07-15 09:00 | Бундин В | 1h | 1h |
| 1177 | 2.142 | крепление доводчик дверь входная |  | 1h | 2026-07-15 09:00 A | 2026-07-15 10:00 A |  | 100% |  |  | start no earlier than 2026-07-15 09:00 | Бундин В | 1h | 1h |
| 1178 | 2.143 | снять меющийся, установить новый прайсчекер (лежит у мастеров) |  | 1h | 2026-07-15 09:00 A | 2026-07-15 10:00 A |  | 100% |  |  | start no earlier than 2026-07-15 09:00 | Бундин В | 1h | 1h |
| 1179 | 2.144 | ремонт кронштейна датчик давления |  | 30min | 2026-07-10 09:00 A | 2026-07-10 09:30 A |  | 100% |  |  | start no earlier than 2026-07-10 09:00 | Бобренок В | 0.5h | 0.5h |
| 1180 | 2.145 | замерить демонтированные шнеки, заполнить ьабличку Зорькина |  | 1h | 2026-07-11 09:00 A | 2026-07-13 10:00 A |  | 100% |  |  | start no earlier than 2026-07-11 09:00 | Макаревич А | 1h | 1h |
| 1181 | 2.146 | обшить входной проем п-образным профилем (на складе лежит) | manual | 3h | 2026-07-08 09:00 A | 2026-07-08 12:00 A |  | 100% |  |  | start no earlier than 2026-07-08 09:00 | Некрасов А; Тимофеев В | 6h | 6h |
| 1182 | 2.147 | чистка воздушных клапанов на септике |  | 1d? | 2026-07-02 09:00 A | 2026-07-02 18:00 A |  | 100% |  |  | start no earlier than 2026-07-02 09:00 | Олег | 8h | 8h |
| 1183 | 2.148 | закрепить щиток транспортера у стены на фасовке, малый дозатор) | manual | 1h | 2026-07-04 09:00 A | 2026-07-04 10:00 A |  | 100% |  |  | start no earlier than 2026-07-04 09:00 | Дедов В | 1h | 1h |

| ID | WBS | Task | Type | Duration | Start | Finish | Complete | Constraint | Resources | Work | Actual work |
| --- | --- | --- | --- | --- | --- | --- | --- | --- | --- | --- | --- |
| 1184 | 2.149 | **под экструдером масло- ревизия откуда** |  | 0.12d | 2026-07-03 09:00 A | 2026-07-03 10:00 A | 100% |  |  | 1h | 1h |
| 1185 | 2.149.1 | заменить шланг 20мм (лежит черный на стеллаже справа, где кабель) при остановке- согласовать с мастером |  | 1h | 2026-07-03 09:00 A | 2026-07-03 10:00 A | 100% | start no earlier than 2026-07-03 09:00 | Макаревич А | 1h | 1h |
| 1186 | 2.150 | чистка труб сброса конденсата с кондиционеров |  | 2h | 2026-06-30 09:00 A | 2026-06-30 11:00 A | 100% | start no earlier than 2026-06-30 09:00 | Некрасов А; Тимофеев В | 2h | 2h |
| 1187 | 2.151 | чистка всех фильтров на кондиционеры, разобраться с питанием внутреннего блока |  | 1d? | 2026-06-29 09:00 A | 2026-06-29 18:00 A | 100% | start no earlier than 2026-06-29 09:00 |  |  |  |
| 1188 | 2.152 | ТО бестром |  | 2h | 2026-06-30 09:00 A | 2026-06-30 11:00 A | 100% | start no earlier than 2026-06-30 09:00 | Бундин В | 2h | 2h |
| 1189 | 2.153 | промыть внешние блоки кондиционеров |  | 3h | 2026-06-26 09:00 A | 2026-06-26 12:00 A | 100% | start no earlier than 2026-06-26 09:00 | Тимофеев В; Дедов В | 6h | 6h |
| 1190 | 2.154 | вернуть кожух защиты на прекондиционер (подогнать в размер) на остановке линии |  | 2h | 2026-06-24 09:00 A | 2026-06-24 11:00 A | 100% | start no earlier than 2026-06-24 09:00 | Труфанов А | 2h | 2h |
| 1191 | 2.155 | подключение тепловой защиты на приточке и вытяжке |  | 2h | 2026-06-23 08:00 A | 2026-06-23 11:00 A | 100% | start no earlier than 2026-06-23 08:00 | Тимофеев В; Макаревич А | 4h | 4h |
| 1192 | 2.156 | заменить фильтр приточка 2 этаж и указать кол-во остатка на складе |  | 1h | 2026-06-20 09:00 A | 2026-06-22 10:00 A | 100% | start no earlier than 2026-06-20 09:00 | Дедов В | 1h | 1h |
| 1193 | 2.157 | сделать защиту жировика от холода (изготовить из сенгвич панели на навесках 2ц.) жировик расскажет | manual | 2h | 2026-06-21 09:00 A | 2026-06-21 11:00 A | 100% | start no earlier than 2026-06-21 09:00 | Бундин В | 2h | 2h |
| 1194 | 2.158 | проверка теко 0,4 -пакет запаенный |  | 1h | 2026-06-18 08:00 A | 2026-06-18 10:00 A | 100% | start no earlier than 2026-06-18 08:00 | Дедов В | 1h | 1h |
| 1195 | 2.159 | подключение датчика давления через гидрошланг |  | 1h | 2026-07-09 09:00 A | 2026-07-09 10:00 A | 100% | start no earlier than 2026-07-09 09:00 | Бундин В | 1h | 1h |
| 1196 | 2.160 | чистка парогенератора |  | 2h | 2026-06-18 08:00 A | 2026-06-18 11:00 A | 100% | start no earlier than 2026-06-18 08:00 | Тимофеев В | 2h | 2h |
| 1197 | 2.161 | слив конденсата с компрессора и продуть радиаторы и фильтры |  | 1h | 2026-06-20 09:00 A | 2026-06-22 10:00 A | 100% | start no earlier than 2026-06-20 09:00 | Бобренок В | 1h | 1h |
| 1198 | 2.162 | проверить, есть ли давление во всех гидроаккумуляторах на отоплении по цеху, зафиксировать с порванными мембранами |  | 2h | 2026-06-11 09:00 A | 2026-06-11 11:00 A | 100% | start no earlier than 2026-06-11 09:00 | Дедов В | 2h | 2h |
| 1199 | 2.163 | дверь охладителя и угол - прикрутить наружний уголок 20х50 и 50х50, чтобы не резали руки (уголок на входе напротив ворот в синем складе) |  | 3h | 2026-06-12 09:00 A | 2026-06-12 12:00 A | 100% | start no earlier than 2026-06-12 09:00 | Дедов В | 3h | 3h |
| 1200 | 2.164 | взять на складе специальный п-образный профиль и обшить дверной проем вход в охладитель | manual | 2h | 2026-07-05 09:00 A | 2026-07-05 11:00 A | 100% | start no earlier than 2026-07-05 09:00 |  |  |  |
| 1201 | 2.165 | проверка гидроаккумулятора на водоподготовке |  | 0.5h | 2026-06-11 09:00 A | 2026-06-11 09:30 A | 100% | start no earlier than 2026-06-11 09:00 | Дедов В | 0.5h | 0.5h |
| 1202 | 2.166 | чистка парогенератора |  | 2h | 2026-06-11 09:00 A | 2026-06-11 11:00 A | 100% | start no earlier than 2026-06-11 09:00 | Тимофеев В | 2h | 2h |
| 1203 | 2.167 | **посмотреть на желтом складе шибер, если найдем устанавливаем на аквариум зона экструдера** |  | 0.12d | 2026-06-12 09:00 A | 2026-06-12 10:00 A | 100% |  |  | 1h | 1h |
| 1204 | 2.167.1 | монтаж воздуховод под углом на шибер- настройка с операторами направление обдува |  | 1h | 2026-06-12 09:00 A | 2026-06-12 10:00 A | 100% | start no earlier than 2026-06-12 09:00 | Бундин В | 1h | 1h |
| 1205 | 2.168 | **ворота выход готовой продукции (прикрутить ролик, ролик у нас в кабинете)** |  | 1d? | 2026-06-11 09:00 A | 2026-06-11 18:00 A | 100% |  |  | 8h | 8h |
| 1206 | 2.168.1 | выкл. Ручной режим |  | 1d? | 2026-06-11 09:00 A | 2026-06-11 18:00 A | 100% | start no earlier than 2026-06-11 09:00 | Дедов В | 8h | 8h |
| 1207 | 2.169 | промерить шнеки / гильзы износ. Маркировать |  | 1h | 2026-07-08 09:00 A | 2026-07-08 10:00 A | 100% | start no earlier than 2026-07-08 09:00 | Зорькин В | 1h | 1h |
| 1208 | 2.170 | сверлить сетку от фильеры, сверлом на станке, все отверстия. |  | 4h | 2026-06-06 09:00 A | 2026-06-08 13:00 A | 100% | start no earlier than 2026-06-06 09:00 | Бобренок В | 4h | 4h |

| ID | WBS | Task | Type | Duration | Start | Finish | Predecessors | Complete | Actual start | Actual finish | Constraint | Resources | Work | Actual work |
| --- | --- | --- | --- | --- | --- | --- | --- | --- | --- | --- | --- | --- | --- | --- |
| 1209 | 2.171 | **заменаить сальник редуктора транспортер №3** |  | 0.12d | 2026-06-18 09:00 A | 2026-06-18 10:00 A |  | 100% |  |  |  |  | 2h | 2h |
| 1210 | 2.171.1 | заменаить редутор из зип |  | 1h | 2026-06-18 09:00 A | 2026-06-18 10:00 A |  | 100% |  |  | start no earlier than 2026-06-18 09:00 | Тимофеев В | 1h | 1h |
| 1211 | 2.171.2 | замена сальник на снятом |  | 1h | 2026-06-18 09:00 A | 2026-06-18 10:00 A |  | 100% |  |  | start no earlier than 2026-06-19 09:00 | Тимофеев В | 1h | 1h |
| 1212 | 2.172 | законтрогаить шпильки-ножки запайщиков |  | 1h | 2026-06-06 09:00 A | 2026-06-08 10:00 A |  | 100% |  |  | start no earlier than 2026-06-06 09:00 | Бобренок В | 1h | 1h |
| 1213 | 2.173 | **нория квадропак -устранить просыпание** |  | 1d? | 2026-06-04 09:00 A | 2026-06-04 18:00 A |  | 100% |  |  |  | Тимофеев В | 16h | 16h |
| 1214 | 2.173.1 | добавить частоту частотника до 70 на норию |  | 1d? | 2026-06-04 09:00 A | 2026-06-04 18:00 A |  | 100% |  |  | start no earlier than 2026-06-04 09:00 | Дедов В | 8h | 8h |
| 1215 | 2.174 | Замена шнеков (усиленные) - по уровню |  | 4h | 2026-06-04 09:00 A | 2026-06-04 13:00 A |  | 100% |  |  | start no earlier than 2026-06-04 09:00 | Тимофеев В | 4h | 4h |
| 1216 | 2.175 | монтаж воздуховод приточный в площадку загрузки смесителя |  | 3h | 2026-06-05 09:00 A | 2026-06-05 12:00 A |  | 100% |  |  | start no earlier than 2026-06-05 09:00 | Некрасов А | 3h | 3h |
| 1217 | 2.176 | очистка вентилятора окно экструдер |  | 40min | 2026-06-04 09:00 A | 2026-06-04 09:40 A |  | 100% |  |  | start no earlier than 2026-06-04 09:00 | Некрасов А; Бундин В | 1.33h | 1.33h |
| 1218 | 2.177 | **доп освещение зона охладитель** |  | 4.75d? | 2026-06-09 09:00 | 2026-06-15 16:00 |  | 100% | 2026-06-10 09:00 | 2026-08-06 11:00 |  |  | 12.67h | 12.67h |
| 1219 | 2.177.1 | спланировать монтаж / проверить наличие матералов |  | 20min | 2026-06-25 09:00 A | 2026-06-25 09:20 A |  | 100% |  |  | start no earlier than 2026-06-25 09:00 | Шуранов Ю; Дедов В | 0.67h | 0.67h |
| 1220 | 2.177.2 | заказать |  | 1d? | 2026-06-10 09:00 A | 2026-06-10 18:00 A |  | 100% |  |  | start no earlier than 2026-06-10 09:00 | Шуранов Ю | 8h | 8h |
| 1221 | 2.177.3 | монтаж |  | 2h | 2026-08-06 09:00 A | 2026-08-06 11:00 A | 1219 | 100% |  |  | start no earlier than 2026-08-06 09:00 | Тимофеев В; Бундин В | 4h | 4h |
| 1222 | 2.178 | отключить двигатель зиплока бестром |  | 1h | 2026-06-12 09:00 A | 2026-06-12 10:00 A |  | 100% |  |  | start no earlier than 2026-06-12 09:00 | Бундин В | 1h | 1h |
| 1223 | 2.179 | ж гардероб душ кабина осмотр гидрозатвор - сильный запах |  | 2h | 2026-05-30 09:00 A | 2026-06-01 11:00 A |  | 100% |  |  | start no earlier than 2026-05-30 09:00 | Бобренок В | 2h | 2h |
| 1224 | 2.180 | ремонт кресло , паук находится на складе у Веры |  | 1h | 2026-06-13 09:00 A | 2026-06-15 10:00 A |  | 100% |  |  | start no earlier than 2026-06-13 09:00 | Бобренок В | 1h | 1h |
| 1225 | 2.181 | ревизия нихром запайщик |  | 1h | 2026-05-29 09:00 A | 2026-05-29 10:00 A |  | 100% |  |  | start no earlier than 2026-05-29 08:00 | Бундин В | 1h | 1h |
| 1226 | 2.182 | штабелер 2ц ревизия колес |  | 1h | 2026-06-01 09:00 A | 2026-06-01 10:00 A |  | 100% |  |  | start no earlier than 2026-06-01 09:00 | Макаревич А | 1h | 1h |
| 1227 | 2.183 | **ремонт эл котел №3 охладитель** |  | 79.25d? | 2026-06-05 09:00 A | 2026-09-19 11:00 A |  | 100% |  |  |  |  | 24.25h | 24.25h |
| 1228 | 2.183.1 | заказать плату |  | 1d? | 2026-07-15 09:00 A | 2026-07-15 18:00 A |  | 100% |  |  | start no earlier than 2026-07-15 09:00 | Зорькин В | 8h | 8h |
| 1229 | 2.183.2 | замена силовой платы зота в районе мойки экструдера (плата на складе) -проверка | manual | 2h | 2026-08-09 09:00 A | 2026-08-09 11:00 A |  | 100% |  |  | start no earlier than 2026-08-09 09:00 | Бобренок В | 2h | 2h |
| 1230 | 2.183.3 | котел №3 проверка платы силовой управления тенами (после откл управления перегрелся пошел дым) на складе есть платы 2 шт. для ЗОТА. Слава плату заменил грешит на д температуры |  | 2h | 2026-09-01 09:00 A | 2026-09-01 11:00 A |  | 100% |  |  | start no earlier than 2026-09-01 09:00 | Дедов В | 2h | 2h |
| 1231 | 2.183.4 | Замена силовой платы, где сгорела 1 ТТР |  | 2h | 2026-08-31 08:00 A | 2026-08-31 11:00 A |  | 100% |  |  | start no earlier than 2026-08-31 08:00 | Дедов В | 2h | 2h |
| 1232 | 2.183.5 | Не работает блок тенов, заказать |  | 10min | 2026-09-01 09:00 A | 2026-09-01 09:10 A |  | 100% |  |  | start no earlier than 2026-09-01 08:00 | Зорькин В | 0.17h | 0.17h |
| 1233 | 2.183.6 | Контроль доставки |  | 5min | 2026-09-09 09:00 A | 2026-09-09 09:05 A |  | 100% |  |  | start no earlier than 2026-09-09 09:00 | Зорькин В | 0.08h | 0.08h |
| 1234 | 2.183.7 | замена блок тенов |  | 2h | 2026-09-19 09:00 A | 2026-09-19 11:00 A |  | 100% |  |  | start no earlier than 2026-09-19 09:00 | Дедов В | 2h | 2h |
| 1235 | 2.183.8 | заказать плату управления |  | 1d? | 2026-06-05 09:00 A | 2026-06-05 18:00 A |  | 100% |  |  | start no earlier than 2026-06-05 09:00 | Зорькин В | 8h | 8h |
| 1236 | 2.184 | замена задних подшипников на прекондиционере (посмотреть итальянские на складе) |  | 6h | 2026-05-26 09:00 A | 2026-05-26 16:00 A |  | 100% |  |  | start no earlier than 2026-05-26 09:00 | Тимофеев В; Некрасов А | 12h | 12h |
| 1237 | 2.185 | перемотать трубы скотчем серым и по низу стык улиток "загерметизировать" |  | 2h | 2026-05-25 08:00 A | 2026-05-25 11:00 A |  | 100% |  |  | start no earlier than 2026-05-25 08:00 | Макаревич А | 2h | 2h |

| ID | WBS | Task | Type | Duration | Start | Finish | Complete | Actual finish | Constraint | Resources | Work | Actual work |
| --- | --- | --- | --- | --- | --- | --- | --- | --- | --- | --- | --- | --- |
| 1238 | 2.186 | **изготовить мойка малая из нерж** |  | 0.5d | 2026-06-01 08:00 A | 2026-06-01 13:00 A | 100% |  |  | Макаревич А | 8h | 8h |
| 1239 | 2.186.1 | подключить мойку на месте (по телефону обсудим) |  | 4h | 2026-06-01 08:00 A | 2026-06-01 13:00 A | 100% |  | start no earlier than 2026-06-01 08:00 | Макаревич А | 4h | 4h |
| 1240 | 2.187 | **дополнительное освещение в зоне жиров** |  | 6.5d | 2026-05-26 09:00 A | 2026-06-01 13:00 | 100% | 2026-06-04 09:30 |  |  | 5h | 5h |
| 1241 | 2.187.1 | заказ светильников |  | 1h | 2026-05-26 09:00 A | 2026-05-26 10:00 A | 100% |  | start no earlier than 2026-05-26 09:00 | Шуранов Ю | 1h | 1h |
| 1242 | 2.187.2 | монтаж |  | 4h | 2026-06-01 09:00 A | 2026-06-01 13:00 A | 100% |  | start no earlier than 2026-06-01 09:00 | Макаревич А | 4h | 4h |
| 1243 | 2.187.3 | подключить к автомату на мойке |  | 0.5h | 2026-06-04 09:00 A | 2026-06-04 09:30 A | 100% |  | start no earlier than 2026-06-04 09:00 |  |  |  |
| 1244 | 2.188 | подключить пк мастеров через ИБП (согласовать с мастером 1 цеха) |  | 1h | 2026-05-25 09:00 A | 2026-05-25 10:00 A | 100% |  | start no earlier than 2026-05-25 08:00 | Шуранов Ю | 1h | 1h |
| 1245 | 2.189 | заменить помпу на термопоте в кухне |  | 1h | 2026-05-27 09:00 A | 2026-05-27 10:00 A | 100% |  | start no earlier than 2026-05-27 09:00 | Дедов В | 1h | 1h |
| 1246 | 2.190 | лопнул шланг от насосной станции до редуктора- заменить |  | 1h | 2026-05-25 08:00 A | 2026-05-25 10:00 A | 100% |  | start no earlier than 2026-05-25 08:00 | Макаревич А | 1h | 1h |
| 1247 | 2.191 | установить влагоотделитель на квадропак |  | 1h | 2026-05-25 08:00 A | 2026-05-25 10:00 A | 100% |  | start no earlier than 2026-05-25 08:00 | Дедов В | 1h | 1h |
| 1248 | 2.192 | закрепить монтажную коробку в коридоре до жировика слева, от кондиционера |  | 1h | 2026-05-22 09:00 A | 2026-05-22 10:00 A | 100% |  | start no earlier than 2026-05-22 09:00 | Бобренок В | 1h | 1h |
| 1249 | 2.193 | закрепить на доп. Клипсы трубу-воздух к стене за бестромом |  | 1h | 2026-05-23 09:00 A | 2026-05-25 10:00 A | 100% |  | start no earlier than 2026-05-23 09:00 | Бобренок В | 1h | 1h |
| 1250 | 2.194 | заменить сетку печки (находиться в слесарке) | manual | 3h | 2026-05-24 09:00 A | 2026-05-24 12:00 A | 100% |  | start no earlier than 2026-05-24 09:00 | Макаревич А | 3h | 3h |
| 1251 | 2.195 | уложить красиво и закрепить гофру от нории до красного смесителя | manual | 2h | 2026-05-24 09:00 A | 2026-05-24 11:00 A | 100% |  | start no earlier than 2026-05-24 09:00 | Макаревич А | 2h | 2h |
| 1252 | 2.196 | взять ножевой узел с желтого склада и фильеры, подготовить и передать во второй цех на экструдер |  | 1h | 2026-05-21 09:00 A | 2026-05-21 10:00 A | 100% |  | start no earlier than 2026-05-21 08:00 | Бундин В | 1h | 1h |
| 1253 | 2.197 | проверить все лотки на охладителе, чтобы не задевали сетку- если нужно поднять. |  | 1h | 2026-05-21 09:00 A | 2026-05-21 10:00 A | 100% |  | start no earlier than 2026-05-21 08:00 | Бундин В | 1h | 1h |
| 1254 | 2.198 | чистка парогенератора, если нужно замена электродов |  | 2h | 2026-05-21 08:00 A | 2026-05-21 11:00 A | 100% |  | start no earlier than 2026-05-21 08:00 | Тимофеев В | 2h | 2h |
| 1255 | 2.199 | чистка фильтра редуктора экструдера, проверка уровня масла |  | 1h | 2026-05-21 08:00 A | 2026-05-21 10:00 A | 100% |  | start no earlier than 2026-05-21 08:00 | Тимофеев В | 1h | 1h |
| 1256 | 2.200 | проверить пневмоцилиндры на встряхивателях квадропака |  | 1h | 2026-05-21 08:00 A | 2026-05-21 10:00 A | 100% |  | start no earlier than 2026-05-21 08:00 | Бобренок В | 1h | 1h |
| 1257 | 2.201 | проверка токов на печи, если просадка проверяем перемычки, тены |  | 1h | 2026-05-21 09:00 A | 2026-05-21 10:00 A | 100% |  | start no earlier than 2026-05-21 08:00 | Некрасов А | 1h | 1h |
| 1258 | 2.202 | коротит на баке жиров все проверить |  | 1h | 2026-05-21 09:00 A | 2026-05-21 10:00 A | 100% |  | start no earlier than 2026-05-21 08:00 |  |  |  |
| 1259 | 2.203 | в зоне фасовки сделать конструкцию, чтобы не выпадала макулатура |  | 6h | 2026-08-31 09:00 A | 2026-08-31 16:00 A | 100% |  | start no earlier than 2026-08-31 09:00 | Макаревич А | 6h | 6h |
| 1260 | 2.204 | закрепить доводчик на входной двери |  | 1h | 2026-05-23 09:00 A | 2026-05-25 10:00 A | 100% |  | start no earlier than 2026-05-23 09:00 | Бундин В | 1h | 1h |
| 1261 | 2.205 | установить розетку для палетооботчика на его колону |  | 2h | 2026-05-18 09:00 A | 2026-05-18 11:00 A | 100% |  | start no earlier than 2026-05-18 09:00 | Дедов В | 2h | 2h |

| ID | WBS | Task | Type | Duration | Start | Finish | Predecessors | Complete | Constraint | Resources | Work | Actual work |
| --- | --- | --- | --- | --- | --- | --- | --- | --- | --- | --- | --- | --- |
| 1262 | 2.206 | **ИБП установить на принтер SAVEMA** |  | 5.25d | 2026-05-19 09:00 A | 2026-05-26 11:00 A |  | 100% |  |  | 3.25h | 3.25h |
| 1263 | 2.206.1 | подбор и заявка ИБП |  | 1h | 2026-05-19 09:00 A | 2026-05-19 10:00 A |  | 100% | start no earlier than 2026-05-19 09:00 | Шуранов Ю | 1h | 1h |
| 1264 | 2.206.2 | контроль поставки |  | 15min | 2026-05-26 09:00 A | 2026-05-26 09:15 A |  | 100% | start no earlier than 2026-05-26 09:00 | Шуранов Ю | 0.25h | 0.25h |
| 1265 | 2.206.3 | монтаж и подключение в шкафу | manual | 2h | 2026-05-26 09:00 A | 2026-05-26 11:00 A | 1264 | 100% | start no earlier than 2026-05-26 09:00 | Дедов В | 2h | 2h |
| 1266 | 2.207 | **переместить на склад ЗИП палет сетка, зарядка АКБ штабелера** |  | 0.12d | 2026-06-01 09:00 A | 2026-06-01 10:00 A |  | 100% |  |  | 1h | 1h |
| 1267 | 2.207.1 | зарядку АКБ переместить в контейнер, она находится в мойке зона экструдера | manual | 1h | 2026-06-01 09:00 A | 2026-06-01 10:00 A |  | 100% | start no earlier than 2026-06-01 09:00 | Макаревич А | 1h | 1h |
| 1268 | 2.208 | **бестром замена линейный подшипник прижима красных ремней** |  | 24.5d | 2026-05-15 09:00 A | 2026-06-18 13:00 A |  | 100% |  |  | 5.25h | 5.25h |
| 1269 | 2.208.1 | заявка |  | 1h | 2026-05-15 09:00 A | 2026-05-15 10:00 A |  | 100% | start no earlier than 2026-05-15 09:00 | Зорькин В | 1h | 1h |
| 1270 | 2.208.2 | доставка контроль |  | 15min | 2026-05-27 10:00 A | 2026-05-27 10:15 A | 1269FS+10d | 100% | start no earlier than 2026-05-14 08:00 | Зорькин В | 0.25h | 0.25h |
| 1271 | 2.208.3 | замена |  | 4h | 2026-06-18 09:00 A | 2026-06-18 13:00 A | 1270 | 100% | start no earlier than 2026-06-18 09:00 | Тимофеев В | 4h | 4h |
| 1272 | 2.209 | осмотр цепи муфты редуктора экструдера |  | 1h | 2026-05-14 09:00 A | 2026-05-14 10:00 A |  | 100% | start no earlier than 2026-05-14 09:00 | Тимофеев В | 1h | 1h |
| 1273 | 2.210 | Линия 3 на жирах нужно поменять колеса на транспортёре, который идет на охладитель |  | 1h | 2026-05-14 09:00 A | 2026-05-14 10:00 A |  | 100% | start no earlier than 2026-05-14 09:00 | Макаревич А | 1h | 1h |
| 1274 | 2.211 | осмотр прекондиционер "звон" |  | 30min | 2026-05-14 09:00 A | 2026-05-14 09:30 A |  | 100% | start no earlier than 2026-05-14 09:00 | Тимофеев В | 0.5h | 0.5h |
| 1275 | 2.212 | **заменить гофра унитаз правый отсек** |  | 16.12d | 2026-05-13 09:00 A | 2026-06-04 10:00 A |  | 100% |  |  | 41.25h | 41.25h |
| 1276 | 2.212.1 | заявка гофра |  | 15min | 2026-05-13 09:00 A | 2026-05-13 09:15 A |  | 100% | start no earlier than 2026-05-13 09:00 | Зорькин В | 0.25h | 0.25h |
| 1277 | 2.212.2 | доставка |  | 5d | 2026-05-13 09:15 A | 2026-05-20 09:15 A | 1276 | 100% | start no earlier than 2026-05-12 08:00 | Карабанов | 40h | 40h |
| 1278 | 2.212.3 | замена |  | 1h | 2026-06-04 09:00 A | 2026-06-04 10:00 A | 1277 | 100% | start no earlier than 2026-06-04 09:00 | Бобренок В | 1h | 1h |
| 1279 | 2.213 | замена смазка шприц на экструдере |  | 30min | 2026-05-13 09:00 A | 2026-05-13 09:30 A |  | 100% | start no earlier than 2026-05-13 09:00 | Некрасов А | 0.5h | 0.5h |
| 1280 | 2.214 | замена передний подшипник + набивка прекондиционер |  | 1h | 2026-05-14 09:00 A | 2026-05-14 10:00 A |  | 100% | start no earlier than 2026-05-14 09:00 | Тимофеев В | 1h | 1h |
| 1281 | 2.215 | прикрутить лоток выше на 1 ярусе, задевает сетку со сторону редуктора |  | 1h | 2026-05-08 08:00 A | 2026-05-08 10:00 A |  | 100% | start no earlier than 2026-05-08 08:00 | Макаревич А | 1h | 1h |
| 1282 | 2.216 | взять шайбу у нас в кабинете и шлифануть одну сторону |  | 1h | 2026-05-08 09:00 A | 2026-05-08 10:00 A |  | 100% | start no earlier than 2026-05-08 09:00 | Макаревич А | 1h | 1h |
| 1283 | 2.217 | смотровое окно на загрузке прекондиционера установить |  | 4h | 2026-08-25 09:00 A | 2026-08-25 13:00 A |  | 100% | start no earlier than 2026-08-31 09:00 | Тимофеев В | 4h | 4h |
| 1284 | 2.218 | добавить воду в систему отопления зота охладитель |  | 1h | 2026-05-09 09:00 A | 2026-05-11 10:00 A |  | 100% | start no earlier than 2026-05-09 09:00 | Макаревич А | 1h | 1h |
| 1285 | 2.219 | монтаж сетки на палетообмотчике | manual | 4h | 2026-05-14 09:00 A | 2026-05-14 13:00 A |  | 100% | start no earlier than 2026-05-14 09:00 | Некрасов А; Труфанов А | 8h | 8h |
| 1286 | 2.220 | Собрать стул, находится в кабинете мастеров 2 цех |  | 1h | 2026-05-13 09:00 A | 2026-05-13 10:00 A |  | 100% | start no earlier than 2026-05-13 09:00 | Бундин В | 1h | 1h |

| ID | WBS | Task | Type | Duration | Start | Finish | Complete | Actual start | Actual finish | Constraint | Resources | Work | Actual work |
| --- | --- | --- | --- | --- | --- | --- | --- | --- | --- | --- | --- | --- | --- |
| 1287 | 2.221 | **взять у нас на складе инсектицидные светильники и повесить их во 2 цехе, где нет** |  | 1.12d | 2026-05-12 09:00 A | 2026-05-13 10:00 A | 100% |  |  |  |  | 3h | 3h |
| 1288 | 2.221.1 | ремонт |  | 2h | 2026-05-12 09:00 A | 2026-05-12 11:00 A | 100% |  |  | start no earlier than 2026-05-12 09:00 | Бундин В | 2h | 2h |
| 1289 | 2.221.2 | монтаж ламп / заполнить в журнал мастера |  | 1h | 2026-05-13 09:00 A | 2026-05-13 10:00 A | 100% |  |  | start no earlier than 2026-05-13 09:00 | Бундин В | 1h | 1h |
| 1290 | 2.222 | герметиком замазать гофру на унитазах (запах) | manual | 1h | 2026-05-07 08:00 A | 2026-05-07 09:00 A | 100% |  |  | start no earlier than 2026-05-07 08:00 | Бобренок В | 1h | 1h |
| 1291 | 2.223 | заменить фильтр на приточку 2 этаж |  | 1h | 2026-05-07 08:00 A | 2026-05-07 10:00 A | 100% |  |  | start no earlier than 2026-05-07 08:00 | Тимофеев В | 1h | 1h |
| 1292 | 2.224 | ревизия перемычек, тен на печи - замена |  | 4h | 2026-05-07 09:00 A | 2026-05-07 13:00 A | 100% |  |  | start no earlier than 2026-05-07 08:00 | Труфанов А | 4h | 4h |
| 1293 | 2.225 | **повесить на места светильники инсектицидные (замена ламп)** |  | 1d? | 2026-05-11 09:00 | 2026-05-11 18:00 | 100% | 2026-05-12 09:00 | 2026-05-12 11:00 |  |  | 2h | 2h |
| 1294 | 2.225.1 | **заказать досели** |  | 0.25d | 2026-05-12 09:00 A | 2026-05-12 11:00 A | 100% |  |  |  |  | 2h | 2h |
| 1295 | 2.225.1.1 | ремонт не рабочих светильников |  | 2h | 2026-05-12 09:00 A | 2026-05-12 11:00 A | 100% |  |  | start no earlier than 2026-05-12 09:00 | Бундин В | 2h | 2h |
| 1296 | 2.226 | уложить кабель в гофре вдоль экструдера в лоток |  | 2h | 2026-05-04 09:00 A | 2026-05-04 11:00 A | 100% |  |  | start no earlier than 2026-05-04 08:00 | Бундин В | 2h | 2h |
| 1297 | 2.227 | **подготовить ТРМ для парогенератора цех 2** |  | 0d | 2026-05-16 09:00 A | 2026-05-16 10:00 A | 100% |  |  |  | Дедов В | 1h | 1h |
| 1298 | 2.227.1 | установить на остановке ТРМ (который сняли отдать Дедову для восстановления) восстановить кнопку | manual | 1h | 2026-05-16 09:00 A | 2026-05-16 10:00 A | 100% |  |  | start no earlier than 2026-05-16 09:00 | Дедов В | 1h | 1h |
| 1299 | 2.228 | повесить светильники 3шт. |  | 1h | 2026-05-04 09:00 A | 2026-05-04 10:00 A | 100% |  |  | start no earlier than 2026-05-04 08:00 | Труфанов А | 1h | 1h |
| 1300 | 2.229 | монтаж свет на фасовке |  | 8h | 2026-05-05 09:00 A | 2026-05-05 18:00 A | 100% |  |  | start no earlier than 2026-05-05 09:00 | Тимофеев В; Труфанов А | 15h | 15h |
| 1301 | 2.230 | заменить кулер в ШУ на жирах |  | 1h | 2026-04-29 08:00 A | 2026-04-29 10:00 A | 100% |  |  | start no earlier than 2026-04-29 08:00 | Дедов В | 1h | 1h |
| 1302 | 2.231 | заменить 3х ходовой кран и фитинги с гайкой на жирах |  | 1h | 2026-04-29 09:00 A | 2026-04-29 10:00 A | 100% |  |  | start no earlier than 2026-04-30 09:00 | Дедов В | 1h | 1h |
| 1303 | 2.232 | закрепить на подножке резинку на штабелере зона экструдера (можно на саморез/клепки) |  | 1h | 2026-04-29 08:00 A | 2026-04-29 10:00 A | 100% |  |  | start no earlier than 2026-04-29 08:00 | Дедов В | 1h | 1h |
| 1304 | 2.233 | **заменить сетку для печи из зип** |  | 0.38d | 2026-05-05 09:00 A | 2026-05-05 12:00 A | 100% |  |  |  |  | 5h | 5h |
| 1305 | 2.233.1 | **заменить сетку , которую сняли с печи** |  | 3h | 2026-05-05 09:00 A | 2026-05-05 12:00 A | 100% |  |  |  | Бундин В | 5h | 5h |
| 1306 | 2.233.1.1 | ремонт сетки |  | 2h | 2026-05-05 09:00 A | 2026-05-05 11:00 A | 100% |  |  | start no earlier than 2026-05-05 09:00 | Бобренок В | 2h | 2h |
| 1307 | 2.234 | под норией сыпит сырье устранить |  | 4h | 2026-04-30 09:00 A | 2026-04-30 13:00 A | 100% |  |  | start no earlier than 2026-04-30 09:00 | Труфанов А; Некрасов А | 8h | 8h |
| 1308 | 2.235 | устранить течь, сброс пара под прекондиционером |  | 1h | 2026-05-01 09:00 A | 2026-05-01 10:00 A | 100% |  |  | start no earlier than 2026-05-01 09:00 | Дедов В | 1h | 1h |
| 1309 | 2.236 | устранить течь редуктор прекондиционера |  | 5h | 2026-04-29 09:00 A | 2026-04-29 15:00 A | 100% |  |  | start no earlier than 2026-04-29 08:00 | Некрасов А; Труфанов А | 10h | 10h |
| 1310 | 2.237 | почистить фильтр на поломоечной машинке |  | 1h | 2026-04-29 09:00 A | 2026-04-29 10:00 A | 100% |  |  | start no earlier than 2026-04-29 09:00 | Тимофеев В | 1h | 1h |
| 1311 | 2.238 | Полное ТО квадропак (чистка тен, смазка штоков пневмоцилиндров, шприцевание подшипников) |  | 3h | 2026-04-28 09:00 A | 2026-04-28 12:00 A | 100% |  |  | start no earlier than 2026-04-28 09:00 | Тимофеев В | 3h | 3h |
| 1312 | 2.239 | Полное ТО бестром (чистка тен, смазка штоков пневмоцилиндров, шприцевание подшипников) |  | 2h | 2026-04-28 09:00 A | 2026-04-28 11:00 A | 100% |  |  | start no earlier than 2026-04-28 09:00 | Тимофеев В | 2h | 2h |
| 1313 | 2.240 | демонтаж инсектютерной ламп на очистку / продуть |  | 1h | 2026-04-27 08:00 A | 2026-04-27 10:00 A | 100% |  |  | start no earlier than 2026-04-27 08:00 | Тимофеев В | 1h | 1h |
| 1314 | 2.241 | ремонт инсектецидных ламп взять у Мастера в каб. (проверить контакты соединения самих лам, дросели). 3 исправно/1 сломан дросель |  | 1h | 2026-04-29 09:00 A | 2026-04-29 10:00 A | 100% |  |  | start no earlier than 2026-04-29 09:00 | Дедов В | 1h | 1h |

| ID | WBS | Task | Type | Duration | Start | Finish | Predecessors | Complete | Actual start | Actual finish | Constraint | Resources | Work | Actual work |
| --- | --- | --- | --- | --- | --- | --- | --- | --- | --- | --- | --- | --- | --- | --- |
| 1315 | 2.242 | **замена дроселя инсекцидной лампы** |  | 17.38d | 2026-04-30 09:00 A | 2026-05-25 12:00 A |  | 100% |  |  |  |  | 84.25h | 84.25h |
| 1316 | 2.242.1 | заявка |  | 15min | 2026-04-30 09:00 A | 2026-04-30 09:15 A |  | 100% |  |  | start no earlier than 2026-04-30 08:00 | Шуранов Ю | 0.25h | 0.25h |
| 1317 | 2.242.2 | замена |  | 3h | 2026-05-25 08:00 A | 2026-05-25 12:00 A |  | 100% |  |  | start no earlier than 2026-05-25 08:00 | Дедов В | 3h | 3h |
| 1318 | 2.242.3 | доставка |  | 10d | 2026-05-04 09:00 A | 2026-05-18 18:00 A | 1316 | 100% |  |  | start no earlier than 2026-05-04 09:00 | Карабанов | 80h | 80h |
| 1319 | 2.242.4 | замена |  | 1h | 2026-05-12 09:00 A | 2026-05-12 10:00 A |  | 100% |  |  | start no earlier than 2026-05-12 09:00 | Бундин В | 1h | 1h |
| 1320 | 2.243 | поликарбанат в зоне седла жировика оторвался, ремонт |  | 1h | 2026-04-30 09:00 A | 2026-04-30 10:00 A |  | 100% |  |  | start no earlier than 2026-04-30 09:00 | Бундин В | 1h | 1h |
| 1321 | 2.244 | зачистить и покрасить решетку на входе в 2 ц. |  | 4h | 2026-04-28 09:00 A | 2026-04-28 13:00 A |  | 100% |  |  | start no earlier than 2026-04-28 09:00 | Дворник | 4h | 4h |
| 1322 | 2.245 | поднять лотки на 10 мм на охладителе со стороны фасовки (видео вышлю) |  | 1h | 2026-04-24 09:00 A | 2026-04-24 10:00 A |  | 100% |  |  | start no earlier than 2026-04-24 08:00 | Бундин В | 1h | 1h |
| 1323 | 2.246 | добавить в систему отопления котла в мойке и в охладителе воды | manual | 2h | 2026-04-24 09:00 A | 2026-04-24 11:00 A |  | 100% |  |  | start no earlier than 2026-04-24 09:00 | Бундин В | 2h | 2h |
| 1324 | 2.247 | на углы установить отбойники выход с зоны экструдера |  | 2h | 2026-04-23 09:00 A | 2026-04-23 11:00 A |  | 100% |  |  | start no earlier than 2026-04-23 08:00 | Бундин В | 2h | 2h |
| 1325 | 2.248 | сделать ТО Бестром (чистка тен и т.д.) |  | 2h | 2026-04-22 08:00 A | 2026-04-22 11:00 A |  | 100% |  |  | start no earlier than 2026-04-22 08:00 | Дедов В | 2h | 2h |
| 1326 | 2.249 | собрать кабинку в мужской раздевалке, она там стоит в коробке |  | 1h | 2026-04-23 09:00 A | 2026-04-23 10:00 A |  | 100% |  |  | start no earlier than 2026-04-23 09:00 | Дедов В | 1h | 1h |
| 1327 | 2.250 | заменить датчик переполнения на загрузке с синего бункера, на складе взять |  | 1h | 2026-04-29 09:00 A | 2026-04-29 10:00 A |  | 100% |  |  | start no earlier than 2026-04-29 09:00 | Дедов В | 1h | 1h |
| 1328 | 2.251 | **включить все исектицидные светильники по цеху, проверить есть ли напряжение в розетках** |  | 0.12d | 2026-04-23 09:00 A | 2026-04-23 10:00 A |  | 100% |  |  |  | Дедов В | 2h | 2h |
| 1329 | 2.251.1 | проверить напряжение в розетке светильника на фасовке |  | 1h | 2026-04-23 09:00 A | 2026-04-23 10:00 A |  | 100% |  |  | start no earlier than 2026-04-23 08:00 | Бундин В | 1h | 1h |
| 1330 | 2.252 | **установить кольцо "вентури" в фильеру** |  | 2.38d? | 2026-05-04 09:00 | 2026-05-06 12:00 |  | 100% | 2026-04-27 09:00 | 2026-09-10 10:00 |  |  | 4.5h | 4.5h |
| 1331 | 2.252.1 | определить диаметр отверстия кольца |  | 1h | 2026-04-27 09:00 A | 2026-04-27 10:00 A |  | 100% |  |  | start no earlier than 2026-04-27 09:00 | Зорькин В | 1h | 1h |
| 1332 | 2.252.2 | заявка на изготовление |  | 1h | 2026-04-28 10:00 A | 2026-04-28 11:00 A | 1331FS+1d | 100% |  |  | start no earlier than 2026-04-20 08:00 | Зорькин В | 1h | 1h |
| 1333 | 2.252.3 | контроль |  | 1h | 2026-05-04 09:00 A | 2026-05-04 10:00 A | 1332FS+1d | 100% |  |  | start no earlier than 2026-05-04 09:00 | Зорькин В | 1h | 1h |
| 1334 | 2.252.4 | заявка на выжечь проставку лдя кольца |  | 30min | 2026-07-15 09:00 A | 2026-07-15 09:30 A |  | 100% |  |  | start no earlier than 2026-07-15 09:00 | Зорькин В | 0.5h | 0.5h |
| 1335 | 2.252.5 | контроль доставки | milestone | 0d | 2026-07-22 09:30 A | 2026-07-22 09:30 A | 1334FS+5d | 100% |  |  | start no earlier than 2026-07-15 09:00 | Зорькин В |  |  |
| 1336 | 2.252.6 | провести тест |  | 1h | 2026-09-10 09:00 A | 2026-09-10 10:00 A |  | 100% |  |  | start no earlier than 2026-09-10 09:00 | Зорькин В | 1h | 1h |
| 1337 | 2.253 | замена фильтр вода подача в накопитель |  | 1h | 2026-04-21 09:00 A | 2026-04-21 10:00 A |  | 100% |  |  | start no earlier than 2026-04-21 09:00 | Тимофеев В | 1h | 1h |
| 1338 | 2.254 | замена потускневших ламп в инсекютере. Мастеру сообщить кол-во. б/у складывать в коробку |  | 2h | 2026-05-04 09:00 A | 2026-05-04 11:00 A |  | 100% |  |  | start no earlier than 2026-05-04 09:00 | Макаревич А | 2h | 2h |

| ID | WBS | Task | Type | Duration | Start | Finish | Predecessors | Complete | Actual start | Actual finish | Constraint | Resources | Work | Actual work |
| --- | --- | --- | --- | --- | --- | --- | --- | --- | --- | --- | --- | --- | --- | --- |
| 1339 | 2.255 | **ограждение палетообмотчика** |  | 19.25d | 2026-04-17 08:00 A | 2026-05-14 11:00 A |  | 100% |  |  |  |  | 190.5h | 190.5h |
| 1340 | 2.255.1 | **подготовка и монтаж рамы** |  | 6.75d | 2026-04-17 08:00 A | 2026-04-27 16:00 A |  | 100% |  |  |  |  | 24h | 24h |
| 1341 | 2.255.1.1 | изготовить ограждения для палетообмотчика (размеры обговорим) |  | 10h | 2026-04-17 08:00 A | 2026-04-20 11:00 A |  | 100% |  |  | start no earlier than 2026-04-17 08:00 | Макаревич А | 10h | 10h |
| 1342 | 2.255.1.2 | очистка, покраска рам ограждения. Быстросохн грунт-эмаль по ржавчине 3в1. |  | 4h | 2026-04-20 08:00 A | 2026-04-20 13:00 A |  | 100% |  |  | start no earlier than 2026-04-20 08:00 | Макаревич А | 4h | 4h |
| 1343 | 2.255.1.3 | монтаж рамы ограждения |  | 4h | 2026-04-27 09:00 A | 2026-04-27 13:00 A | 1342 | 100% |  |  | start no earlier than 2026-04-27 09:00 | Тимофеев В | 4h | 4h |
| 1344 | 2.255.1.4 | приварить пластины под стойки ограждения и закрепить к полу, чтобы оператор был вне зоны опасности) |  | 6h | 2026-04-25 09:00 A | 2026-04-27 16:00 A |  | 100% |  |  | start no earlier than 2026-04-25 09:00 | Макаревич А | 6h | 6h |
| 1345 | 2.255.2 | **обклеить рамы лентой** |  | 17.25d | 2026-04-21 09:00 A | 2026-05-14 11:00 A |  | 100% |  |  |  |  | 82.25h | 82.25h |
| 1346 | 2.255.2.1 | заявка клейка лента сигнальная черно-желтая / негабарит |  | 15min | 2026-04-21 09:00 A | 2026-04-21 09:15 A |  | 100% |  |  | start no earlier than 2026-04-21 09:00 | Зорькин В | 0.25h | 0.25h |
| 1347 | 2.255.2.2 | доставка |  | 10d | 2026-04-21 09:15 A | 2026-05-05 09:15 A | 1346 | 100% |  |  | start no earlier than 2026-04-20 08:00 | Карабанов | 80h | 80h |
| 1348 | 2.255.2.3 | монтаж ленты черно-желтой |  | 2h | 2026-05-14 09:00 A | 2026-05-14 11:00 A | 1347 | 100% |  |  | start no earlier than 2026-05-14 09:00 | Бобренок В | 2h | 2h |
| 1349 | 2.255.3 | **монтаж сетки на раму** |  | 10.03d | 2026-04-21 09:00 A | 2026-05-05 09:15 A |  | 100% |  |  |  |  | 84.25h | 84.25h |
| 1350 | 2.255.3.1 | заявка сетка для ограждения |  | 15min | 2026-04-21 09:00 A | 2026-04-21 09:15 A |  | 100% |  |  | start no earlier than 2026-04-21 09:00 | Зорькин В | 0.25h | 0.25h |
| 1351 | 2.255.3.2 | доставка сетка |  | 10d | 2026-04-21 09:15 A | 2026-05-05 09:15 A | 1350 | 100% |  |  | start no earlier than 2026-04-20 08:00 | Карабанов | 80h | 80h |
| 1352 | 2.255.3.3 | монтаж сетка |  | 4h | 2026-05-04 09:15 A | 2026-05-04 14:15 A | 1351 | 100% |  |  | start no earlier than 2026-04-20 08:00 | Некрасов А | 4h | 4h |
| 1353 | 2.256 | воздухозабоник циклона отпилить и вернуть как было раньше |  | 1h | 2026-04-28 09:00 A | 2026-04-28 10:00 A |  | 100% |  |  | start no earlier than 2026-04-28 09:00 | Тимофеев В | 1h | 1h |
| 1354 | 2.257 | проверка всех гидроаккумуляторов парогенератор, в вент комнате и отопительные |  | 2h | 2026-04-17 09:00 A | 2026-04-17 11:00 A |  | 100% |  |  | start no earlier than 2026-04-17 08:00 |  |  |  |
| 1355 | 2.258 | сборка полетообмотчика на фасовке |  | 1h | 2026-04-16 09:00 A | 2026-04-16 10:00 A |  | 100% |  |  | start no earlier than 2026-04-16 09:00 | Бобренок В | 1h | 1h |
| 1356 | 2.259 | заменить ремень на охладителе |  | 1h | 2026-04-15 09:00 A | 2026-04-15 10:00 A |  | 100% |  |  | start no earlier than 2026-04-15 08:00 | Некрасов А | 1h | 1h |
| 1357 | 2.260 | оторвался контроллер мониторинга на ШУ экструдера |  | 1h | 2026-04-15 09:00 A | 2026-04-15 10:00 A |  | 100% |  |  | start no earlier than 2026-04-15 08:00 | Некрасов А | 1h | 1h |
| 1358 | 2.261 | **сделать горловину на быстросъемах прекондиционер** |  | 3.88d? | 2026-04-16 09:00 | 2026-04-21 17:00 |  | 100% | 2026-08-20 09:00 | 2026-09-14 12:00 |  |  | 23h | 23h |
| 1359 | 2.261.1 | заказать защелки |  | 1d? | 2026-08-31 09:00 A | 2026-08-31 18:00 A |  | 100% |  |  | start no earlier than 2026-08-31 09:00 | Шуранов Ю | 8h | 8h |
| 1360 | 2.261.2 | Удлинить носик, чтоб можно было вешать мешок, куда будет ссыпаться мука |  | 3h | 2026-09-14 09:00 A | 2026-09-14 12:00 A |  | 100% |  |  | start no earlier than 2026-09-14 08:00 | Макаревич А | 3h | 3h |
| 1361 | 2.261.3 | изготовить установить люк для чистки с обр стороны как в 3ц (шапочка) |  | 4h | 2026-09-12 09:00 A | 2026-09-12 13:00 A |  | 100% |  |  | start no earlier than 2026-09-12 09:00 | Макаревич А | 4h | 4h |
| 1362 | 2.261.4 | установка |  | 1d? | 2026-08-20 09:00 A | 2026-08-20 18:00 A |  | 100% |  |  | start no earlier than 2026-09-02 09:00 | Тимофеев В | 8h | 8h |
| 1363 | 2.262 | перенести светильник квадропака (на край мезонина) |  | 2h | 2026-04-13 09:00 A | 2026-04-13 11:00 A |  | 100% |  |  | start no earlier than 2026-04-13 09:00 | Труфанов А | 2h | 2h |
| 1364 | 2.263 | сделать или мусоросборник на лотке выхода экструдера, или обратный лоток в сторону охдадителя (обсудим по телефону) |  | 4h | 2026-08-31 09:00 A | 2026-08-31 13:00 A |  | 100% |  |  | start no earlier than 2026-08-31 09:00 | Макаревич А | 4h | 4h |
| 1365 | 2.264 | слить конденсат с компрессора, продуть радиаторы, чистка фильтров | manual | 2h | 2026-04-12 09:00 A | 2026-04-12 11:00 A |  | 100% |  |  | start no earlier than 2026-04-12 09:00 | Труфанов А | 2h | 2h |
| 1366 | 2.265 | добавить в систему отопления воды (зона экструдера, вход в мойку) | manual | 2h | 2026-04-12 09:00 A | 2026-04-12 11:00 A |  | 100% |  |  | start no earlier than 2026-04-12 09:00 | Труфанов А | 2h | 2h |
| 1367 | 2.266 | починить стул Шелепову (выстучать середину и посадить на хомут) |  | 1h | 2026-04-11 09:00 A | 2026-04-13 10:00 A |  | 100% |  |  | start no earlier than 2026-04-11 09:00 | Труфанов А | 1h | 1h |
| 1368 | 2.267 | не работает вентилятор третий справа, плохой контакт- прикрутить |  | 1h | 2026-04-10 08:00 A | 2026-04-10 10:00 A |  | 100% |  |  | start no earlier than 2026-04-10 08:00 | Бобренок В | 1h | 1h |
| 1369 | 2.268 | взять канистру со склада и сделать подачу снизу, взять сгон с канистры 2 линии (канистру я видел в гидрализатной 1 ц.) |  | 1h | 2026-04-26 09:00 A | 2026-04-27 10:00 A |  | 100% |  |  | start no earlier than 2026-04-26 09:00 | Макаревич А | 1h | 1h |
| 1370 | 2.269 | сделать лоток под канистру рыбий жир - подача в прекондиционер |  | 3h | 2026-04-11 09:00 A | 2026-04-13 12:00 A |  | 100% |  |  | start no earlier than 2026-04-11 09:00 | Макаревич А | 3h | 3h |
| 1371 | 2.270 | перескочила цепь на 2ом ярусе охладителя -поправить |  | 1h | 2026-04-10 08:00 A | 2026-04-10 10:00 A |  | 100% |  |  | start no earlier than 2026-04-10 08:00 | Макаревич А | 1h | 1h |

| ID | WBS | Task | Type | Duration | Start | Finish | Predecessors | Complete | Remaining | Total slack | Constraint | Resources | Work | Actual work |
| --- | --- | --- | --- | --- | --- | --- | --- | --- | --- | --- | --- | --- | --- | --- |
| 1372 | 2.271 | **установка фосунок - подача жира 2 линия** |  | 5d | 2026-04-24 09:00 A | 2026-04-30 18:00 A |  | 100% |  |  |  |  | 8.42h | 8.42h |
| 1373 | 2.271.1 | заявка краны 1/2 |  | 15min | 2026-04-24 09:00 A | 2026-04-24 09:15 A |  | 100% |  |  | start no earlier than 2026-04-24 08:00 | Зорькин В | 0.25h | 0.25h |
| 1374 | 2.271.2 | доставка контроль |  | 10min | 2026-04-30 09:15 A | 2026-04-30 09:25 A | 1373FS+5d | 100% |  |  | start no earlier than 2026-04-24 08:00 | Зорькин В | 0.17h | 0.17h |
| 1375 | 2.271.3 | сборка кронштейн для фильтров + счетчик |  | 4h | 2026-04-30 09:25 A | 2026-04-30 14:25 A | 1374 | 100% |  |  | start no earlier than 2026-04-24 08:00 | Тимофеев В | 4h | 4h |
| 1376 | 2.271.4 | монтаж на линию фильтры + кронштейн + форсунка |  | 4h | 2026-04-30 13:25 A | 2026-04-30 18:00 A | 1375 | 100% |  |  | start no earlier than 2026-04-24 08:00 | Тимофеев В | 4h | 4h |
| 1377 | 2.272 | вывести на синий склад старые цепи от печи зона навесок |  | 2h | 2026-05-22 09:00 A | 2026-05-22 11:00 A |  | 100% |  |  | start no earlier than 2026-04-09 08:00 | Тимофеев В | 2h | 2h |
| 1378 | 2.273 | прикрутить уголок снизу выхода охладителя, забивается кормом (фото скину) |  | 1h | 2026-04-08 09:00 A | 2026-04-08 10:00 A |  | 100% |  |  | start no earlier than 2026-04-08 08:00 | Бундин В | 1h | 1h |
| 1379 | 2.274 | закрыть шибер кондиционера над жировиком |  | 1h | 2026-04-09 09:00 A | 2026-04-09 10:00 A |  | 100% |  |  | start no earlier than 2026-04-09 09:00 | Бобренок В | 1h | 1h |
| 1380 | 2.275 | прикрутить оргстекло в аквариуме где забрасывают навески в смеситель |  | 1h | 2026-04-08 09:00 A | 2026-04-08 10:00 A |  | 100% |  |  | start no earlier than 2026-04-08 09:00 | Бундин В | 1h | 1h |
| 1381 | 2.276 | ревизия двигатель, контакты ножевого узла |  | 1h | 2026-04-09 09:00 A | 2026-04-09 10:00 A |  | 100% |  |  | start no earlier than 2026-04-09 09:00 | Тимофеев В | 1h | 1h |
| 1382 | 2.277 | земена сеток печи |  | 2h | 2026-05-04 09:00 A | 2026-05-04 11:00 A |  | 100% |  |  | start no earlier than 2026-05-04 09:00 | Макаревич А; Некрасов А; Тимофеев В | 4h | 4h |
| 1383 | 2.278 | получить метал-лоток 100х50, закрепить слева от двери выхода с зоны экструдера и уложить все провода | manual | 2h | 2026-04-11 09:00 A | 2026-04-11 11:00 A |  | 100% |  |  |  | Труфанов А | 2h | 2h |
| 1384 | 2.279 | получить аллюминевый скотч- замотать стыки циклона, улитки печек, место рычага шибера улитки | manual | 2h | 2026-04-05 09:00 A | 2026-04-05 11:00 A |  | 100% |  |  | start no earlier than 2026-04-05 09:00 | Труфанов А | 2h | 2h |
| 1385 | 2.280 | **установить водоподготовку на парогенератор** |  | 141d? | 2026-04-08 09:00 A | 2026-10-09 18:00 |  | 3% | 137.19d? | 112.59d |  |  | 17.25h | 0.25h |
| 1386 | 2.280.1 | планирование монтажа |  | 1h | 2026-10-05 09:00 | 2026-10-05 10:00 |  |  |  | 117.47d | start no earlier than 2026-10-05 09:00 | Домоводов К | 1h |  |
| 1387 | 2.280.2 | запрос КП | milestone | 0min | 2026-04-08 09:00 A | 2026-04-08 09:00 A |  | 100% |  |  | start no earlier than 2026-04-08 09:00 | Зорькин В |  |  |
| 1388 | 2.280.3 | решение о покупке | milestone | 0d | 2026-04-08 18:00 A | 2026-04-08 18:00 A | 1387FS+1d | 100% |  |  | start no earlier than 2026-04-03 08:00 | Домоводов К |  |  |
| 1389 | 2.280.4 | контроль поставки |  | 15min | 2026-04-27 09:00 A | 2026-04-27 09:15 A |  | 100% |  |  | start no earlier than 2026-04-27 09:00 | Зорькин В | 0.25h | 0.25h |
| 1390 | 2.280.5 | монтаж (установка) |  | 1d? | 2026-10-09 09:00 | 2026-10-09 18:00 |  |  |  | 112.59d | start no earlier than 2026-10-09 09:00 | Тимофеев В; Некрасов А | 16h |  |
| 1391 | 2.281 | **изготовить сетку перед фильерой экструдера от костей** |  | 11d | 2026-04-17 09:00 A | 2026-05-01 18:00 A |  | 100% |  |  |  |  | 83.25h | 83.25h |
| 1392 | 2.281.1 | составить чертеж |  | 2h | 2026-04-17 09:00 A | 2026-04-17 11:00 A |  | 100% |  |  | start no earlier than 2026-04-17 09:00 | Зорькин В | 2h | 2h |
| 1393 | 2.281.2 | разместить заказ |  | 1h | 2026-04-18 11:00 A | 2026-04-20 10:00 A | 1392FS+1d | 100% |  |  | start no earlier than 2026-04-03 08:00 | Зорькин В | 1h | 1h |
| 1394 | 2.281.3 | изготовление |  | 10d | 2026-04-18 12:00 A | 2026-05-01 18:00 A | 1393 | 100% |  |  | start no earlier than 2026-04-03 08:00 | Подрядчик | 80h | 80h |
| 1395 | 2.281.4 | контроль | milestone | 0d | 2026-04-30 12:00 A | 2026-04-30 12:00 A | 1394 | 100% |  |  | start no earlier than 2026-04-03 08:00 | Зорькин В |  |  |
| 1396 | 2.281.5 | орг забрать |  | 15min | 2026-05-01 12:00 A | 2026-05-01 12:15 A | 1395FS+1d | 100% |  |  | start no earlier than 2026-04-03 08:00 | Зорькин В | 0.25h | 0.25h |

| ID | WBS | Task | Type | Duration | Start | Finish | Predecessors | Complete | Actual start | Actual finish | Constraint | Resources | Work | Actual work |
| --- | --- | --- | --- | --- | --- | --- | --- | --- | --- | --- | --- | --- | --- | --- |
| 1397 | 2.282 | **вешалка для дамских сумочек в тамбур при надевании бахил** |  | 13.25d | 2026-05-04 09:00 | 2026-05-18 11:00 |  | 100% | 2026-04-17 09:00 | 2026-06-15 10:00 |  |  | 82h | 82h |
| 1398 | 2.282.1 | заявка |  | 1h | 2026-04-17 09:00 A | 2026-04-17 10:00 A |  | 100% |  |  | start no earlier than 2026-04-17 09:00 | Зорькин В | 1h | 1h |
| 1399 | 2.282.2 | доставка |  | 10d | 2026-04-17 10:00 A | 2026-05-01 10:00 A | 1398 | 100% |  |  | start no earlier than 2026-04-02 08:00 | Карабанов | 80h | 80h |
| 1400 | 2.282.3 | монтаж |  | 1h | 2026-06-13 09:00 A | 2026-06-15 10:00 A | 1399 | 100% |  |  | start no earlier than 2026-06-13 09:00 | Бобренок В | 1h | 1h |
| 1401 | 2.283 | Врезка фитинга 1/2х12мм в дверку прекондиционера 2 цех (созвон с Зорькиным) |  | 30min | 2026-04-09 09:00 A | 2026-04-09 09:30 A |  | 100% |  |  | start no earlier than 2026-04-09 09:00 | Тимофеев В | 0.5h | 0.5h |
| 1402 | 2.284 | проверить контур управления насосом ПГ |  | 1h | 2026-04-02 09:00 A | 2026-04-02 10:00 A |  | 100% |  |  | start no earlier than 2026-04-02 09:00 | Тимофеев В | 1h | 1h |
| 1403 | 2.285 | замена электродной группы или чистка до металла электродов |  | 1h | 2026-04-16 09:00 A | 2026-04-16 10:00 A |  | 100% |  |  | start no earlier than 2026-04-16 09:00 | Макаревич А | 1h | 1h |
| 1404 | 2.286 | закрепить шкаф управления приточной вентиляцией |  | 30min | 2026-04-01 08:00 A | 2026-04-01 09:30 A |  | 100% |  |  | start no earlier than 2026-04-01 08:00 | Бобренок В | 0.5h | 0.5h |
| 1405 | 2.287 | установить пневмо пистолеты на охладители с длинным носиком (у мастеров) |  | 1h | 2026-04-01 08:00 A | 2026-04-01 10:00 A |  | 100% |  |  | start no earlier than 2026-04-01 08:00 | Бобренок В | 1h | 1h |
| 1406 | 2.288 | утечка группа безопасности котел склад навесок устранить |  | 30min | 2026-03-31 08:00 A | 2026-03-31 09:30 A |  | 100% |  |  | start no earlier than 2026-03-31 08:00 | Бобренок В | 0.5h | 0.5h |
| 1407 | 2.289 | закрепить две трубы подачи воздуха в охладителе, пневмо шланг подачи в улитку крепим к стене |  | 2h | 2026-03-27 09:00 A | 2026-03-27 11:00 A |  | 100% |  |  | start no earlier than 2026-03-27 08:00 | Труфанов А | 2h | 2h |
| 1408 | 2.290 | изготовить 2 лотка 700х400х50 мм из нерж под транспортерную ленту транспортер №1 и №2 |  | 6h | 2026-04-04 09:00 A | 2026-04-06 16:00 A |  | 100% |  |  | start no earlier than 2026-04-04 09:00 | Макаревич А | 6h | 6h |
| 1409 | 2.291 | открутить вилку-розетку возле насоса подачи жиров в экструдер |  | 1h | 2026-04-01 09:00 A | 2026-04-01 10:00 A |  | 100% |  |  | start no earlier than 2026-04-01 09:00 | Бобренок В | 1h | 1h |
| 1410 | 2.292 | прикруть кусок металлопрофиля ,чтобы заделать отверстие куда проходит труба отопления (зона где привозят навески) фото скину | manual | 1h | 2026-03-29 09:00 A | 2026-03-29 10:00 A |  | 100% |  |  | start no earlier than 2026-03-29 09:00 | Бундин В | 1h | 1h |
| 1411 | 2.293 | **замена ленты нория** |  | 4.5d | 2026-03-27 08:00 A | 2026-04-02 13:00 A |  | 100% |  |  |  |  | 39.5h | 39.5h |
| 1412 | 2.293.1 | получить материал весь | manual | 30min | 2026-03-29 09:00 A | 2026-03-29 09:30 A |  | 100% |  |  | start no earlier than 2026-03-29 09:00 | Тимофеев В | 0.5h | 0.5h |
| 1413 | 2.293.2 | подготовка кондуктора |  | 2h | 2026-03-27 08:00 A | 2026-03-27 11:00 A |  | 100% |  |  | start no earlier than 2026-03-27 08:00 | Некрасов А; Тимофеев В | 4h | 4h |
| 1414 | 2.293.3 | подготовить к установке норийную ленту, ковши, болты |  | 15h | 2026-03-28 09:00 A | 2026-03-31 17:00 A |  | 100% |  |  | start no earlier than 2026-03-28 09:00 | Дедов В | 15h | 15h |
| 1415 | 2.293.4 | подготовка крепления лебедки для затягивания ленты |  | 4h | 2026-03-31 09:00 A | 2026-03-31 13:00 A |  | 100% |  |  | start no earlier than 2026-03-31 09:00 | Труфанов А; Некрасов А | 8h | 8h |
| 1416 | 2.293.5 | замена ленты |  | 4h | 2026-04-02 09:00 A | 2026-04-02 13:00 A |  | 100% |  |  | start no earlier than 2026-04-02 09:00 | Некрасов А; Макаревич А; Тимофеев В | 12h | 12h |
| 1417 | 2.294 | закрепить гофру на трос -рефрежераторы на территории |  | 1h | 2026-03-27 09:00 A | 2026-03-27 10:00 A |  | 100% |  |  | start no earlier than 2026-03-27 09:00 | Некрасов А | 1h | 1h |
| 1418 | 2.295 | монтаж розетки до канистры с жиром для подачи в экструдер (подключение весов) |  | 2h | 2026-03-26 09:00 A | 2026-03-26 11:00 A |  | 100% |  |  | start no earlier than 2026-03-26 09:00 | Дедов В | 2h | 2h |
| 1419 | 2.296 | заделать щели / маршпуты крыс . Зона хранения навесок (закрутить профлист и запенить отверстие под трубу) |  | 1h | 2026-03-26 09:00 A | 2026-03-26 10:00 A |  | 100% |  |  | start no earlier than 2026-03-26 09:00 | Некрасов А | 1h | 1h |
| 1420 | 2.297 | оперативная замена шнеков |  | 6h | 2026-03-23 09:00 A | 2026-03-23 16:00 A |  | 100% |  |  | start no earlier than 2026-03-23 09:00 | Бобренок В; Бундин В | 12h | 12h |
| 1421 | 2.298 | выдать шланг для продувки бестрома |  | 1h | 2026-03-23 09:00 A | 2026-03-23 10:00 A |  | 100% |  |  | start no earlier than 2026-03-23 09:00 | Бундин В | 1h | 1h |
| 1422 | 2.299 | приварить уголок на лотке в охладитель (фото скину) |  | 2h | 2026-03-24 09:00 A | 2026-03-24 11:00 A |  | 100% |  |  | start no earlier than 2026-03-24 09:00 | Бобренок В | 2h | 2h |
| 1423 | 2.300 | на транспортере с охладителя отрезать концы саморезов на оргстекле (зарапают руки) |  | 1h | 2026-03-23 09:00 A | 2026-03-23 10:00 A |  | 100% |  |  | start no earlier than 2026-03-23 08:00 | Бундин В | 1h | 1h |
| 1424 | 2.301 | насосная станция включить и проверить на кз (выбивало автомат) |  | 2h | 2026-03-31 09:00 A | 2026-03-31 11:00 A |  | 100% |  |  | start no earlier than 2026-03-31 09:00 | Тимофеев В | 2h | 2h |
| 1425 | 2.302 | закрепить трубу РР к стене в районе хранения кубов гидролизат |  | 1h | 2026-03-26 09:00 A | 2026-03-26 10:00 A |  | 100% |  |  | start no earlier than 2026-03-26 09:00 | Тимофеев В | 1h | 1h |
| 1426 | 2.303 | настройка продувка ПГ ч/з 30 мин |  | 30min | 2026-04-02 09:00 A | 2026-04-02 09:30 A |  | 100% |  |  | start no earlier than 2026-04-02 09:00 | Шуранов Ю | 0.5h | 0.5h |
| 1427 | 2.304 | на красном смесителе закусывает ручку шибера - разобраться |  | 2h | 2026-03-26 09:00 A | 2026-03-26 11:00 A |  | 100% |  |  | start no earlier than 2026-03-26 09:00 | Тимофеев В | 2h | 2h |
| 1428 | 2.305 | посмотреть эл. магнит на двери вход ц.2 |  | 1h | 2026-03-27 09:00 A | 2026-03-27 10:00 A |  | 100% |  |  | start no earlier than 2026-03-27 09:00 | Тимофеев В | 1h | 1h |
| 1429 | 2.306 | ящик возле нашего кабинета- прибить или прикрутить дно |  | 1h | 2026-03-22 09:00 A | 2026-03-23 10:00 A |  | 100% |  |  | start no earlier than 2026-03-22 09:00 | Бобренок В | 1h | 1h |
| 1430 | 2.307 | слить конденсат, почистить фильтры и продуть радиаторы |  | 1h | 2026-03-21 09:00 A | 2026-03-23 10:00 A |  | 100% |  |  | start no earlier than 2026-03-21 09:00 | Дедов В | 1h | 1h |
| 1431 | 2.308 | забрать кресло Сапелина на ремонт в слесарку с каб. Шелепова |  | 2h | 2026-03-23 09:00 A | 2026-03-23 11:00 A |  | 100% |  |  | start no earlier than 2026-03-23 09:00 | Тимофеев В | 2h | 2h |
| 1432 | 2.309 | закрепить кабель в гофре на клипсы от розетки слева от ворот жировика |  | 1h | 2026-03-26 09:00 A | 2026-03-26 10:00 A |  | 100% |  |  | start no earlier than 2026-03-26 09:00 | Труфанов А | 1h | 1h |
| 1433 | 2.310 | уложить выше подиума и красиво закрепить на клипсы кабель в гофре от ворот справа (фото вышлю) |  | 1h | 2026-04-16 09:00 A | 2026-04-16 10:00 A |  | 100% |  |  | start no earlier than 2026-04-10 09:00 | Тимофеев В | 1h | 1h |
| 1434 | 2.311 | монтаж отбойников по периметру |  | 4h | 2026-03-25 09:00 A | 2026-03-25 13:00 A |  | 100% |  |  | start no earlier than 2026-03-25 09:00 | Бундин В | 4h | 4h |
| 1435 | 2.312 | перенос отбойник ГП с стороны эл щита, что бы не входл палет |  | 2h | 2026-03-19 08:00 A | 2026-03-19 11:00 A |  | 100% |  |  | start no earlier than 2026-03-19 08:00 | Бобренок В | 2h | 2h |
| 1436 | 2.313 | установить лист сендвич панель на стену жир/экструдер с стороны мойки |  | 3h | 2026-04-07 09:00 A | 2026-04-07 12:00 A |  | 100% |  |  | start no earlier than 2026-04-07 09:00 | Некрасов А; Труфанов А | 6h | 6h |
| 1437 | 2.314 | подлючить пневмоулитку к воздуху в охладителе |  | 1h | 2026-03-31 09:00 A | 2026-03-31 10:00 A |  | 100% |  |  | start no earlier than 2026-03-31 09:00 | Бобренок В | 1h | 1h |
| 1438 | 2.315 | выдать уплотнение на крышки прекондиционера |  | 30min | 2026-03-19 08:00 A | 2026-03-19 09:30 A |  | 100% |  |  | start no earlier than 2026-03-19 08:00 | Бобренок В | 0.5h | 0.5h |

| ID | WBS | Task | Type | Duration | Start | Finish | Predecessors | Complete | Actual start | Actual finish | Constraint | Resources | Work | Actual work |
| --- | --- | --- | --- | --- | --- | --- | --- | --- | --- | --- | --- | --- | --- | --- |
| 1439 | 2.316 | **ворота фасовка** |  | 0.12d | 2026-03-26 09:00 A | 2026-03-26 10:00 A |  | 100% |  |  |  |  | 1h | 1h |
| 1440 | 2.316.1 | закрепить гофру до розетки слева от ворот и закрыть монтажную коробку |  | 1h | 2026-03-26 09:00 A | 2026-03-26 10:00 A |  | 100% |  |  | start no earlier than 2026-03-26 09:00 | Некрасов А | 1h | 1h |
| 1441 | 2.317 | **забивает лоток прекондиционер/экструдер, передалать** |  | 1.62d | 2026-08-31 09:00 A | 2026-09-01 15:00 A |  | 100% |  |  |  |  | 5h | 5h |
| 1442 | 2.317.1 | изготовить чертежи лекалы для воронки |  | 1h | 2026-08-31 09:00 A | 2026-08-31 10:00 A |  | 100% |  |  | start no earlier than 2026-08-31 09:00 | Шуранов Ю | 1h | 1h |
| 1443 | 2.317.2 | изготовление воронки |  | 4h | 2026-09-01 10:00 A | 2026-09-01 15:00 A | 1442FS+1d | 100% |  |  | start no earlier than 2026-09-01 09:00 | Макаревич А | 4h | 4h |
| 1444 | 2.318 | уложить в лоток пучек управления заслонками, отвязать от батареи |  | 1h | 2026-03-17 08:00 A | 2026-03-17 10:00 A |  | 100% |  |  | start no earlier than 2026-03-17 08:00 | Бобренок В | 1h | 1h |
| 1445 | 2.319 | распред коробка подкл вентилятора которого уже нет (кондиционер №3 жиры) - облогородить |  | 30min | 2026-03-17 08:00 A | 2026-03-17 09:30 A |  | 100% |  |  | start no earlier than 2026-03-17 08:00 | Бобренок В | 0.5h | 0.5h |
| 1446 | 2.320 | удалить лотаки с барана |  | 2h | 2026-03-19 09:00 A | 2026-03-19 11:00 A |  | 100% |  |  | start no earlier than 2026-03-19 08:00 | Труфанов А; Некрасов А | 4h | 4h |
| 1447 | 2.321 | упорядочить проводку регистратора данных - стянуть в пучек |  | 1h | 2026-03-20 09:00 A | 2026-03-20 10:00 A |  | 100% |  |  | start no earlier than 2026-03-20 09:00 | Дедов В | 1h | 1h |
| 1448 | 2.322 | **открыть люк у бестрома / ревизяия / закрыть на герметик** |  | 0.12d | 2026-03-19 09:00 A | 2026-03-19 10:00 A |  | 100% |  |  |  | Труфанов А | 2h | 2h |
| 1449 | 2.322.1 | хим. Лаборатория устранить течь с оборудования |  | 1h | 2026-03-19 09:00 A | 2026-03-19 10:00 A |  | 100% |  |  | start no earlier than 2026-03-19 08:00 | Труфанов А | 1h | 1h |
| 1450 | 2.323 | **изготовить 2 лотка из нерж. в зоне жиров по аналогии с первым цехом под транспортером тип 1 и тип 2** |  | 0.25d | 2026-03-16 09:00 A | 2026-03-16 11:00 A |  | 100% |  |  |  | Макаревич А | 4h | 4h |
| 1451 | 2.323.1 | установить отбойник в зону ХХХ, брать в 5А |  | 2h | 2026-03-16 09:00 A | 2026-03-16 11:00 A |  | 100% |  |  | start no earlier than 2026-03-16 09:00 | Бобренок В | 2h | 2h |
| 1452 | 2.324 | **сточить острый край лотка загрузки в охладитель** |  | 0.12d | 2026-03-15 09:00 A | 2026-03-16 10:00 A |  | 100% |  |  |  | Некрасов А | 3h | 3h |
| 1453 | 2.324.1 | вывезти люльку, вывезти бойлер, провода на жирах спрятать в коробку |  | 1h | 2026-03-15 09:00 A | 2026-03-16 10:00 A |  | 100% |  |  | start no earlier than 2026-03-15 09:00 | Бобренок В | 1h | 1h |
| 1454 | 2.324.2 | бойлер в душе - установить трубку на клапан сброса и смонтировать её по стене до канализ трубы |  | 1h | 2026-03-16 09:00 A | 2026-03-16 10:00 A |  | 100% |  |  | start no earlier than 2026-03-16 09:00 | Макаревич А | 1h | 1h |
| 1455 | 2.325 | облогородить кабельный пучек, сделать аккуратно/закрыить крышкой. Слева от двери экструдер/тамбур под лестницей |  | 6h | 2026-04-09 09:00 A | 2026-04-09 16:00 A |  | 100% |  |  | start no earlier than 2026-04-11 09:00 | Труфанов А | 6h | 6h |
| 1456 | 2.326 | **изготовить сетку после барабана по аналогии с сущ 10мм** |  | 2.5d | 2026-03-12 09:00 A | 2026-03-16 13:00 A |  | 100% |  |  |  | Макаревич А | 25.5h | 25.5h |
| 1457 | 2.326.1 | на лоток загрузки в охладитель - установить доп борт с левой стороны, такой же как с правой (съемный) |  | 4h | 2026-03-15 09:00 A | 2026-03-16 13:00 A |  | 100% |  |  | start no earlier than 2026-03-15 09:00 | Бобренок В | 4h | 4h |
| 1458 | 2.326.2 | квадропак стол подачи пакетов устновить кайки с барашком/приварить. + зафиксировать от бокового смещения |  | 1h | 2026-03-16 09:00 A | 2026-03-16 10:00 A |  | 100% |  |  | start no earlier than 2026-03-16 09:00 | Тимофеев В | 1h | 1h |
| 1459 | 2.326.3 | изменить время разгон/торожение привод барабана |  | 30min | 2026-03-12 09:00 A | 2026-03-12 09:30 A |  | 100% |  |  | start no earlier than 2026-03-13 09:00 | Дедов В | 0.5h | 0.5h |
| 1460 | 2.327 | изготовить кожух на шестерни прекондиционера |  | 6h | 2026-04-03 09:00 A | 2026-04-03 16:00 A |  | 100% |  |  | start no earlier than 2026-04-03 09:00 | Макаревич А | 6h | 6h |
| 1461 | 2.328 | **ремонт датчик давления линия 3** |  | 30.25d | 2026-03-26 09:00 | 2026-04-30 11:00 |  | 100% | 2026-05-14 09:00 | 2026-06-11 12:00 |  |  | 124.75h | 124.75h |
| 1462 | 2.328.1 | заявка переходник G1/4 /M20*1.5 токарю |  | 15min | 2026-05-14 09:00 A | 2026-05-14 09:15 A |  | 100% |  |  | start no earlier than 2026-05-14 09:00 | Зорькин В | 0.25h | 0.25h |
| 1463 | 2.328.2 | контроль изг/орг доставка | milestone | 0d | 2026-05-14 09:15 A | 2026-05-14 09:15 A | 1462 | 100% |  |  | start no earlier than 2026-03-20 08:00 |  |  |  |
| 1464 | 2.328.3 | заказ замена + в ЗИП |  | 15min | 2026-05-14 09:15 A | 2026-05-14 09:30 A | 1463 | 100% |  |  | start no earlier than 2026-03-13 09:00 | Зорькин В | 0.25h | 0.25h |
| 1465 | 2.328.4 | заявка на РВД удлинитель |  | 15min | 2026-05-14 09:30 A | 2026-05-14 09:45 A | 1464 | 100% |  |  | start no earlier than 2026-03-12 08:00 | Зорькин В | 0.25h | 0.25h |
| 1466 | 2.328.5 | доставка |  | 15d | 2026-05-14 09:45 A | 2026-06-04 09:45 A | 1465 | 100% |  |  | start no earlier than 2026-03-12 08:00 | Карабанов | 120h | 120h |
| 1467 | 2.328.6 | монтаж |  | 1h | 2026-06-04 09:00 A | 2026-06-04 10:00 A |  | 100% |  |  | start no earlier than 2026-06-04 09:00 | Тимофеев В | 1h | 1h |
| 1468 | 2.328.7 | датчик давления экструдера проверка подключения |  | 3h | 2026-06-11 09:00 A | 2026-06-11 12:00 A |  | 100% |  |  | start no earlier than 2026-06-11 09:00 | Дедов В | 3h | 3h |

| ID | WBS | Task | Duration | Start | Finish | Predecessors | Complete | Constraint | Resources | Work | Actual work |
| --- | --- | --- | --- | --- | --- | --- | --- | --- | --- | --- | --- |
| 1469 | 2.329 | **установить сирену при отключении автомата ПГ** | 28.12d | 2026-03-13 09:00 A | 2026-04-22 10:00 A |  | 100% |  |  | 81.5h | 81.5h |
| 1470 | 2.329.1 | заявка на реле / сирена | 30min | 2026-03-13 09:00 A | 2026-03-13 09:30 A |  | 100% | start no earlier than 2026-03-13 09:00 | Шуранов Ю | 0.5h | 0.5h |
| 1471 | 2.329.2 | доставка | 10d | 2026-03-13 09:30 A | 2026-03-27 09:30 A | 1470 | 100% | start no earlier than 2026-03-12 08:00 | Карабанов | 80h | 80h |
| 1472 | 2.329.3 | монтаж в схему (проверить почему не срабатывает) | 1h | 2026-04-22 09:00 A | 2026-04-22 10:00 A | 1471 | 100% | start no earlier than 2026-04-22 09:00 | Дедов В | 1h | 1h |
| 1473 | 2.330 | **установить сирену на отключение автоматов в печи** | 16d | 2026-03-11 09:00 A | 2026-04-01 18:00 A |  | 100% |  |  | 44.25h | 44.25h |
| 1474 | 2.330.1 | заявка сирена | 15min | 2026-03-13 09:30 A | 2026-03-13 09:45 A | 1470 | 100% | start no earlier than 2026-03-12 08:00 | Шуранов Ю | 0.25h | 0.25h |
| 1475 | 2.330.2 | доставка | 5d | 2026-03-13 09:45 A | 2026-03-20 09:45 A | 1474 | 100% | start no earlier than 2026-03-12 08:00 | Карабанов | 40h | 40h |
| 1476 | 2.330.3 | монтаж | 2h | 2026-03-19 09:00 A | 2026-03-19 11:00 A | 1475 | 100% | start no earlier than 2026-03-19 09:00 | Дедов В | 2h | 2h |
| 1477 | 2.330.4 | доставка сирены | 10d | 2026-03-19 09:00 A | 2026-04-01 18:00 A |  | 100% | start no earlier than 2026-03-19 08:00 |  |  |  |
| 1478 | 2.330.5 | монтаж сирены | 1h | 2026-03-31 09:00 A | 2026-03-31 10:00 A | 1477 | 100% | start no earlier than 2026-03-31 09:00 | Дедов В | 1h | 1h |
| 1479 | 2.330.6 | настройка доводчика дверь вход в зону экструдера | 1h | 2026-03-11 09:00 A | 2026-03-11 10:00 A |  | 100% | start no earlier than 2026-03-11 09:00 | Макаревич А | 1h | 1h |
| 1480 | 2.331 | **выпадает фильера с матрицы - делать стпор** | 0.5d | 2026-04-27 09:00 A | 2026-04-27 13:00 A |  | 100% |  |  | 4.5h | 4.5h |
| 1481 | 2.331.1 | подготовка сверла / метчика | 30min | 2026-04-27 09:00 A | 2026-04-27 09:30 A |  | 100% | start no earlier than 2026-04-27 09:00 | Шуранов Ю | 0.5h | 0.5h |
| 1482 | 2.331.2 | сверлить и резать резьбу для фикс болта | 4h | 2026-04-27 09:00 A | 2026-04-27 13:00 A |  | 100% | start no earlier than 2026-04-27 09:00 | Подрядчик | 4h | 4h |
| 1483 | 2.332 | **замена поликарбанат на перегородках металопрофилем** | 68.75d | 2026-03-11 09:00 A | 2026-06-15 16:00 A |  | 100% |  |  | 114h | 114h |
| 1484 | 2.332.1 | расчет материал стена охладитель | 1h | 2026-03-19 09:00 A | 2026-03-19 10:00 A |  | 100% | start no earlier than 2026-03-19 09:00 | Шуранов Ю | 1h | 1h |
| 1485 | 2.332.2 | заявка | 1h | 2026-03-19 10:00 A | 2026-03-19 11:00 A | 1484 | 100% | start no earlier than 2026-03-12 08:00 | Шуранов Ю | 1h | 1h |
| 1486 | 2.332.3 | доставка | 10d | 2026-03-19 11:00 A | 2026-04-02 11:00 A | 1485 | 100% | start no earlier than 2026-03-12 08:00 | Карабанов | 80h | 80h |
| 1487 | 2.332.4 | из металлопрофиля 3м. Обшиваем охладитель внутри и снаружи + утеплитель | 5h | 2026-05-29 09:00 A | 2026-05-29 15:00 A |  | 100% | start no earlier than 2026-05-29 09:00 | Некрасов А; Бобренок В | 10h | 10h |
| 1488 | 2.332.5 | продолжить монтаж (со стороны охладителя и со стороны жиров) | 6h | 2026-06-15 09:00 A | 2026-06-15 16:00 A | 1486 | 100% | start no earlier than 2026-06-15 09:00 | Некрасов А; Бундин В | 12h | 12h |
| 1489 | 2.332.6 | замена шланг реле давление и настройка. фильтр приточная офис | 1h | 2026-03-12 09:00 A | 2026-03-12 10:00 A |  | 100% | start no earlier than 2026-03-13 09:00 | Дедов В | 1h | 1h |
| 1490 | 2.332.7 | замена насос гидролизата | 1h | 2026-03-12 08:00 A | 2026-03-12 10:00 A |  | 100% | start no earlier than 2026-03-12 08:00 | Бундин В; Тимофеев В | 2h | 2h |
| 1491 | 2.332.8 | замена подшипник прекондиционер | 1h | 2026-03-12 09:00 A | 2026-03-12 10:00 A |  | 100% | start no earlier than 2026-03-12 08:00 | Бундин В | 1h | 1h |
| 1492 | 2.332.9 | ремонт вал охладитель | 4h | 2026-03-12 09:00 A | 2026-03-12 13:00 A |  | 100% | start no earlier than 2026-03-19 09:00 | Тимофеев В | 4h | 4h |
| 1493 | 2.332.10 | плохо закр дверь на фасовку. заменить личинку двери / выравнить напильником в коробке. | 1h | 2026-03-11 09:00 A | 2026-03-11 10:00 A |  | 100% | start no earlier than 2026-03-11 09:00 | Макаревич А | 1h | 1h |
| 1494 | 2.332.11 | крепить поликарбанат стена печь/жир длинная часть | 1h | 2026-03-11 09:00 A | 2026-03-11 10:00 A |  | 100% | start no earlier than 2026-03-11 09:00 | Макаревич А | 1h | 1h |
| 1495 | 2.333 | сетку на выходе барабана жир закрепить. Устр вспомогактельные крепжи операторам | 1h | 2026-03-19 09:00 A | 2026-03-19 10:00 A |  | 100% | start no earlier than 2026-03-19 09:00 | Тимофеев В | 1h | 1h |

| ID | WBS | Task | Duration | Start | Finish | Predecessors | Complete | Constraint | Resources | Work | Actual work |
| --- | --- | --- | --- | --- | --- | --- | --- | --- | --- | --- | --- |
| 1496 | 2.334 | **установить / снять трубу от ПГ для чистки сетки** | 0.25d | 2026-03-12 09:00 A | 2026-03-12 11:00 A |  | 100% |  | Тимофеев В | 7h | 7h |
| 1497 | 2.334.1 | чистка циклон снаружи от копоти. Средство для чистки выдаст Шелепов К | 2h | 2026-03-12 09:00 A | 2026-03-12 11:00 A |  | 100% | start no earlier than 2026-03-12 09:00 | Тимофеев В; Бундин В | 4h | 4h |
| 1498 | 2.334.2 | замена датчик расхода пара | 1h | 2026-03-12 09:00 A | 2026-03-12 10:00 A |  | 100% | start no earlier than 2026-03-12 09:00 | Некрасов А | 1h | 1h |
| 1499 | 2.335 | **замениь фитинги на жир** | 0.25d | 2026-03-10 09:00 A | 2026-03-10 11:00 A | 712 | 100% |  | Некрасов А | 4h | 4h |
| 1500 | 2.335.1 | замена бойлер в мойке экструдера на бойлер который весит за экструдером | 2h | 2026-03-10 09:00 A | 2026-03-10 11:00 A |  | 100% | start no earlier than 2026-03-10 09:00 | Дедов В | 2h | 2h |
| 1501 | 2.336 | **переключить освещение на автолномный выключатель, запитанный от системы освещения, а не от оборудования.** | 15.38d | 2026-03-05 09:00 A | 2026-03-26 12:00 A |  | 100% |  |  | 13h | 13h |
| 1502 | 2.336.1 | ножевой узел | 1.5h | 2026-03-26 09:00 A | 2026-03-26 10:30 A |  | 100% | start no earlier than 2026-03-26 09:00 | Дедов В; Некрасов А | 3h | 3h |
| 1503 | 2.336.2 | бестром | 1.5h | 2026-03-26 09:00 A | 2026-03-26 10:30 A |  | 100% | start no earlier than 2026-03-26 09:00 | Некрасов А; Дедов В | 3h | 3h |
| 1504 | 2.336.3 | выход с охладителя | 1.5h | 2026-03-26 10:30 A | 2026-03-26 12:00 A | 1502 | 100% | start no earlier than 2026-03-26 09:00 | Дедов В; Некрасов А | 3h | 3h |
| 1505 | 2.336.4 | переключить норию квадропака стационрно, без розетки | 2h | 2026-03-05 09:00 A | 2026-03-05 11:00 A |  | 100% | start no earlier than 2026-03-05 09:00 | Дедов В | 2h | 2h |
| 1506 | 2.336.5 | перемонтаж провода заземления нории квадропак эстетично и удобно для прохода и уборщицы | 2h | 2026-03-05 09:00 A | 2026-03-05 11:00 A |  | 100% | start no earlier than 2026-03-05 09:00 | Дедов В | 2h | 2h |
| 1507 | 2.337 | **сетки на дно печи в зип изготовить** | 10.5d | 2026-03-10 09:00 A | 2026-03-24 13:00 A |  | 100% |  |  | 85h | 85h |
| 1508 | 2.337.1 | заявка сетка уголки | 1h | 2026-03-10 09:00 A | 2026-03-10 10:00 A |  | 100% | start no earlier than 2026-03-10 09:00 | Шуранов Ю | 1h | 1h |
| 1509 | 2.337.2 | доставка | 10d | 2026-03-10 10:00 A | 2026-03-24 10:00 A | 1508 | 100% | start no earlier than 2026-03-06 08:00 | Карабанов | 80h | 80h |
| 1510 | 2.337.3 | изготовление | 4h | 2026-03-24 09:00 A | 2026-03-24 13:00 A | 1509 | 100% | start no earlier than 2026-03-24 09:00 | Тимофеев В | 4h | 4h |
| 1511 | 2.338 | закрепить лоток для совка с спиртом. Изготовить усилит косынку | 2h | 2026-03-07 09:00 A | 2026-03-09 11:00 A |  | 100% | start no earlier than 2026-03-07 09:00 | Бундин В | 2h | 2h |
| 1512 | 2.339 | **установить монтажную коробку квадропак. Инструктаж Шуранов по тлф** | 0.12d | 2026-03-06 08:00 A | 2026-03-06 10:00 A |  | 100% |  | Бундин В | 2h | 2h |
| 1513 | 2.339.1 | Не уходит вода в душевой кабине, посмотреть, устранить. | 1h | 2026-03-06 08:00 A | 2026-03-06 10:00 A |  | 100% | start no earlier than 2026-03-06 08:00 | Бобренок В | 1h | 1h |
| 1514 | 2.340 | ревизия вентиляторов охладителя, не закрываются крышки | 30min | 2026-03-05 09:00 A | 2026-03-05 09:30 A |  | 100% | start no earlier than 2026-03-05 09:00 | Тимофеев В | 0.5h | 0.5h |
| 1515 | 2.341 | **Квадропак** | 0.38d | 2026-03-05 09:00 A | 2026-03-05 12:00 A |  | 100% |  |  | 3h | 3h |
| 1516 | 2.341.1 | Уложить красиво провода на лестнице квадропака цех 2 (созвон с Шурановым) | 3h | 2026-03-05 09:00 A | 2026-03-05 12:00 A |  | 100% | start no earlier than 2026-03-05 09:00 | Дедов В | 3h | 3h |
| 1517 | 2.342 | **Сброс ошибо Н4 и Е9 на кондиционерах** | 0.08d | 2026-03-04 09:00 A | 2026-03-04 09:40 A |  | 100% |  |  | 0.67h | 0.67h |
| 1518 | 2.342.1 | Договориться с оплотом по решению | 30min | 2026-03-04 09:00 A | 2026-03-04 09:30 A |  | 100% | start no earlier than 2026-03-04 09:00 | Зорькин В | 0.5h | 0.5h |
| 1519 | 2.342.2 | устранить ошибки | 10min | 2026-03-04 09:30 A | 2026-03-04 09:40 A | 1518 | 100% | start no earlier than 2026-03-03 08:00 | Зорькин В | 0.17h | 0.17h |
| 1520 | 2.343 | закреить поликарбанат по периметру | 4h | 2026-03-08 09:00 A | 2026-03-09 13:00 A |  | 100% | start no earlier than 2026-03-08 09:00 | Макаревич А | 4h | 4h |
| 1521 | 2.344 | смазать ручки и шарниры дверей | 1h | 2026-03-08 09:00 A | 2026-03-09 10:00 A |  | 100% | start no earlier than 2026-03-08 09:00 | Макаревич А | 1h | 1h |

| ID | WBS | Task | Duration | Start | Finish | Predecessors | Complete | Constraint | Resources | Work | Actual work |
| --- | --- | --- | --- | --- | --- | --- | --- | --- | --- | --- | --- |
| 1522 | 2.345 | **сделать ровным порог вход в мойку экструдера** | 23.5d | 2026-03-03 09:00 A | 2026-04-03 13:00 A |  | 100% |  |  | 86.25h | 86.25h |
| 1523 | 2.345.1 | Показать Олегу порог | 30min | 2026-03-03 09:00 A | 2026-03-03 09:30 A |  | 100% | start no earlier than 2026-03-03 08:00 | Зорькин В; Олег лукас | 1h | 1h |
| 1524 | 2.345.2 | составить план ремонта | 15min | 2026-03-03 09:00 A | 2026-03-03 09:15 A |  | 100% | start no earlier than 2026-03-03 09:00 | Зорькин В; Некрасов А; Труфанов А | 0.75h | 0.75h |
| 1525 | 2.345.3 | составить заявку на материал | 30min | 2026-03-04 09:00 A | 2026-03-04 09:30 A | 1524 | 100% | start no earlier than 2026-03-04 09:00 | Зорькин В | 0.5h | 0.5h |
| 1526 | 2.345.4 | доставка | 10d | 2026-03-04 09:30 A | 2026-03-18 09:30 A | 1525 | 100% | start no earlier than 2026-03-03 08:00 | Карабанов | 80h | 80h |
| 1527 | 2.345.5 | реализация | 4h | 2026-04-03 09:00 A | 2026-04-03 13:00 A | 1526 | 100% | start no earlier than 2026-04-03 09:00 | Олег | 4h | 4h |
| 1528 | 2.346 | востановить профлист. Проход навески экструдер. Обрезками с 3ц, цвет любой | 5h | 2026-03-08 09:00 A | 2026-03-09 15:00 A |  | 100% | start no earlier than 2026-03-08 09:00 | Макаревич А | 5h | 5h |
| 1529 | 2.347 | установить отбойники в проход и углы проезд навесок. Барть с 5а | 4h | 2026-03-09 09:00 A | 2026-03-09 13:00 A |  | 100% | start no earlier than 2026-03-09 09:00 | Макаревич А | 4h | 4h |
| 1530 | 2.348 | **установить отбойники в углы проезд навесок** | 24.25d | 2026-03-13 09:00 A | 2026-04-16 11:00 A |  | 100% |  |  | 82.17h | 82.17h |
| 1531 | 2.348.1 | заявка 2 отбойника | 10min | 2026-03-13 09:00 A | 2026-03-13 09:10 A |  | 100% | start no earlier than 2026-03-13 09:00 | Зорькин В | 0.17h | 0.17h |
| 1532 | 2.348.2 | доставка | 10d | 2026-03-13 09:10 A | 2026-03-27 09:10 A | 1531 | 100% | start no earlier than 2026-03-12 08:00 | Карабанов | 80h | 80h |
| 1533 | 2.348.3 | монтаж | 2h | 2026-04-16 09:00 A | 2026-04-16 11:00 A | 1532 | 100% | start no earlier than 2026-04-16 09:00 | Бундин В | 2h | 2h |
| 1534 | 2.349 | **наростить ножки на бестроме бункер, вместо деревянной** | 3.38d | 2026-03-05 09:00 A | 2026-03-10 12:00 A |  | 100% |  | Макаревич А | 39h | 39h |
| 1535 | 2.349.1 | **мойка** | 0.38d | 2026-03-05 09:00 A | 2026-03-05 12:00 A |  | 100% |  |  | 6h | 6h |
| 1536 | 2.349.1.1 | ревизия вытяжка принудительная из печи (нерж вентилятор), очистка | 3h | 2026-03-05 09:00 A | 2026-03-05 12:00 A |  | 100% | start no earlier than 2026-03-05 09:00 | Некрасов А; Труфанов А | 6h | 6h |
| 1537 | 2.349.2 | ремонт колесо штабелер/замена подшипник | 3h | 2026-03-10 09:00 A | 2026-03-10 12:00 A |  | 100% | start no earlier than 2026-03-10 09:00 | Тимофеев В; Дедов В | 6h | 6h |
| 1538 | 2.350 | **увеличить освещение в зоне квадропака** | 41.88d | 2026-03-02 09:00 A | 2026-04-28 17:00 A |  | 100% |  |  | 101h | 101h |
| 1539 | 2.350.1 | составить список мматериал для монтажа | 30min | 2026-03-02 09:00 A | 2026-03-02 09:30 A |  | 100% | start no earlier than 2026-03-02 09:00 | Труфанов А; Некрасов А; Зорькин В | 1.5h | 1.5h |
| 1540 | 2.350.2 | заявка светильники | 30min | 2026-03-02 09:30 A | 2026-03-02 10:00 A | 1539 | 100% | start no earlier than 2026-02-27 08:00 | Зорькин В | 0.5h | 0.5h |
| 1541 | 2.350.3 | доставка | 10d | 2026-03-02 10:00 A | 2026-03-16 10:00 A | 1540 | 100% | start no earlier than 2026-02-27 08:00 | Карабанов | 80h | 80h |
| 1542 | 2.350.4 | монтаж светильников зона фасовки 8 светильников, операторы помогут | 15h | 2026-04-25 09:00 A | 2026-04-28 17:00 A |  | 100% | start no earlier than 2026-04-25 09:00 | Бобренок В | 15h | 15h |
| 1543 | 2.350.5 | монтаж светильников зона квадропак 1шт - перевесить светильник | 1h | 2026-04-16 09:00 A | 2026-04-16 10:00 A |  | 100% | start no earlier than 2026-04-16 09:00 | Тимофеев В | 1h | 1h |
| 1544 | 2.350.6 | монтаж | 2h | 2026-03-06 09:00 A | 2026-03-06 11:00 A |  | 100% | start no earlier than 2026-03-06 09:00 | Бобренок В | 2h | 2h |
| 1545 | 2.350.7 | **замена сетка печи на мелкую** | 0.12d | 2026-03-02 09:00 A | 2026-03-02 10:00 A |  | 100% |  |  | 1h | 1h |
| 1546 | 2.350.7.1 | согласовать спецификацию / оплата счет | 1h | 2026-03-02 09:00 A | 2026-03-02 10:00 A |  | 100% | start no earlier than 2026-03-02 09:00 | Домоводов К | 1h | 1h |

| ID | WBS | Task | Duration | Start | Finish | Predecessors | Complete | Remaining | Total slack | Free slack | Constraint | Resources | Work | Actual work |
| --- | --- | --- | --- | --- | --- | --- | --- | --- | --- | --- | --- | --- | --- | --- |
| 1547 | 2.351 | **монтаж дозации жира в экструдер** | 34.25d? | 2026-02-27 09:00 A | 2026-04-16 11:00 |  | 38% | 21.26d? | 247.34d |  |  |  | 25h | 15h |
| 1548 | 2.351.1 | монтаж частотного привода | 2h | 2026-02-27 09:00 A | 2026-02-27 11:00 A |  | 100% |  |  |  | start no earlier than 2026-02-27 09:00 | Тимофеев В | 2h | 2h |
| 1549 | 2.351.2 | монтаж трассы гидравлической | 2h | 2026-03-02 09:00 A | 2026-03-02 11:00 A | 1548 | 100% |  |  |  | start no earlier than 2026-03-02 09:00 | Тимофеев В | 2h | 2h |
| 1550 | 2.351.3 | сборка канистры с фитингом | 1h | 2026-03-02 11:00 A | 2026-03-02 12:00 A | 1549 | 100% |  |  |  | start no earlier than 2026-02-26 08:00 | Тимофеев В | 1h | 1h |
| 1551 | 2.351.4 | калибровка на нужный расход | 1h | 2026-03-03 09:00 A | 2026-03-03 10:00 A |  | 100% |  |  |  | start no earlier than 2026-03-03 09:00 | Зорькин В; Тимофеев В | 2h | 2h |
| 1552 | 2.351.5 | испытание | 1h | 2026-03-04 09:00 A | 2026-03-04 10:00 A |  | 100% |  |  |  | start no earlier than 2026-03-04 09:00 | Зорькин В | 1h | 1h |
| 1553 | 2.351.6 | подключить управление насосом синхронно с запуском ножей экструдера. Проложить кабель, изучить параметары, передать по смене что подключать | 4h | 2026-03-04 09:00 | 2026-03-04 13:00 |  |  |  | 278.09d |  | start no earlier than 2026-03-04 09:00 | Дедов В | 4h |  |
| 1554 | 2.351.7 | подключить кабель/ неастроить параметры, что передаст Дедов | 1h | 2026-03-05 09:00 | 2026-03-05 10:00 |  |  |  | 277.47d |  | start no earlier than 2026-03-05 09:00 | Труфанов А | 1h |  |
| 1555 | 2.351.8 | поставка контрллра | 1d? | 2026-03-11 09:00 | 2026-03-11 18:00 |  |  |  | 272.34d | 25d | start no earlier than 2026-03-11 09:00 |  |  |  |
| 1556 | 2.351.9 | подключить контрллера расходомер | 2h | 2026-04-16 09:00 | 2026-04-16 11:00 | 1555 |  |  | 247.34d |  | start no earlier than 2026-04-16 09:00 | Тимофеев В | 2h |  |
| 1557 | 2.351.10 | Прокинуть интерфейсный кабель от черной коробочки до нового частотника на синем бункере (проложить так чтоб ни где ничего не торчало) | 3h | 2026-03-05 09:00 | 2026-03-05 12:00 |  |  |  | 277.22d |  | start no earlier than 2026-03-05 08:00 | Дедов В | 3h |  |
| 1558 | 2.351.11 | сделать регулировку угла наклона приемная воронка конв в охладитель после жира | 3h | 2026-03-05 09:00 A | 2026-03-05 12:00 A |  | 100% |  |  |  | start no earlier than 2026-03-05 09:00 | Некрасов А; Труфанов А | 6h | 6h |
| 1559 | 2.351.12 | сборка и монтаж полка для дез раствора на охладитель | 1h | 2026-03-02 09:00 A | 2026-03-02 10:00 A |  | 100% |  |  |  | start no earlier than 2026-03-02 09:00 | Тимофеев В | 1h | 1h |
| 1560 | 2.352 | **настройка блокировок отключения котла, если отключена приточка** | 130.25d | 2026-03-03 09:00 A | 2026-09-01 11:00 |  | 7% | 120.93d | 149.34d |  |  |  | 86.17h | 6.17h |
| 1561 | 2.352.1 | внести в схему котла блокировку либо от трм 33 либо от частотника | 4h | 2026-03-03 09:00 A | 2026-03-03 13:00 A |  | 100% |  |  |  | start no earlier than 2026-03-03 09:00 | Дедов В | 4h | 4h |
| 1562 | 2.352.2 | Заявка на реле протока воды | 10min | 2026-03-10 09:00 A | 2026-03-10 09:10 A |  | 100% |  |  |  | start no earlier than 2026-03-10 09:00 | Зорькин В | 0.17h | 0.17h |
| 1563 | 2.352.3 | Доставка | 10d | 2026-03-10 09:10 | 2026-03-24 09:10 | 1562 |  |  | 264.57d |  | start no earlier than 2026-03-02 09:00 | Карабанов | 80h |  |
| 1564 | 2.352.4 | Замена | 2h | 2026-09-01 09:00 A | 2026-09-01 11:00 A | 1563 | 100% |  |  |  | start no earlier than 2026-09-01 09:00 | Дедов В | 2h | 2h |
| 1565 | 2.353 | Запрет работы вентилятора если низкая температура калорифера | 2h | 2026-03-12 09:00 A | 2026-03-12 11:00 A |  | 100% |  |  |  | start no earlier than 2026-03-12 09:00 | Дедов В | 2h | 2h |
| 1566 | 2.354 | **установить на охладитель ролики + скольжение трубы** | 33d? | 2026-09-01 09:00 | 2026-10-05 18:00 |  |  |  | 116.59d |  |  |  | 10h |  |
| 1567 | 2.354.1 | печать кронштейнов | 2h | 2026-09-01 09:00 | 2026-09-01 11:00 |  |  |  | 149.34d |  | start no earlier than 2026-09-01 09:00 | Домоводов К | 2h |  |
| 1568 | 2.354.2 | установить держатели труб | 1d? | 2026-10-05 09:00 | 2026-10-05 18:00 |  |  |  | 116.59d |  | start no earlier than 2026-10-05 09:00 | Тимофеев В | 8h |  |
| 1569 | 2.355 | **установить паровопровод для очистки сетки печи на мойке парогенератором** | 8.75d | 2026-03-02 09:00 A | 2026-03-12 16:00 A |  | 100% |  |  |  |  |  | 18.5h | 18.5h |
| 1570 | 2.355.1 | проверка фитингов | 30min | 2026-03-02 09:00 A | 2026-03-02 09:30 A |  | 100% |  |  |  | start no earlier than 2026-03-02 09:00 | Зорькин В | 0.5h | 0.5h |
| 1571 | 2.355.2 | монтаж | 2h | 2026-03-05 09:00 A | 2026-03-05 11:00 A | 1570 | 100% |  |  |  | start no earlier than 2026-03-05 09:00 | Тимофеев В | 2h | 2h |

| ID | WBS | Task | Type | Duration | Start | Finish | Predecessors | Complete | Total slack | Free slack | Constraint | Resources | Work | Actual work |
| --- | --- | --- | --- | --- | --- | --- | --- | --- | --- | --- | --- | --- | --- | --- |
| 1572 | 2.355.3 | **лоток с транспортера в барабан. Большой** |  | 2.75d | 2026-03-10 09:00 A | 2026-03-12 16:00 A |  | 100% |  |  |  |  | 16h | 16h |
| 1573 | 2.355.3.1 | изготовить из листа лоток. Заготовку 612*965 с пропилами для сгиба по чертежу |  | 4h | 2026-03-10 09:00 A | 2026-03-10 13:00 A |  | 100% |  |  | start no earlier than 2026-03-10 09:00 | Макаревич А | 4h | 4h |
| 1574 | 2.355.3.2 | подготовить раму крепежа |  | 4h | 2026-03-12 09:00 A | 2026-03-12 13:00 A | 1573 | 100% |  |  | start no earlier than 2026-03-12 09:00 | Некрасов А; Труфанов А | 8h | 8h |
| 1575 | 2.355.3.3 | монтаж |  | 2h | 2026-03-12 14:00 A | 2026-03-12 16:00 A | 1574 | 100% |  |  | start no earlier than 2026-02-27 08:00 | Некрасов А; Труфанов А | 4h | 4h |
| 1576 | 2.356 | **установка ворот шлюз в проходе вент камеры** |  | 119d? | 2026-02-24 09:00 A | 2026-08-09 13:00 A |  | 100% |  |  |  |  | 163.5h | 163.5h |
| 1577 | 2.356.1 | изготовить и установить шпингалеты |  | 4h | 2026-02-27 09:00 A | 2026-02-27 13:00 A |  | 100% |  |  | start no earlier than 2026-02-27 09:00 | Некрасов А; Бобренок В | 8h | 8h |
| 1578 | 2.356.2 | установка петель, транспортировка, монтаж |  | 1d? | 2026-02-24 09:00 A | 2026-02-24 18:00 A |  | 100% |  |  | start no earlier than 2026-02-24 09:00 | Труфанов А; Некрасов А | 16h | 16h |
| 1579 | 2.356.3 | установить полосу притвора |  | 3h | 2026-02-27 09:00 A | 2026-02-27 12:00 A |  | 100% |  |  | start no earlier than 2026-02-28 09:00 | Бобренок В | 3h | 3h |
| 1580 | 2.356.4 | установить силиконовые уплотнители на пол |  | 2h | 2026-02-26 09:00 A | 2026-02-26 11:00 A |  | 100% |  |  | start no earlier than 2026-02-26 08:00 | Некрасов А | 2h | 2h |
| 1581 | 2.356.5 | заявка доводчики, шпингалеты |  | 30min | 2026-03-02 09:00 A | 2026-03-02 09:30 A |  | 100% |  |  | start no earlier than 2026-03-02 09:00 | Зорькин В | 0.5h | 0.5h |
| 1582 | 2.356.6 | доставка |  | 10d | 2026-03-02 09:30 A | 2026-03-16 09:30 A | 1581 | 100% |  |  | start no earlier than 2026-02-27 08:00 | Карабанов | 80h | 80h |
| 1583 | 2.356.7 | монтаж шпингалетов |  | 2h | 2026-03-25 09:00 A | 2026-03-25 11:00 A | 1582 | 100% |  |  | start no earlier than 2026-03-25 09:00 | Бобренок В | 2h | 2h |
| 1584 | 2.356.8 | **установить концевики блокировки открывания роль ворот, если не закрыты шлюз** |  | 109d | 2026-03-10 09:00 A | 2026-08-09 13:00 A |  | 100% |  |  |  |  | 52h | 52h |
| 1585 | 2.356.8.1 | **установить доводчики на ворота в зоне навесок** |  | 0.25d | 2026-06-14 09:00 A | 2026-06-15 11:00 A |  | 100% |  |  |  |  | 2h | 2h |
| 1586 | 2.356.8.1.1 | пробурить для задвижек ворот в полу отверстия -фиксация для проезда штабелера |  | 2h | 2026-06-14 09:00 A | 2026-06-15 11:00 A |  | 100% |  |  | start no earlier than 2026-06-14 09:00 | Бобренок В | 2h | 2h |
| 1587 | 2.356.8.2 | составить список материалов |  | 30min | 2026-03-10 09:00 A | 2026-03-10 09:30 A |  | 100% |  |  | start no earlier than 2026-03-10 09:00 | Дедов В | 0.5h | 0.5h |
| 1588 | 2.356.8.3 | заявка |  | 30min | 2026-03-10 09:30 A | 2026-03-10 10:00 A | 1587 | 100% |  |  | start no earlier than 2026-03-03 09:00 | Зорькин В | 0.5h | 0.5h |
| 1589 | 2.356.8.4 | доставка |  | 5d | 2026-03-10 10:00 A | 2026-03-17 10:00 A | 1588 | 100% |  |  | start no earlier than 2026-02-27 08:00 | Карабанов | 40h | 40h |
| 1590 | 2.356.8.5 | монтаж датчиков на двери / доводчиков. | manual | 4h | 2026-08-09 09:00 A | 2026-08-09 13:00 A | 1589 | 100% |  |  | start no earlier than 2026-08-09 09:00 | Бундин В | 4h | 4h |
| 1591 | 2.356.8.6 | монтаж кабеля от датчиков до блока рольворот, не подключать | manual | 4h | 2026-08-09 09:00 A | 2026-08-09 13:00 A | 1590 | 100% |  |  | start no earlier than 2026-08-09 09:00 | Бундин В | 4h | 4h |
| 1592 | 2.356.8.7 | установить концевики на ворота - установить закладные под них | manual | 1h | 2026-08-08 09:00 A | 2026-08-08 10:00 A |  | 100% |  |  | start no earlier than 2026-08-08 09:00 | Бундин В | 1h | 1h |
| 1593 | 2.357 | **схема блокировки роль ворот при открытым шлюзе + авт закрытие + датчик препятствия** |  | 24.5d | 2026-11-02 09:00 | 2026-11-30 13:00 |  |  | 72.09d |  |  |  | 12h |  |
| 1594 | 2.357.1 | разработка схемы |  | 4h | 2026-11-02 09:00 | 2026-11-02 13:00 |  |  | 94.59d | 22.5d | start no earlier than 2026-11-02 09:00 | Домоводов К; Дедов В | 8h |  |
| 1595 | 2.357.2 | монтаж |  | 4h | 2026-11-30 09:00 | 2026-11-30 13:00 | 1594FS+1d |  | 72.09d |  | start no earlier than 2026-11-30 09:00 | Труфанов А | 4h |  |
| 1596 | 2.358 | ремонт нижних сеток печи просева гранулы |  | 4h | 2025-01-23 09:00 A | 2025-01-23 13:00 A |  | 100% |  |  | start no earlier than 2025-01-23 09:00 | Черепанов И | 4h | 4h |

| ID | WBS | Task | Type | Duration | Start | Finish | Predecessors | Complete | Remaining | Total slack | Free slack | Constraint | Resources | Work | Actual work |
| --- | --- | --- | --- | --- | --- | --- | --- | --- | --- | --- | --- | --- | --- | --- | --- |
| 1597 | 2.359 | **замена реле безопасности бойлер ж** |  | 91.12d | 2024-10-16 09:00 A | 2025-02-20 10:00 A |  | 100% |  |  |  |  |  | 82h | 82h |
| 1598 | 2.359.1 | заЯВка |  | 1h | 2024-10-16 09:00 A | 2024-10-16 10:00 A |  | 100% |  |  |  | start no earlier than 2024-10-16 09:00 | Зорькин В | 1h | 1h |
| 1599 | 2.359.2 | доставка |  | 10d | 2024-10-16 10:00 A | 2024-10-30 10:00 A | 1598 | 100% |  |  |  | start no earlier than 2024-10-16 09:00 | Мультан | 80h | 80h |
| 1600 | 2.359.3 | замена |  | 1h | 2025-02-20 09:00 A | 2025-02-20 10:00 A | 1599 | 100% |  |  |  | start no earlier than 2025-02-20 09:00 | Некрасов А | 1h | 1h |
| 1601 | 2.360 | **установить пульты на регулировку шибиров вентиляции** |  | 49d? | 2026-08-31 09:00 | 2026-10-23 18:00 |  |  |  | 101.59d |  |  |  | 90h |  |
| 1602 | 2.360.1 | заявка на блок питания, шкаф управления, кабель |  | 2h | 2026-08-31 09:00 | 2026-08-31 11:00 |  |  |  | 139.34d | 0d | start no earlier than 2026-08-31 09:00 | Домоводов К | 2h |  |
| 1603 | 2.360.2 | доставка |  | 10d | 2026-08-31 11:00 | 2026-09-11 11:00 | 1602 |  |  | 139.34d | 37.75d | start no earlier than 2024-05-08 08:00 | Мультан | 80h |  |
| 1604 | 2.360.3 | монтаж |  | 1d? | 2026-10-23 09:00 | 2026-10-23 18:00 | 1603 |  |  | 101.59d |  | start no earlier than 2026-10-23 09:00 | Некрасов А | 8h |  |
| 1605 | 2.361 | заменить местами 2 зеркала маленький и большой бункер |  | 4h | 2024-10-03 09:00 | 2024-10-03 13:00 |  |  |  | 647.09d |  | start no earlier than 2024-10-03 09:00 | Черепанов И | 4h |  |
| 1606 | 2.362 | установить провод заземления на дверь шкафа упр сушки |  | 1h | 2024-01-08 09:00 | 2024-01-08 10:00 |  |  |  | 840.47d |  | start no earlier than 2024-01-06 09:00 | Тимофеев В | 1h |  |
| 1607 | 2.363 | **Палетообмотчик** |  | 50.06d | 2026-05-19 09:00 A | 2026-07-28 09:30 A |  | 100% |  |  |  |  |  | 80.67h | 80.67h |
| 1608 | 2.363.1 | заказать цепь |  | 10min | 2026-05-19 09:00 A | 2026-05-19 09:10 A |  | 100% |  |  |  | start no earlier than 2026-05-19 08:00 | Зорькин В | 0.17h | 0.17h |
| 1609 | 2.363.2 | доставка |  | 10d | 2026-05-29 09:00 A | 2026-06-11 18:00 A |  | 100% |  |  |  | start no earlier than 2026-05-29 09:00 | Карабанов | 80h | 80h |
| 1610 | 2.363.3 | замена цепи на вход в зону палетирования на складе взять 10М оцинкованная 3мм | manual | 30min | 2026-07-28 09:00 A | 2026-07-28 09:30 A |  | 100% |  |  |  | start no earlier than 2026-07-28 09:00 | Макаревич А | 0.5h | 0.5h |
| 1611 | 2.364 | Изготовить полочки из нержавейки по образцу на 18 баночек еще 2 шт |  | 3h | 2026-07-24 09:00 A | 2026-07-24 12:00 A |  | 100% |  |  |  | start no earlier than 2026-07-24 09:00 | Бундин В | 3h | 3h |
| 1612 | 2.365 | **отмена** |  | 97.31d? | 2026-08-11 09:00 A | 2026-12-07 11:30 |  | 5% | 92.89d? | 67.28d |  |  |  | 11h | 0.5h |
| 1613 | 2.365.1 | **найти места утечки тепла под потолком- перемерзает труба подачи воды в 3 цех** |  | 97.31d? | 2026-08-11 09:00 A | 2026-12-07 11:30 |  | 5% | 92.89d? | 67.28d |  |  |  | 11h | 0.5h |
| 1614 | 2.365.1.1 | вспомнить из-за чего холод под потолком? Какие нужны мероприятия?- никто не помнит |  | 15min | 2026-08-11 09:00 A | 2026-08-11 09:15 A |  | 100% |  |  |  | start no earlier than 2026-08-11 09:00 | Некрасов А | 0.25h | 0.25h |
| 1615 | 2.365.1.2 | подать олегу заявку |  | 15min | 2026-08-31 09:00 A | 2026-08-31 09:15 A |  | 100% |  |  |  | start no earlier than 2026-08-31 09:00 | Зорькин В | 0.25h | 0.25h |
| 1616 | 2.365.1.3 | проверка пирометром / тепловизором |  | 2h | 2026-11-20 09:00 | 2026-11-20 11:00 |  |  |  | 67.28d | 0d | start no earlier than 2026-11-20 09:00 | Некрасов А | 2h |  |
| 1617 | 2.365.1.4 | заявка (подумать материал) |  | 15min | 2026-11-20 11:00 | 2026-11-20 11:15 | 1616 |  |  | 67.28d | 0d | start no earlier than 2026-08-13 09:00 | Зорькин В | 0.25h |  |
| 1618 | 2.365.1.5 | доставка- контроль |  | 15min | 2026-12-04 11:15 | 2026-12-04 11:30 | 1617FS+10d |  |  | 67.28d | 0d | start no earlier than 2026-08-12 09:00 | Зорькин В | 0.25h |  |
| 1619 | 2.365.1.6 | монтаж |  | 1d? | 2026-12-04 11:30 | 2026-12-07 11:30 | 1618 |  |  | 67.28d |  | start no earlier than 2026-08-11 09:00 | Тимофеев В | 8h |  |
| 1620 | 2.366 | **вентиляция** |  | 11.25d | 2026-08-13 09:00 A | 2026-08-28 11:00 A |  | 100% |  |  |  |  |  | 4h | 4h |
| 1621 | 2.366.1 | Монтаж частотников на ШУ | manual | 2h | 2026-08-13 09:00 A | 2026-08-13 11:00 A |  | 100% |  |  |  | start no earlier than 2026-08-13 09:00 | Труфанов А | 2h | 2h |
| 1622 | 2.366.2 | В ШУ вырезать окна для частотников в двери, закрыть оргстеклом. Желательно на шарниры. |  | 2h | 2026-08-28 09:00 A | 2026-08-28 11:00 A |  | 100% |  |  |  | start no earlier than 2026-08-31 09:00 | Бундин В | 2h | 2h |

| ID | WBS | Task | Duration | Start | Finish | Predecessors | Complete | Remaining | Total slack | Free slack | Constraint | Resources | Work | Actual work |
| --- | --- | --- | --- | --- | --- | --- | --- | --- | --- | --- | --- | --- | --- | --- |
| 1623 | 2.367 | **Синий бункер** | 0.25d | 2026-07-30 09:00 A | 2026-07-30 11:00 A |  | 100% |  |  |  |  |  | 4h | 4h |
| 1624 | 2.367.1 | Ремонт синего бункера в зоне вибратора | 2h | 2026-07-30 09:00 A | 2026-07-30 11:00 A |  | 100% |  |  |  | start no earlier than 2026-07-30 09:00 | Труфанов А; Бундин В | 4h | 4h |
| 1625 | 2.368 | **Охладитель** | 0.38d | 2026-07-30 09:00 A | 2026-07-30 12:00 A |  | 100% |  |  |  |  |  | 3h | 3h |
| 1626 | 2.368.1 | Установка защиты сетки на полозья/направляющие, спросить Зорькина | 3h | 2026-07-30 09:00 A | 2026-07-30 12:00 A |  | 100% |  |  |  | start no earlier than 2026-07-30 09:00 | Тимофеев В | 3h | 3h |
| 1627 | 2.369 | Осмотреть/устранить течь раковины возле туалета | 1h | 2026-07-29 08:00 A | 2026-07-29 10:00 A |  | 100% |  |  |  | start no earlier than 2026-07-29 08:00 | Дедов В | 1h | 1h |
| 1628 | 3 | **3 цех** | 338.28d? | 2025-09-01 09:00 A | 2026-11-30 11:15 |  | 81% | 65.13d? | 72.31d |  |  |  | 1384h | 1116h |
| 1629 | 3.1 | Установить частотник на вращение барабанов 3 цех | 1h | 2026-11-17 09:00 | 2026-11-17 10:00 |  |  |  | 81.47d |  | start no earlier than 2026-11-17 09:00 | Дедов В | 1h |  |
| 1630 | 3.2 | Тест оборудование перед запуском | 2h | 2026-11-17 09:00 | 2026-11-17 11:00 | 1636 |  |  | 81.34d |  |  | Тимофеев В | 2h |  |
| 1631 | 3.3 | Тест печки с кормом, на поток гранулы, попадает ли к цепям или нет, как работает модернизация. | 2h | 2026-11-16 09:00 | 2026-11-16 11:00 |  |  |  | 82.34d |  | start no earlier than 2026-11-16 08:00 | Макаревич А; Николаев | 4h |  |
| 1632 | 3.4 | Установить на место ссыпную воронку после печи, сделать упоры? | 1h | 2026-11-16 09:00 A | 2026-11-16 10:00 A |  | 100% |  |  |  | start no earlier than 2026-11-16 08:00 | Труфанов А; Некрасов А | 2h | 2h |
| 1633 | 3.5 | доработаь рукоятку переключения брака после ножейчто бы фиксировалась в закрытом положении. Времянку убрать | 1h | 2026-11-14 09:00 A | 2026-11-14 10:00 A |  | 100% |  |  |  | start no earlier than 2026-11-14 09:00 | Макаревич А | 1h | 1h |
| 1634 | 3.6 | удалить смазку с цепи сетки печи. Спирт получить на складе/развести по инструкции. Все этажи. Уголок попробывать закрепить тряпку к цепи. | 6h | 2026-11-14 09:00 A | 2026-11-14 16:00 A |  | 100% |  |  |  | start no earlier than 2026-11-14 09:00 | Бундин В | 6h | 6h |
| 1635 | 3.7 | смазка цепей печи пищевой смазкой. Не борщить. | 6h | 2026-11-15 09:00 A | 2026-11-15 16:00 A |  | 100% |  |  |  | start no earlier than 2026-11-15 09:00 | Бундин В | 6h | 6h |
| 1636 | 3.8 | доработать ловушки гранулы между этажами, что бы не разлеталась - образец от Тимофеева + удлинить 20-30см по ходу сетки. Все этажи | 8h | 2026-11-16 09:00 | 2026-11-16 18:00 |  |  |  | 81.34d | 0d | start no earlier than 2026-11-16 09:00 | Николаев; Макаревич А | 16h |  |
| 1637 | 3.9 | вырезть окна в лотке после печи для сброса в ведро/мешок гранулы 10см от цепи привода сетки. Крепление для ведра/мешка | 4h | 2026-11-15 09:00 A | 2026-11-15 13:00 A |  | 100% |  |  |  | start no earlier than 2026-11-15 09:00 | Макаревич А; Николаев | 8h | 8h |
| 1638 | 3.10 | монтаж светильник над раковина жиры | 2h | 2026-11-13 09:00 A | 2026-11-13 11:00 A |  | 100% |  |  |  | start no earlier than 2026-11-13 08:00 | Бундин В | 2h | 2h |
| 1639 | 3.11 | установить розетку для весов гидролизата | 1h | 2026-11-13 09:00 | 2026-11-13 10:00 |  |  |  | 85.47d |  | start no earlier than 2026-11-13 08:00 | Бундин В | 1h |  |
| 1640 | 3.12 | полку для канистры гидролизата нарастить на 20 см, проверить что бы вошли весы | 3h | 2026-11-18 09:00 | 2026-11-18 12:00 |  |  |  | 80.22d |  | start no earlier than 2026-11-18 09:00 | Макаревич А; Николаев | 6h |  |
| 1641 | 3.13 | **Установить частотный преобразователь на барабан этра** | 10.28d | 2026-11-16 09:00 | 2026-11-30 11:15 |  |  |  | 72.31d |  |  |  | 82.25h |  |
| 1642 | 3.13.1 | заявка частотники | 15min | 2026-11-16 09:00 | 2026-11-16 09:15 |  |  |  | 72.31d | 0d | start no earlier than 2026-11-16 09:00 | Зорькин В | 0.25h |  |
| 1643 | 3.13.2 | доставка конроль | 10d | 2026-11-16 09:15 | 2026-11-30 09:15 | 1642 |  |  | 72.31d | 0d | start no earlier than 2026-11-13 08:00 | Зорькин В | 80h |  |
| 1644 | 3.13.3 | монтаж | 2h | 2026-11-30 09:15 | 2026-11-30 11:15 | 1643 |  |  | 72.31d |  | start no earlier than 2026-11-13 08:00 | Тимофеев В | 2h |  |
| 1645 | 3.14 | Найти кабель от щитка вентиляции 2 этаж бытовой комплекс (позвонить косте) распред щиток 1 этаж 3 колонна справа | 1h | 2026-11-12 09:00 A | 2026-11-12 10:00 A |  | 100% |  |  |  | start no earlier than 2026-11-12 08:00 | Бундин В | 1h | 1h |
| 1646 | 3.15 | Герметизация слива в душах (герметиком санитарным) | 2h | 2026-11-15 09:00 | 2026-11-15 11:00 |  |  |  | 83.34d |  | start no earlier than 2026-11-15 09:00 | Макаревич А; Николаев | 4h |  |

| ID | WBS | Task | Type | Duration | Start | Finish | Predecessors | Complete | Remaining | Total slack | Free slack | Constraint | Resources | Work | Actual work |
| --- | --- | --- | --- | --- | --- | --- | --- | --- | --- | --- | --- | --- | --- | --- | --- |
| 1647 | 3.16 | **Врезать вентилятор в курилку и подключить** |  | 10.56d | 2026-11-13 09:00 A | 2026-11-25 14:30 |  |  | 10.52d | 75.03d |  |  |  | 61.25h | 0.25h |
| 1648 | 3.16.1 | заявка вентилятор |  | 15min | 2026-11-13 09:00 A | 2026-11-13 09:15 A |  | 100% |  |  |  | start no earlier than 2026-11-13 08:00 | Домоводов К | 0.25h | 0.25h |
| 1649 | 3.16.2 | заявка обратный клапан/тройник/дифузоры на вентилятор ВК200Б |  | 30min | 2026-11-16 09:00 | 2026-11-16 09:30 |  |  |  | 75.03d | 0d | start no earlier than 2026-11-16 09:00 | Зорькин В; Труфанов А | 1h |  |
| 1650 | 3.16.3 | доставка контроль |  | 7d | 2026-11-16 09:30 | 2026-11-25 09:30 | 1648, 1649 |  |  | 75.03d | 0d | start no earlier than 2026-11-13 08:00 | Зорькин В | 56h |  |
| 1651 | 3.16.4 | монтаж |  | 4h | 2026-11-25 09:30 | 2026-11-25 14:30 | 1650 |  |  | 75.03d |  | start no earlier than 2026-11-13 08:00 | Тимофеев В | 4h |  |
| 1652 | 3.17 | Срезать перемычки на загрузке жиров, мешают паллетам |  | 1h | 2026-11-19 09:00 | 2026-11-19 10:00 |  |  |  | 79.47d |  | start no earlier than 2026-11-19 09:00 | Бундин В | 1h |  |
| 1653 | 3.18 | Посмотреть работу нотиса возле стены, который долго запускался, сыпит без остановки, не срабатывает по весу (буду звонить производителям потом если не справимся сами) |  | 2h | 2026-11-14 09:00 | 2026-11-14 11:00 |  |  |  | 84.34d |  | start no earlier than 2026-11-14 09:00 | Макаревич А; Николаев | 4h |  |
| 1654 | 3.19 | Доработать конвейер на нотисах, много сыпит вниз в щели |  | 4h | 2026-11-15 09:00 | 2026-11-15 13:00 |  |  |  | 83.09d |  | start no earlier than 2026-11-15 09:00 | Макаревич А; Николаев | 8h |  |
| 1655 | 3.20 | Сделать свет на выходе из охладителя, над полибоксом |  | 2h | 2026-11-13 09:00 | 2026-11-13 11:00 |  |  |  | 85.34d |  | start no earlier than 2026-11-13 09:00 | Бундин В | 2h |  |
| 1656 | 3.21 | Сделать доп свет на экструдере, повешать на козырек центральный, между печкой и прекондером, повесить на край ближе к стене |  | 4h | 2026-11-14 09:00 | 2026-11-14 13:00 |  |  |  | 84.09d |  | start no earlier than 2026-11-14 09:00 | Макаревич А; Николаев | 8h |  |
| 1657 | 3.22 | Ремонт насоса гидролизата, выяснить причину отсутствия вращения шнека/восстановить. Вслучае отсутствия возможности восстановить, получить на складе и установить насос НШГ, подключить его к канистре |  | 4h | 2026-11-11 09:00 A | 2026-11-11 13:00 A |  | 100% |  |  |  | start no earlier than 2026-11-11 08:00 | Дедов В | 4h | 4h |
| 1658 | 3.23 | **Освещение дражжировки** |  | 0.38d | 2026-11-11 09:00 A | 2026-11-11 12:00 A |  | 100% |  |  |  |  |  | 4h | 4h |
| 1659 | 3.23.1 | Повесить светильники на зонтики, взять любые длинные |  | 3h | 2026-11-11 09:00 A | 2026-11-11 12:00 A |  | 100% |  |  |  | start no earlier than 2026-11-11 08:00 | Дедов В | 3h | 3h |
| 1660 | 3.23.2 | Повесить светильник со стороны входа в барабан (не видно, как льется жир) |  | 1h | 2026-11-11 09:00 A | 2026-11-11 10:00 A |  | 100% |  |  |  | start no earlier than 2026-11-11 08:00 | Бундин В | 1h | 1h |
| 1661 | 3.24 | Поставить продувку на парогенераторе каждые 2ч интервал продувки 2 секунды. |  | 30min | 2026-11-10 09:00 A | 2026-11-10 09:30 A |  | 100% |  |  |  | start no earlier than 2026-11-10 08:00 | Дедов В | 0.5h | 0.5h |
| 1662 | 3.25 | Изготовить площадку для засыпки сухого гидролизата, за основу взять раму у 5 цеха |  | 4h | 2026-11-11 09:00 | 2026-11-11 13:00 |  |  |  | 87.09d |  | start no earlier than 2026-11-11 09:00 | Труфанов А; Некрасов А | 8h |  |
| 1663 | 3.26 | Поставить 2 светильника в туалеты 2 этаж |  | 1h | 2026-11-13 09:00 | 2026-11-13 10:00 |  |  |  | 85.47d |  | start no earlier than 2026-11-13 09:00 | Бундин В | 1h |  |
| 1664 | 3.27 | Сделать колесики на площадку для чистки прикондера |  | 2h | 2026-11-11 09:00 A | 2026-11-11 11:00 A |  | 100% |  |  |  | start no earlier than 2026-11-11 09:00 | Труфанов А; Некрасов А | 4h | 4h |
| 1665 | 3.28 | Поставить запайщики, подключить педаль, по местам, проверить работоспособность |  | 1h | 2026-11-10 09:00 A | 2026-11-10 10:00 A |  | 100% |  |  |  | start no earlier than 2026-11-10 08:00 | Дедов В | 1h | 1h |
| 1666 | 3.29 | Проверить нотисы, восстановить разъемы, восстановить снабжение сжатого воздуха |  | 1h | 2026-11-10 09:00 A | 2026-11-10 10:00 A |  | 100% |  |  |  | start no earlier than 2026-11-10 08:00 | Дедов В | 1h | 1h |
| 1667 | 3.30 | отключить кабель нории, убрать с пола / консервация |  | 1h | 2026-11-10 09:00 A | 2026-11-10 10:00 A |  | 100% |  |  |  | start no earlier than 2026-11-10 09:00 | Бундин В | 1h | 1h |
| 1668 | 3.31 | перемещение нории |  | 1h | 2026-11-10 09:00 A | 2026-11-10 10:00 A |  | 100% |  |  |  | start no earlier than 2026-11-10 09:00 | Некрасов А; Тимофеев В; Труфанов А | 3h | 3h |
| 1669 | 3.32 | закрыть 2 щели из 3х на шнеке сухой гидролизат |  | 1h | 2026-11-10 09:00 A | 2026-11-10 10:00 A |  | 100% |  |  |  | start no earlier than 2026-11-10 09:00 | Тимофеев В | 1h | 1h |
| 1670 | 3.33 | уборка железо на пандусе. Весь мсор / зип с цеха. Перемещение по складам |  | 2h | 2026-11-10 09:00 A | 2026-11-10 11:00 A |  | 100% |  |  |  | start no earlier than 2026-11-10 09:00 | Некрасов А; Труфанов А | 4h | 4h |
| 1671 | 3.34 | Собрать кухонный гарнитур | manual | 4h | 2026-11-08 09:00 A | 2026-11-08 13:00 A |  | 100% |  |  |  | start no earlier than 2026-11-08 09:00 | Макаревич А; Николаев | 8h | 8h |
| 1672 | 3.35 | монтаж раковина покупка за нал всесь комплект с курьером |  | 5h | 2026-11-09 09:00 A | 2026-11-09 15:00 A |  | 100% |  |  |  | start no earlier than 2026-11-09 08:00 | Тимофеев В | 5h | 5h |
| 1673 | 3.36 | переложить шланг слива давления масла, что бы был хороший поток (Дедов обнаружил плохой слив) |  | 2h | 2026-11-09 09:00 A | 2026-11-09 11:00 A |  | 100% |  |  |  | start no earlier than 2026-11-09 08:00 | Макаревич А | 2h | 2h |

| ID | WBS | Task | Type | Duration | Start | Finish | Complete | Remaining | Total slack | Constraint | Resources | Work | Actual work |
| --- | --- | --- | --- | --- | --- | --- | --- | --- | --- | --- | --- | --- | --- |
| 1674 | 3.37 | **Маслонасосная станция** |  | 1.25d | 2026-11-09 09:00 A | 2026-11-10 11:00 A | 100% |  |  |  |  | 8h | 8h |
| 1675 | 3.37.1 | Тест маслонасосной станции с открытой крышкой редуктора . Доделать схему, решение о гистерезисе на реле времени | manual | 4h | 2026-11-09 09:00 A | 2026-11-09 13:00 A | 100% |  |  | start no earlier than 2026-11-09 09:00 | Дедов В | 4h | 4h |
| 1676 | 3.37.2 | Поменять геркон на маслонасосной станции и запускать контактор через промежуточное реле (от катушки пускателя геркон сгорел) |  | 2h | 2026-11-10 09:00 A | 2026-11-10 11:00 A | 100% |  |  | start no earlier than 2026-11-10 09:00 | Дедов В | 2h | 2h |
| 1677 | 3.37.3 | Разработка и установка схемы сигнализации маслонасосной станции экструдера |  | 2h | 2026-11-10 09:00 A | 2026-11-10 11:00 A | 100% |  |  | start no earlier than 2026-11-10 09:00 | Дедов В | 2h | 2h |
| 1678 | 3.38 | Тест печей (на просадку температур) 3 и 4 зона, сначало нагреть, потом отключить первые контуры постоянного нагрева | manual | 2h | 2026-11-08 09:00 A | 2026-11-08 11:00 A | 100% |  |  | start no earlier than 2026-11-08 09:00 | Тимофеев В; Дедов В | 4h | 4h |
| 1679 | 3.39 | Пусконаладка подогрева приточной вентиляции |  | 4h | 2026-11-06 09:00 A | 2026-11-06 13:00 A | 100% |  |  | start no earlier than 2026-11-06 09:00 | Труфанов А; Некрасов А | 8h | 8h |
| 1680 | 3.40 | устанговить датчик температуры от котла ZOTA. Тест |  | 2h | 2026-11-09 09:00 A | 2026-11-09 11:00 A | 100% |  |  | start no earlier than 2026-11-09 08:00 | Труфанов А | 2h | 2h |
| 1681 | 3.41 | Отвод пара трубой ближе к всасывающему отверстию зонтика на прекондиционере | manual | 2h | 2026-11-09 09:00 A | 2026-11-09 11:00 A | 100% |  |  | start no earlier than 2026-11-09 09:00 | Некрасов А; Труфанов А | 4h | 4h |
| 1682 | 3.42 | Наклеить надписи на шкафу управления смесителями |  | 1h | 2026-11-10 09:00 A | 2026-11-10 10:00 A | 100% |  |  | start no earlier than 2026-11-10 09:00 | Зорькин В; Тимофеев В | 2h | 2h |
| 1683 | 3.43 | Тест парогенератора (слить воду с бачка, зафиксировать уровень в нем, погонять несколько часов, проверить бачок, если вода увеличилась, скорее всего вырубался) | manual | 3h | 2026-11-08 09:00 A | 2026-11-08 12:00 A | 100% |  |  | start no earlier than 2026-11-08 09:00 | Дедов В | 3h | 3h |
| 1684 | 3.44 | **парогенератор скидывает давление до 0 на продувке** |  | 0.25d | 2026-11-09 09:00 A | 2026-11-09 11:00 | 92% | 0.02d | 89.34d |  |  | 5.25h | 5h |
| 1685 | 3.44.1 | настройка продувки парогенератора что бы не сдувался до 0 |  | 2h | 2026-11-09 09:00 A | 2026-11-09 11:00 A | 100% |  |  | start no earlier than 2026-11-09 08:00 | Дедов В; Зорькин В | 4h | 4h |
| 1686 | 3.44.2 | запрос программы |  | 15min | 2026-11-09 09:00 | 2026-11-09 09:15 |  |  | 89.56d | start no earlier than 2026-11-09 08:00 | Зорькин В | 0.25h |  |
| 1687 | 3.44.3 | тест работы ПГ с откл краном сброса давления / продувки |  | 1h | 2026-11-09 09:00 A | 2026-11-09 10:00 A | 100% |  |  | start no earlier than 2026-11-10 09:00 | Дедов В | 1h | 1h |
| 1688 | 3.45 | Ревизия редуктора шнека, проверить масло, шнек подачи сырья в прекондиционер |  | 30min | 2026-11-10 09:00 | 2026-11-10 09:30 |  |  | 88.53d | start no earlier than 2026-11-10 09:00 | Труфанов А | 0.5h |  |
| 1689 | 3.46 | Поставить вибратор на приемную воронку после смесителя, шнек подачи сырья в прекондиционер |  | 2h | 2026-11-10 09:00 | 2026-11-10 11:00 |  |  | 88.34d | start no earlier than 2026-11-10 09:00 | Бундин В | 2h |  |
| 1690 | 3.47 | Поставить розетку рядом с мойкой на жирах для насоса |  | 1h | 2026-11-05 09:00 A | 2026-11-05 10:00 A | 100% |  |  | start no earlier than 2026-11-05 08:00 | Бобренок В | 1h | 1h |
| 1691 | 3.48 | Изготовить козырек на выходе эктрудера (доработать откидную лопатку) |  | 4h | 2026-11-07 09:00 A | 2026-11-07 13:00 A | 100% |  |  | start no earlier than 2026-11-07 09:00 | Макаревич А; Николаев | 8h | 8h |
| 1692 | 3.49 | Установка 2-х бойлеров по 100л, на женскую раздевалку и мужскую, определить контуры магистрали воды, определить где находится закладная |  | 3h | 2026-11-06 09:00 A | 2026-11-06 12:00 A | 100% |  |  | start no earlier than 2026-11-06 09:00 | Бобренок В | 3h | 3h |
| 1693 | 3.50 | В зоне фасовке, ВРУ куда подключен квадропак и нории, автомат QF4 при включении искрит - устранить | manual | 1h | 2026-10-31 09:00 A | 2026-10-31 10:00 A | 100% |  |  | start no earlier than 2026-10-31 09:00 | Дедов В | 1h | 1h |
| 1694 | 3.51 | Поставить на зарядку штабелер, который стоит на жирах |  | 30min | 2026-10-14 09:00 A | 2026-10-14 09:30 A | 100% |  |  | start no earlier than 2026-10-14 08:00 | Бобренок В | 0.5h | 0.5h |
| 1695 | 3.52 | Закрыть на ключ все двери, ключи взять в кабинете оги |  | 1h | 2026-10-13 09:00 A | 2026-10-13 10:00 A | 100% |  |  | start no earlier than 2026-10-13 08:00 | Бобренок В | 1h | 1h |
| 1696 | 3.53 | Подписать на шкафу управления нории обозначения кнопок (на малярный скотч) |  | 1h | 2026-10-09 09:00 A | 2026-10-09 10:00 A | 100% |  |  | start no earlier than 2026-10-09 08:00 | Дедов В | 1h | 1h |
| 1697 | 3.54 | Закрыть все входа в производственную зону. Со стороны склада, гидролизата, со стороны фасовки, со стороны пандуса. Ключи взять у нас в кабинете в ящике. Ключи подписать | manual | 2h | 2026-10-03 09:00 A | 2026-10-03 11:00 A | 100% |  |  | start no earlier than 2026-10-03 09:00 | Бобренок В | 2h | 2h |
| 1698 | 3.55 | Сделать перила на лестницу между фасовкой и жирами, высота по образцу лестницы, которая на загрузке смесителей в 3 цеху. Делать минимальный габарит, чтоб рука пролазила между стеной и при этом сильно не сужало пространство. Делаем из 40 уголка | manual | 5h | 2026-10-09 09:00 A | 2026-10-09 15:00 A | 100% |  |  | start no earlier than 2026-10-09 09:00 | Бундин В | 5h | 5h |
| 1699 | 3.56 | Сделать окно из орг стекла монолитного, на жирах сверху, чтоб было видно печку. Размер примерно 300х200 | manual | 2h | 2026-10-07 09:00 A | 2026-10-07 11:00 A | 100% |  |  | start no earlier than 2026-10-07 09:00 | Бундин В | 2h | 2h |
| 1700 | 3.57 | Доделать закрепление окна из орг стекла, на жирах на заклепки вытяжные м6 | manual | 1h | 2026-10-10 09:00 A | 2026-10-10 10:00 A | 100% |  |  | start no earlier than 2026-10-10 09:00 | Бундин В | 1h | 1h |

| ID | WBS | Task | Type | Duration | Start | Finish | Predecessors | Complete | Constraint | Resources | Work | Actual work |
| --- | --- | --- | --- | --- | --- | --- | --- | --- | --- | --- | --- | --- |
| 1701 | 3.58 | **Установить насос с ножами в 3 цех под раковину мойки на жирах** |  | 11.5d | 2026-10-13 09:00 A | 2026-10-27 13:00 A |  | 100% |  |  | 9.17h | 9.17h |
| 1702 | 3.58.1 | Заказать необходимые комплектующие, переходники |  | 1h | 2026-10-13 09:00 A | 2026-10-13 10:00 A |  | 100% | start no earlier than 2026-10-13 09:00 | Зорькин В | 1h | 1h |
| 1703 | 3.58.2 | контроль |  | 10min | 2026-10-22 09:00 A | 2026-10-22 09:10 A |  | 100% | start no earlier than 2026-10-22 09:00 | Зорькин В | 0.17h | 0.17h |
| 1704 | 3.58.3 | Установить насос с ножами в 3 цех под раковину мойки на жирах | manual | 4h | 2026-10-27 09:00 A | 2026-10-27 13:00 A |  | 100% | start no earlier than 2026-10-27 09:00 | Труфанов А; Некрасов А | 8h | 8h |
| 1705 | 3.59 | сопряжение круглой входной воронки в экструдер с квадратом выхода прекондиционера как в 2ц |  | 5h | 2026-09-29 09:00 A | 2026-09-29 15:00 A |  | 100% | start no earlier than 2026-09-29 09:00 | Бундин В | 5h | 5h |
| 1706 | 3.60 | **обеспечить быстрое переключение продукта из барабана годен/брак - охладитель/тазик** |  | 3.06d | 2026-09-19 09:00 A | 2026-09-22 09:30 A |  | 100% |  |  | 21h | 21h |
| 1707 | 3.60.1 | Модернизация лотка для удаления брака из барабанов, а именно: | milestone | 0h | 2026-09-19 09:00 A | 2026-09-19 09:00 A |  | 100% | start no earlier than 2026-09-19 09:00 | Макаревич А |  |  |
| 1708 | 3.60.2 | демонтировать отбойник, направляющий продукт в центр |  | 2h | 2026-09-19 09:00 A | 2026-09-19 11:00 A |  | 100% | start no earlier than 2026-09-19 09:00 | Макаревич А | 2h | 2h |
| 1709 | 3.60.3 | сделать торцевую стенку на шарнире с наклоном под барабан. Шарнир на высоте кронштейнов сетки. Шарнир дверной / как от печей |  | 4h | 2026-09-19 11:00 A | 2026-09-19 16:00 A | 1708 | 100% | start no earlier than 2026-09-18 08:00 | Макаревич А | 4h | 4h |
| 1710 | 3.60.4 | сделать фиксатор стенки в положении закрыто в виде щеколды. Безопасный быстрый |  | 2h | 2026-09-20 09:00 A | 2026-09-20 11:00 A | 1709 | 100% | start no earlier than 2026-09-20 09:00 | Макаревич А | 2h | 2h |
| 1711 | 3.60.5 | сделать "притвор", закрывающий щель после разрезания стенки. Все края защита от пореза либо зачистить либо лента |  | 4h | 2026-09-20 11:00 A | 2026-09-20 16:00 A | 1710 | 100% | start no earlier than 2026-09-18 08:00 | Макаревич А | 4h | 4h |
| 1712 | 3.60.6 | изготовить новый отбойник, направляющий продукт в центр, ниже опущенной стенки на сброс, не широкий, что бы удобно былоо менять сетку |  | 2h | 2026-09-20 16:00 A | 2026-09-20 18:00 A | 1711 | 100% | start no earlier than 2026-09-18 08:00 | Макаревич А | 2h | 2h |
| 1713 | 3.60.7 | Доработка короба после барабанов для ссыпки в емкость, установка ограничителей, язычка. Подробности у Труфанова |  | 6h | 2026-09-21 09:00 A | 2026-09-21 16:00 A |  | 100% | start no earlier than 2026-09-21 08:00 | Макаревич А | 6h | 6h |
| 1714 | 3.60.8 | установить на место, испытание |  | 30min | 2026-09-22 09:00 A | 2026-09-22 09:30 A |  | 100% | start no earlier than 2026-09-22 09:00 | Некрасов А; Труфанов А | 1h | 1h |
| 1715 | 3.61 | **Дражжировка** |  | 13.25d | 2026-09-17 09:00 A | 2026-09-30 11:00 A |  | 100% |  |  | 14h | 14h |
| 1716 | 3.61.1 | Повесить мощную цепь, за которую можно опускать и поднимать защиту |  | 1h | 2026-09-18 09:00 A | 2026-09-18 10:00 A |  | 100% | start no earlier than 2026-09-18 09:00 | Бундин В | 1h | 1h |
| 1717 | 3.61.2 | Сделать ограничитель, когда опускаешь защиту на себя, на уровне перил |  | 1h | 2026-09-17 09:00 A | 2026-09-17 10:00 A |  | 100% | start no earlier than 2026-09-17 08:00 | Бундин В | 1h | 1h |
| 1718 | 3.61.3 | Сделать из отбойников рессор уаз отбойники на защите паллет, чтоб не било когда падает (позвони, обьясню) |  | 2h | 2026-09-17 09:00 A | 2026-09-17 11:00 A |  | 100% | start no earlier than 2026-09-17 08:00 | Бундин В | 2h | 2h |
| 1719 | 3.61.4 | Перенести частотник со стены ближе к барабанам, смонтировать на раму барабанов |  | 2h | 2026-09-30 09:00 A | 2026-09-30 11:00 A |  | 100% | start no earlier than 2026-09-30 09:00 | Дедов В | 2h | 2h |
| 1720 | 3.61.5 | на коневейер циклон-барабан установить полосу сбоку ленты не дающую грануле скатываться обратно, примеры посмотреть в 1 цеху |  | 1h | 2026-09-22 09:00 A | 2026-09-22 10:00 A |  | 100% | start no earlier than 2026-09-22 09:00 | Тимофеев В | 1h | 1h |
| 1721 | 3.61.6 | Изготовить и установить уши на конце конвейера в барабан (чтоб гранула не попадала внутрь ленты) |  | 2h | 2026-09-21 09:00 A | 2026-09-21 11:00 A |  | 100% | start no earlier than 2026-09-21 09:00 | Тимофеев В | 2h | 2h |
| 1722 | 3.61.7 | Доделать и установить язык между барабанами |  | 1h | 2026-09-21 09:00 A | 2026-09-21 10:00 A |  | 100% | start no earlier than 2026-09-21 09:00 | Тимофеев В | 1h | 1h |
| 1723 | 3.61.8 | Увеличить «язычек» между барабанами на жирах (просыпается много гранулы |  | 4h | 2026-09-17 09:00 A | 2026-09-17 13:00 A |  | 100% | start no earlier than 2026-09-17 09:00 | Тимофеев В | 4h | 4h |
| 1724 | 3.62 | **Разобрать регулировку ножевого узла, достать вал на котором установлен штурвал** |  | 18d | 2026-09-21 09:00 A | 2026-10-11 11:00 A |  | 100% |  |  | 3.5h | 3.5h |
| 1725 | 3.62.1 | Снять вал, передать Зорькину |  | 1h | 2026-09-22 09:00 A | 2026-09-22 10:00 A |  | 100% | start no earlier than 2026-09-22 09:00 | Тимофеев В | 1h | 1h |
| 1726 | 3.62.2 | Заявка по образцу |  | 20min | 2026-09-21 09:00 A | 2026-09-21 09:20 A |  | 100% | start no earlier than 2026-09-21 09:00 | Зорькин В | 0.33h | 0.33h |
| 1727 | 3.62.3 | контроль |  | 10min | 2026-09-28 09:00 A | 2026-09-28 09:10 A | 1726SF+7d | 100% | start no earlier than 2026-09-28 09:00 | Зорькин В | 0.17h | 0.17h |
| 1728 | 3.62.4 | установка, получить на складе, лежат 2 вала один новый, другой образец, забрать оба | manual | 2h | 2026-10-11 09:00 A | 2026-10-11 11:00 A | 1727FS+1d | 100% | start no earlier than 2026-10-11 09:00 | Бобренок В | 2h | 2h |
| 1729 | 3.63 | Между шлюзовым питателем и конвейером на жирах сделать ограничение, чтоб не разлеталась гранула и не мешало двигать конвейер |  | 3h | 2026-09-15 09:00 A | 2026-09-15 12:00 A |  | 100% | start no earlier than 2026-09-15 09:00 | Тимофеев В | 3h | 3h |

| ID | WBS | Task | Type | Duration | Start | Finish | Predecessors | Complete | Actual finish | Total slack | Constraint | Resources | Work | Actual work |
| --- | --- | --- | --- | --- | --- | --- | --- | --- | --- | --- | --- | --- | --- | --- |
| 1730 | 3.64 | **Найти и установить жироуловитель с синего склада на жирах мойка** |  | 15.12d | 2026-09-16 09:00 A | 2026-10-01 10:00 A |  | 100% |  |  |  |  | 3.33h | 3.33h |
| 1731 | 3.64.1 | Составить список необходимых материлов для подключения (передать зорькину) |  | 1h | 2026-09-16 09:00 A | 2026-09-16 10:00 A |  | 100% |  |  | start no earlier than 2026-09-16 08:00 | Тимофеев В; Зорькин В | 2h | 2h |
| 1732 | 3.64.2 | Заявка |  | 15min | 2026-09-16 10:00 A | 2026-09-16 10:15 A | 1731 | 100% |  |  | start no earlier than 2026-09-16 08:00 | Зорькин В | 0.25h | 0.25h |
| 1733 | 3.64.3 | Контроль |  | 5min | 2026-09-24 09:00 A | 2026-09-24 09:05 A | 1732FS+7d | 100% |  |  | start no earlier than 2026-09-24 09:00 | Зорькин В | 0.08h | 0.08h |
| 1734 | 3.64.4 | Монтаж |  | 1h | 2026-10-01 09:00 A | 2026-10-01 10:00 A | 1733 | 100% |  |  | start no earlier than 2026-10-01 09:00 | Тимофеев В | 1h | 1h |
| 1735 | 3.65 | монтаж оконечные кожухи на конвейер после охладителя, что бы гранула не разлеталась при перевороте ленты |  | 4h | 2026-09-21 09:00 A | 2026-09-21 13:00 A |  | 100% |  |  | start no earlier than 2026-09-22 09:00 | Тимофеев В | 4h | 4h |
| 1736 | 3.66 | Перенести регулировку подачи жира, ближе к барабанам. Перенос частотник на раму барабанов |  | 4h | 2026-10-06 09:00 | 2026-10-06 13:00 |  |  |  | 116.09d | start no earlier than 2026-10-06 09:00 | Тимофеев В | 4h |  |
| 1737 | 3.67 | Проблема с закрыванием дверцы привода ножей (шарнир с мотором ножей при закрывании теряет соосность, сделать упор) |  | 1h | 2026-09-15 09:00 A | 2026-09-15 10:00 A |  | 100% |  |  | start no earlier than 2026-09-15 09:00 | Тимофеев В | 1h | 1h |
| 1738 | 3.68 | Разобраться почему закусывает резьбу прижима ножей к фильере (испытывать после установки штурвала) |  | 1h | 2026-09-15 09:00 A | 2026-09-15 10:00 A |  | 100% |  |  | start no earlier than 2026-09-15 09:00 | Тимофеев В | 1h | 1h |
| 1739 | 3.69 | Регулировка ножей на экструдере — сделать «штурвал»; |  | 2h | 2026-09-15 09:00 A | 2026-09-15 11:00 A |  | 100% |  |  | start no earlier than 2026-09-15 09:00 | Тимофеев В | 2h | 2h |
| 1740 | 3.70 | **Гранулы выходили из печи со следами смазки** |  | 0.5d | 2026-10-01 09:00 A | 2026-10-01 13:00 A |  | 100% |  |  |  |  | 4h | 4h |
| 1741 | 3.70.1 | (сделать направляющие в печи); |  | 4h | 2026-10-01 09:00 A | 2026-10-01 13:00 A |  | 100% |  |  | start no earlier than 2026-10-02 09:00 | Тимофеев В | 4h | 4h |
| 1742 | 3.71 | **С двигателя экструдера выдавило много масла;** |  | 33.5d | 2026-09-18 09:00 A | 2026-10-27 13:00 |  | 100% | 2026-11-06 16:00 |  |  |  | 11.25h | 11.25h |
| 1743 | 3.71.1 | установить поплавок на верхний уровень для блокировки насоса- осмотр |  | 4h | 2026-09-18 09:00 A | 2026-09-18 13:00 A |  | 100% |  |  | start no earlier than 2026-09-18 09:00 | Бобренок В | 4h | 4h |
| 1744 | 3.71.2 | заявка на датчики |  | 1h | 2026-09-18 14:00 A | 2026-09-18 15:00 A | 1743 | 100% |  |  | start no earlier than 2026-09-18 08:00 | Зорькин В | 1h | 1h |
| 1745 | 3.71.3 | контроль достачки |  | 15min | 2026-09-25 15:00 A | 2026-09-25 15:15 A | 1744FS+7d | 100% |  |  | start no earlier than 2026-09-18 08:00 | Зорькин В | 0.25h | 0.25h |
| 1746 | 3.71.4 | монтаж датчик в редуктор |  | 2h | 2026-11-05 09:00 A | 2026-11-05 11:00 A | 1745FS+1d | 100% |  |  | start no earlier than 2026-11-05 09:00 | Дедов В | 2h | 2h |
| 1747 | 3.71.5 | подключение датчика в схему - блокировка по уровню |  | 4h | 2026-11-06 11:00 A | 2026-11-06 16:00 A | 1746FS+1d | 100% |  |  | start no earlier than 2026-11-05 09:00 | Тимофеев В | 4h | 4h |
| 1748 | 3.72 | Заменить кран подачи воды (второй слева) на втором предкондиционере — |  | 1h | 2026-09-14 09:00 A | 2026-09-14 10:00 A |  | 100% |  |  | start no earlier than 2026-09-14 09:00 | Тимофеев В | 1h | 1h |
| 1749 | 3.73 | **По схемам Труфанова разобраться с автоматикой шкафа и подключить 3 датчика уровня и подписать, где и что находится +кнопки и переключатели на шкафу тоже подписать** |  | 1.06d | 2026-09-07 09:00 A | 2026-09-08 09:30 A |  | 100% |  |  |  |  | 8.5h | 8.5h |
| 1750 | 3.73.1 | изучение схему |  | 8h | 2026-09-07 09:00 A | 2026-09-07 18:00 A |  | 100% |  |  | start no earlier than 2026-09-07 09:00 | Дедов В | 8h | 8h |
| 1751 | 3.73.2 | подкл 2я нория по датчику уровня |  | 30min | 2026-09-08 09:00 A | 2026-09-08 09:30 A |  | 100% |  |  | start no earlier than 2026-09-08 08:00 | Дедов В | 0.5h | 0.5h |
| 1752 | 3.74 | **установить ограничитель на дверь что бы попадала под движение рольворот** |  | 24.12d | 2026-09-22 09:00 A | 2026-10-20 10:00 A |  | 100% |  |  |  |  | 2.5h | 2.5h |
| 1753 | 3.74.1 | заявка |  | 15min | 2026-09-22 09:00 A | 2026-09-22 09:15 A |  | 100% |  |  | start no earlier than 2026-09-22 09:00 | Зорькин В | 0.25h | 0.25h |
| 1754 | 3.74.2 | контроль доставки |  | 15min | 2026-09-28 09:00 A | 2026-09-28 09:15 A | 1753FS+5d | 100% |  |  | start no earlier than 2026-09-28 09:00 | Зорькин В | 0.25h | 0.25h |
| 1755 | 3.74.3 | монтаж |  | 1h | 2026-10-20 09:00 A | 2026-10-20 10:00 A | 1754FS+1d | 100% |  |  | start no earlier than 2026-10-20 09:00 | Тимофеев В; Николаев | 2h | 2h |
| 1756 | 3.75 | приварить к люку сливной ямы вспомогательную ручку (ручка весит на стеллаже в слесарке) | manual | 2h | 2026-08-30 09:00 | 2026-08-30 11:00 |  |  |  |  | start no earlier than 2026-08-30 09:00 | Бундин В | 2h |  |

| ID | WBS | Task | Type | Duration | Start | Finish | Predecessors | Complete | Remaining | Total slack | Constraint | Resources | Work | Actual work |
| --- | --- | --- | --- | --- | --- | --- | --- | --- | --- | --- | --- | --- | --- | --- |
| 1757 | 3.76 | **монтаж унитаз, получить на складе** |  | 0d | 2026-08-17 09:00 A | 2026-08-17 09:00 A |  | 100% |  |  |  |  |  |  |
| 1758 | 3.76.1 | крышка бачка лопнувшая- поменять по гарантии | milestone | 0d | 2026-08-17 09:00 A | 2026-08-17 09:00 A |  | 100% |  |  | start no earlier than 2026-08-17 09:00 | Зорькин В |  |  |
| 1759 | 3.77 | закрыить металлом 1.5мм щель стена / площадка загрузки муки. Между рольворотой и стеной с окнами |  | 2h | 2026-08-15 09:00 A | 2026-08-17 11:00 A |  | 100% |  |  | start no earlier than 2026-08-15 09:00 | Бундин В | 2h | 2h |
| 1760 | 3.78 | закрыть щель битумной лентой стык площадка-профлист стенка. Полоску клеить из нутри, обезжирить. |  | 2h | 2026-08-16 09:00 A | 2026-08-17 11:00 A |  | 100% |  |  | start no earlier than 2026-08-16 09:00 | Бундин В | 2h | 2h |
| 1761 | 3.79 | монтаж светильник в корридор / лестница на площадку жиров |  | 3h | 2026-08-16 09:00 A | 2026-08-17 12:00 A |  | 100% |  |  | start no earlier than 2026-08-16 09:00 | Бундин В | 3h | 3h |
| 1762 | 3.80 | **ломает гранулу после печи** |  | 17.12d? | 2026-08-18 09:00 A | 2026-09-09 10:00 A |  | 100% |  |  |  |  | 18.5h | 18.5h |
| 1763 | 3.80.1 | тест на ручной загрузке |  | 2h | 2026-08-18 09:00 A | 2026-08-18 11:00 A |  | 100% |  |  | start no earlier than 2026-08-18 09:00 | Шуранов Ю | 2h | 2h |
| 1764 | 3.80.2 | полная раборка трассы на ревизию острых граней? |  | 2h | 2026-08-19 09:00 A | 2026-08-19 11:00 A |  | 100% |  |  | start no earlier than 2026-08-19 09:00 | Тимофеев В | 2h | 2h |
| 1765 | 3.80.3 | определить параметры нории для запроса цены |  | 2h | 2026-08-18 09:00 A | 2026-08-18 11:00 A |  | 100% |  |  | start no earlier than 2026-08-18 09:00 | Шуранов Ю | 2h | 2h |
| 1766 | 3.80.4 | контроль отвта |  | 15min | 2026-09-03 09:00 A | 2026-09-03 09:15 A | 1765FS+5d | 100% |  |  | start no earlier than 2026-09-03 09:00 | Зорькин В | 0.25h | 0.25h |
| 1767 | 3.80.5 | изготовить новый отвод 90 с фланцем, учесть степеньку |  | 1h | 2026-09-02 09:00 A | 2026-09-02 10:00 A |  | 100% |  |  | start no earlier than 2026-09-09 09:00 | Макаревич А | 1h | 1h |
| 1768 | 3.80.6 | тест |  | 1h | 2026-08-19 09:00 A | 2026-08-19 10:00 A |  | 100% |  |  | start no earlier than 2026-08-19 09:00 | Тимофеев В; Шуранов Ю | 2h | 2h |
| 1769 | 3.80.7 | переварить фланец на угловом соединении (объясню по телефону). То же самое | milestone | 0h | 2026-09-04 09:00 A | 2026-09-04 09:00 A |  | 100% |  |  | start no earlier than 2026-09-04 09:00 | Макаревич А |  |  |
| 1770 | 3.80.8 | печать переходника на 3д принтере |  | 1d? | 2026-08-31 09:00 A | 2026-08-31 18:00 A |  | 100% |  |  | start no earlier than 2026-08-31 09:00 | Домоводов К | 8h | 8h |
| 1771 | 3.80.9 | проверка размещения нории от квадропака |  | 15min | 2026-08-18 09:00 A | 2026-08-18 09:15 A |  | 100% |  |  | start no earlier than 2026-08-18 09:00 | Шуранов Ю | 0.25h | 0.25h |
| 1772 | 3.80.10 | установить угловой фланец на пневмотрассу |  | 1h | 2026-09-09 09:00 A | 2026-09-09 10:00 A |  | 100% |  |  | start no earlier than 2026-09-09 09:00 | Тимофеев В | 1h | 1h |
| 1773 | 3.81 | сделать перемычку на нижней части системы загрузки палет подачи жиров и гидрализата | manual | 3h | 2026-08-15 09:00 | 2026-08-15 12:00 |  |  |  |  | start no earlier than 2026-08-15 09:00 | Бундин В | 3h |  |
| 1774 | 3.82 | **сборка квадропака 3 цех** |  | 69.12d | 2026-08-14 09:00 A | 2026-11-06 10:00 |  | 97% | 2.23d | 92.47d |  |  | 45h | 44h |
| 1775 | 3.82.1 | скрутку силовых кабелей на полу усилить мех защитой - распред коробку или на подобии - что если случайно наступят изолента не выдержит |  | 1h | 2026-10-20 09:00 A | 2026-10-20 10:00 A |  | 100% |  |  | start no earlier than 2026-10-20 09:00 | Бундин В | 1h | 1h |
| 1776 | 3.82.2 | уложить проводку в шкафу управления в кабельные лотки, крышки закрыть |  | 1h | 2026-11-06 09:00 | 2026-11-06 10:00 |  |  |  | 92.47d | start no earlier than 2026-11-06 09:00 | Бобренок В | 1h |  |
| 1777 | 3.82.3 | Монтаж/позиционирование квадропака |  | 5h | 2026-09-02 09:00 A | 2026-09-02 15:00 A |  | 100% |  |  | start no earlier than 2026-09-02 09:00 | Труфанов А | 5h | 5h |
| 1778 | 3.82.4 | перестановка норий, задействовать бункер |  | 2h | 2026-08-17 09:00 A | 2026-08-17 11:00 A |  | 100% |  |  | start no earlier than 2026-08-17 09:00 | Тимофеев В; Некрасов А | 4h | 4h |
| 1779 | 3.82.5 | сборка накопительный стол |  | 2h | 2026-08-19 09:00 A | 2026-08-19 11:00 A | 1778 | 100% |  |  | start no earlier than 2026-08-19 09:00 | Тимофеев В | 2h | 2h |
| 1780 | 3.82.6 | подключение дозатор |  | 1h | 2026-08-14 09:00 A | 2026-08-14 10:00 A |  | 100% |  |  | start no earlier than 2026-08-14 09:00 | Труфанов А | 1h | 1h |
| 1781 | 3.82.7 | зарисовка схема ШУ нория - понять управление бункером |  | 4h | 2026-08-14 09:00 A | 2026-08-14 13:00 A |  | 100% |  |  | start no earlier than 2026-08-14 09:00 | Труфанов А | 4h | 4h |
| 1782 | 3.82.8 | подключение нория к упаковке |  | 2h | 2026-08-14 14:00 A | 2026-08-14 16:00 A | 1781 | 100% |  |  | start no earlier than 2026-08-14 09:00 | Труфанов А | 2h | 2h |
| 1783 | 3.82.9 | подключение вводный кабель (питание) информация у Труфанова |  | 2h | 2026-09-04 09:00 A | 2026-09-04 11:00 A | 1782 | 100% |  |  | start no earlier than 2026-09-04 09:00 | Бундин В; Труфанов А | 4h | 4h |
| 1784 | 3.82.10 | тест на пакетах |  | 4h | 2026-10-21 09:00 A | 2026-10-21 13:00 A |  | 100% |  |  | start no earlier than 2026-10-21 09:00 | Труфанов А; Зорькин В | 8h | 8h |
| 1785 | 3.82.11 | тест с операторами определить производительность |  | 2h | 2026-10-26 09:00 A | 2026-10-26 11:00 A |  | 100% |  |  | start no earlier than 2026-10-26 09:00 | Труфанов А; Зорькин В; Некрасов А | 6h | 6h |
| 1786 | 3.82.12 | подключениекомпрессор |  | 1h | 2026-09-03 09:00 A | 2026-09-03 10:00 A | 1783 | 100% |  |  | start no earlier than 2026-09-03 09:00 | Бобренок В | 1h | 1h |
| 1787 | 3.82.13 | Установка квадропака (позиционирование нижней машины) информация у Труфанова |  | 2h | 2026-09-02 09:00 A | 2026-09-02 11:00 A |  | 100% |  |  | start no earlier than 2026-09-02 09:00 | Труфанов А; Бундин В | 4h | 4h |
| 1788 | 3.82.14 | Выставить опоры верхней рамы и лестницы по уровню |  | 1h | 2026-09-02 09:00 A | 2026-09-02 10:00 A |  | 100% |  |  | start no earlier than 2026-09-02 08:00 | Бундин В | 1h | 1h |
| 1789 | 3.82.15 | Редуктор стола повернуть кабелем к электрощиту (на столе) |  | 30min | 2026-09-02 09:00 A | 2026-09-02 09:30 A |  | 100% |  |  | start no earlier than 2026-09-02 08:00 | Бундин В | 0.5h | 0.5h |
| 1790 | 3.82.16 | Провод от редуктора и кнопки в гофре закрепить по раме стола завести в шкаф |  | 30min | 2026-09-02 09:00 A | 2026-09-02 09:30 A |  | 100% |  |  | start no earlier than 2026-09-02 08:00 | Бундин В | 0.5h | 0.5h |
| 1791 | 3.83 | сделать ручку и зацепной крюк для открытия люка сливной ямы | manual | 2h | 2026-08-08 09:00 A | 2026-08-08 11:00 A |  | 100% |  |  | start no earlier than 2026-08-08 09:00 | Бобренок В | 2h | 2h |

| ID | WBS | Task | Type | Duration | Start | Finish | Predecessors | Complete | Constraint | Resources | Work | Actual work |
| --- | --- | --- | --- | --- | --- | --- | --- | --- | --- | --- | --- | --- |
| 1792 | 3.84 | **карусель добавить перемычку снизу, чтобы не выпал мешок** |  | 30.25d | 2026-08-18 09:00 A | 2026-09-22 11:00 A |  | 100% |  |  | 2.33h | 2.33h |
| 1793 | 3.84.1 | заказать краску |  | 10min | 2026-08-18 09:00 A | 2026-08-18 09:10 A |  | 100% | start no earlier than 2026-08-18 09:00 | Шуранов Ю | 0.17h | 0.17h |
| 1794 | 3.84.2 | контроль доставки |  | 10min | 2026-08-31 09:00 A | 2026-08-31 09:10 A | 1793FS+5d | 100% | start no earlier than 2026-08-31 09:00 | Зорькин В | 0.17h | 0.17h |
| 1795 | 3.84.3 | покрасить перемычки система безопасности) |  | 2h | 2026-09-22 09:00 A | 2026-09-22 11:00 A | 1794FS+1d | 100% | start no earlier than 2026-09-22 09:00 | Тимофеев В | 2h | 2h |
| 1796 | 3.85 | убрать битумную ленту снаружи мезонина |  | 1h | 2026-08-04 08:00 A | 2026-08-04 10:00 A |  | 100% | start no earlier than 2026-08-04 08:00 | Макаревич А | 1h | 1h |
| 1797 | 3.86 | хорошо закрепить шланг подачи воды в прекондеционер |  | 2h | 2026-08-04 08:00 A | 2026-08-04 11:00 A |  | 100% | start no earlier than 2026-08-04 08:00 | Макаревич А | 2h | 2h |
| 1798 | 3.87 | на выходе ротаметра поменять шланг большего диаметра |  | 1h | 2026-07-31 08:00 A | 2026-07-31 10:00 A |  | 100% | start no earlier than 2026-07-31 08:00 | Тимофеев В | 1h | 1h |
| 1799 | 3.88 | покрасить кронштейн крепления ротаметра |  | 1h | 2026-07-31 09:00 A | 2026-07-31 10:00 A |  | 100% | start no earlier than 2026-07-31 09:00 | Бундин В | 1h | 1h |
| 1800 | 3.89 | не набирает заданную температуру 4 зона экструдера- разобраться |  | 2h | 2026-07-30 08:00 A | 2026-07-30 11:00 A |  | 100% | start no earlier than 2026-07-30 08:00 | Дедов В | 2h | 2h |
| 1801 | 3.90 | сборка кожухи на печи |  | 2h | 2026-07-15 09:00 A | 2026-07-15 11:00 A |  | 100% | start no earlier than 2026-07-15 09:00 | Бундин В | 2h | 2h |
| 1802 | 3.91 | **установить зеркало сферическое на бункер** |  | 15.5d | 2026-07-07 09:00 A | 2026-07-28 13:00 A |  | 100% |  |  | 5h | 5h |
| 1803 | 3.91.1 | заявка |  | 1h | 2026-07-07 09:00 A | 2026-07-07 10:00 A |  | 100% | start no earlier than 2026-07-07 09:00 | Зорькин В | 1h | 1h |
| 1804 | 3.91.2 | контроль доставки | milestone | 0d | 2026-07-17 10:00 A | 2026-07-17 10:00 A | 1803FS+10d | 100% | start no earlier than 2026-07-14 08:00 | Зорькин В |  |  |
| 1805 | 3.91.3 | монтаж |  | 4h | 2026-07-28 09:00 A | 2026-07-28 13:00 A | 1804FS+1d | 100% | start no earlier than 2026-07-28 09:00 | Макаревич А | 4h | 4h |
| 1806 | 3.92 | поиск след от смазки на охладителе |  | 1h | 2026-07-10 09:00 A | 2026-07-10 10:00 A |  | 100% | start no earlier than 2026-07-10 09:00 | Тимофеев В; Зорькин В | 2h | 2h |
| 1807 | 3.93 | **установить наосос центробежный на бочку слив с парогенератора, врезать штуцер в бочку** |  | 0.25d | 2026-07-15 09:00 A | 2026-07-15 11:00 A |  | 100% |  |  | 4h | 4h |
| 1808 | 3.93.1 | орг закуп с курьером |  | 2h | 2026-07-15 09:00 A | 2026-07-15 11:00 A |  | 100% | start no earlier than 2026-07-15 09:00 | Зорькин В | 2h | 2h |
| 1809 | 3.93.2 | монтаж штуцер |  | 2h | 2026-07-15 09:00 A | 2026-07-15 11:00 A |  | 100% | start no earlier than 2026-07-15 09:00 | Бобренок В | 2h | 2h |
| 1810 | 3.94 | **вода идет не стабильно** |  | 4.38d | 2026-07-09 09:00 A | 2026-07-15 12:00 A |  | 100% |  |  | 8h | 8h |
| 1811 | 3.94.1 | Поставить гидроаккумулятор на насос между выходом насосной станции и 3-х ходомым краном подачи воды в экструдер и заменить трубки на шланги |  | 3h | 2026-07-09 09:00 A | 2026-07-09 12:00 A |  | 100% | start no earlier than 2026-07-09 09:00 | Тимофеев В | 3h | 3h |
| 1812 | 3.94.2 | тест работы воды с ПГ на давлении питательного насоса 3+ |  | 1h | 2026-07-10 09:00 A | 2026-07-10 10:00 A |  | 100% | start no earlier than 2026-07-10 09:00 | Зорькин В; Тимофеев В | 2h | 2h |
| 1813 | 3.94.3 | орг закуп с курьером |  | 2h | 2026-07-15 09:00 A | 2026-07-15 11:00 A | 1808SS | 100% | start no earlier than 2026-07-13 09:00 | Зорькин В | 2h | 2h |
| 1814 | 3.94.4 | замена шланг напорный с насоса до ротаметра |  | 1h | 2026-07-15 11:00 A | 2026-07-15 12:00 A | 1813 | 100% | start no earlier than 2026-07-13 09:00 | Бобренок В | 1h | 1h |
| 1815 | 3.95 | Доработать крутилку ссыпа гранулы, прихватить на сварку |  | 1h | 2026-07-09 09:00 A | 2026-07-09 10:00 A |  | 100% | start no earlier than 2026-07-09 09:00 | Макаревич А | 1h | 1h |
| 1816 | 3.96 | удлинить лоток ножевого узла, до кромки загрузки применик пневмотранспорта |  | 3h | 2026-07-09 09:00 A | 2026-07-09 12:00 A |  | 100% | start no earlier than 2026-07-09 09:00 | Макаревич А | 3h | 3h |
| 1817 | 3.97 | Снять торцевые дверцы на печи для доступа к сетке |  | 1h | 2026-07-08 09:00 A | 2026-07-08 10:00 A |  | 100% | start no earlier than 2026-07-08 08:00 | Бундин В | 1h | 1h |
| 1818 | 3.98 | Снять кожухи на редукторах на цепях |  | 1h | 2026-07-08 09:00 A | 2026-07-08 10:00 A |  | 100% | start no earlier than 2026-07-08 08:00 | Бундин В | 1h | 1h |
| 1819 | 3.99 | Установка раковины,унитаза в 3 цеху 2 этаж |  | 4h | 2026-07-07 09:00 A | 2026-07-07 13:00 A |  | 100% | start no earlier than 2026-07-07 09:00 | Бундин В | 4h | 4h |
| 1820 | 3.100 | Установить тройник на компрессор маленький, на входе. (тройни пришел сегодня на склад) |  | 1h | 2026-07-08 09:00 A | 2026-07-08 10:00 A |  | 100% | start no earlier than 2026-07-08 08:00 | Бундин В | 1h | 1h |
| 1821 | 3.101 | Вернуть упакованный унитаз на склад |  | 30min | 2026-07-08 09:00 A | 2026-07-08 09:30 A |  | 100% | start no earlier than 2026-07-08 08:00 | Бундин В | 0.5h | 0.5h |

| ID | WBS | Task | Type | Duration | Start | Finish | Predecessors | Complete | Actual start | Actual finish | Total slack | Constraint | Resources | Work | Actual work |
| --- | --- | --- | --- | --- | --- | --- | --- | --- | --- | --- | --- | --- | --- | --- | --- |
| 1822 | 3.102 | **на тепловых реле 1 и 2 смесителя добавить порог выключения** |  | 1h? | 2026-07-11 09:00 | 2026-07-11 10:00 |  | 100% | 2026-07-14 09:00 | 2026-09-03 10:00 |  |  |  | 1.5h | 1.5h |
| 1823 | 3.102.1 | заявка на тепловые реле с большим номинолом |  | 15min | 2026-07-14 09:00 A | 2026-07-14 09:15 A |  | 100% |  |  |  | start no earlier than 2026-07-14 08:00 | Зорькин В | 0.25h | 0.25h |
| 1824 | 3.102.2 | доставка контроль |  | 15min | 2026-08-28 09:00 A | 2026-08-28 09:15 A | 1823FS+5d | 100% |  |  |  | start no earlier than 2026-08-28 09:00 | Зорькин В | 0.25h | 0.25h |
| 1825 | 3.102.3 | замена тепловых реле, получить на складе |  | 1h | 2026-09-03 09:00 A | 2026-09-03 10:00 A | 1824FS+1d | 100% |  |  |  | start no earlier than 2026-09-03 09:00 | Бобренок В | 1h | 1h |
| 1826 | 3.103 | сделать ручки с резьбой для снятия матрицы экструдера |  | 2h | 2026-07-04 09:00 A | 2026-07-06 11:00 A |  | 100% |  |  |  | start no earlier than 2026-07-04 09:00 | Макаревич А | 2h | 2h |
| 1827 | 3.104 | сделать противоудары головы на циклоне в зоне жиров | manual | 1h | 2026-07-26 09:00 A | 2026-07-26 10:00 A |  | 100% |  |  |  | start no earlier than 2026-07-26 09:00 | Макаревич А | 1h | 1h |
| 1828 | 3.105 | сделать откидную крышку на ножевом узле (расскажу как) |  | 8h | 2026-07-04 09:00 A | 2026-07-06 18:00 A |  | 100% |  |  |  | start no earlier than 2026-07-04 09:00 | Макаревич А | 8h | 8h |
| 1829 | 3.106 | подклинивает охладитель (все ярусы)- разобраться почему |  | 2h | 2026-07-11 09:00 A | 2026-07-13 11:00 A |  | 100% |  |  |  | start no earlier than 2026-07-11 09:00 | Макаревич А | 2h | 2h |
| 1830 | 3.107 | **откалибровать весы красных смесителей, муку с контрольным весом обеспечит 5ц** |  | 2h? | 2026-07-29 09:00 A | 2026-07-29 11:00 |  | 100% |  | 2026-08-03 18:00 |  |  | Дедов В | 10h | 10h |
| 1831 | 3.107.1 | вызвать специалистов |  | 1d? | 2026-08-03 09:00 A | 2026-08-03 18:00 A |  | 100% |  |  |  | start no earlier than 2026-08-03 09:00 | Шуранов Ю | 8h | 8h |
| 1832 | 3.108 | **установка частотника на шнек подачи со смесителей на ногу опоры шнека в разрыв питания шнека** |  | 0.12d | 2026-07-04 09:00 A | 2026-07-06 10:00 A |  | 100% |  |  |  |  |  | 1h | 1h |
| 1833 | 3.108.1 | демонтировать частотник шнека (в слесарку) |  | 1h | 2026-07-04 09:00 A | 2026-07-06 10:00 A |  | 100% |  |  |  | start no earlier than 2026-07-04 09:00 | Дедов В | 1h | 1h |
| 1834 | 3.109 | щель запенить выход из цеха |  | 1d? | 2026-07-02 09:00 A | 2026-07-02 18:00 A |  | 100% |  |  |  | start no earlier than 2026-07-02 09:00 | Олег | 8h | 8h |
| 1835 | 3.110 | силиконим двери прекондиционера (одну эксперимент) |  | 2h | 2026-07-02 09:00 A | 2026-07-02 11:00 A |  | 100% |  |  |  | start no earlier than 2026-07-03 09:00 | Дедов В | 2h | 2h |
| 1836 | 3.111 | наростить лопатку датчика переполнения на приемном лотке прекондиционера |  | 1h | 2026-06-30 09:00 A | 2026-06-30 10:00 A |  | 100% |  |  |  | start no earlier than 2026-06-30 09:00 | Бундин В | 1h | 1h |
| 1837 | 3.112 | установка бака стабилизации на подачу воды в прекондеционер (подключение) |  | 2h | 2026-07-02 09:00 A | 2026-07-02 11:00 A |  | 100% |  |  |  | start no earlier than 2026-07-02 09:00 | Тимофеев В | 2h | 2h |
| 1838 | 3.113 | изготовить фильтры на установки охлаждения |  | 1d? | 2026-07-06 09:00 | 2026-07-06 18:00 |  |  |  |  | 189.59d | start no earlier than 2026-07-06 09:00 | Тимофеев В | 8h |  |
| 1839 | 3.114 | удлинить горловину для второго красного смесителя |  | 2h | 2026-06-29 09:00 A | 2026-06-29 11:00 A |  | 100% |  |  |  | start no earlier than 2026-06-29 09:00 | Бундин В | 2h | 2h |
| 1840 | 3.115 | закрепить датчик сырья лопаткой в горке, под магнитом. Бункер экструдера |  | 4h | 2026-06-27 09:00 A | 2026-06-29 13:00 A |  | 100% |  |  |  | start no earlier than 2026-06-27 09:00 | Бундин В | 4h | 4h |
| 1841 | 3.116 | над магнитом сделать приемную воронку, борта, чтобы не пересыпалось сырье |  | 4h | 2026-06-27 09:00 A | 2026-06-29 13:00 A |  | 100% |  |  |  | start no earlier than 2026-06-27 09:00 | Бундин В | 4h | 4h |
| 1842 | 3.117 | удлинить воронку смесителя до горловины шнека. Приготовить сварщику, обяснить что нужно сделать. Вместо вибратора |  | 4h | 2026-06-27 09:00 A | 2026-06-29 13:00 A |  | 100% |  |  |  | start no earlier than 2026-06-27 09:00 | Дедов В; Бундин В | 8h | 8h |
| 1843 | 3.118 | байпас для масленной станции |  | 2h | 2026-07-01 09:00 A | 2026-07-01 11:00 A |  | 100% |  |  |  | start no earlier than 2026-07-01 09:00 | Тимофеев В | 2h | 2h |
| 1844 | 3.119 | **площадка для операторов для доступа к бункеру, что бы не наступали на краны** |  | 0.12d | 2026-07-02 09:00 A | 2026-07-02 10:00 A |  | 100% |  |  |  |  | Макаревич А; Некрасов А | 4h | 4h |
| 1845 | 3.119.1 | убрать заусенцы болгаркой |  | 1h | 2026-07-02 09:00 A | 2026-07-02 10:00 A |  | 100% |  |  |  | start no earlier than 2026-07-02 09:00 | Макаревич А; Тимофеев В | 2h | 2h |

| ID | WBS | Task | Type | Duration | Start | Finish | Predecessors | Complete | Constraint | Resources | Work | Actual work |
| --- | --- | --- | --- | --- | --- | --- | --- | --- | --- | --- | --- | --- |
| 1846 | 3.120 | **монтаж второй площадки с другой стороны (лестницу берем у 5 цеха -белую)** |  | 0.12d | 2026-07-03 09:00 A | 2026-07-03 10:00 A |  | 100% |  | Макаревич А; Некрасов А | 3h | 3h |
| 1847 | 3.120.1 | покрасить лестницу (мастер ц.1 даст людей- контроль) |  | 1h | 2026-07-03 09:00 A | 2026-07-03 10:00 A |  | 100% | start no earlier than 2026-07-03 09:00 | Макаревич А | 1h | 1h |
| 1848 | 3.121 | закрутить крышку двигателя улитки на циклоне жиров |  | 1h | 2026-06-25 09:00 A | 2026-06-25 10:00 A |  | 100% | start no earlier than 2026-06-25 09:00 | Дедов В | 1h | 1h |
| 1849 | 3.122 | укоротить шланг подачи масла | manual | 1h | 2026-06-25 08:00 A | 2026-06-25 09:00 A |  | 100% | start no earlier than 2026-06-25 08:00 | Макаревич А | 1h | 1h |
| 1850 | 3.123 | проверка подачи воды на парогенератор и прекондиционер, почему клапан подачи в бак заблокирован. |  | 2h | 2026-06-25 09:00 A | 2026-06-25 11:00 A |  | 100% | start no earlier than 2026-06-25 09:00 | Дедов В | 2h | 2h |
| 1851 | 3.124 | проверить парогенератор |  | 0.5h | 2026-06-25 09:00 A | 2026-06-25 09:30 A |  | 100% | start no earlier than 2026-06-25 09:00 | Дедов В | 0.5h | 0.5h |
| 1852 | 3.125 | вскрыть парогенератор, чистка электродов- фото |  | 3h | 2026-06-25 08:00 A | 2026-06-25 12:00 A |  | 100% | start no earlier than 2026-06-25 08:00 | Макаревич А | 3h | 3h |
| 1853 | 3.126 | подключить ролеты на охладителе |  | 1h | 2026-06-25 09:00 A | 2026-06-25 10:00 A |  | 100% | start no earlier than 2026-06-25 09:00 | Дедов В | 1h | 1h |
| 1854 | 3.127 | изготовление и установка шибера в лоток |  | 2h | 2026-06-25 09:00 A | 2026-06-25 11:00 A |  | 100% | start no earlier than 2026-06-25 09:00 | Дедов В | 2h | 2h |
| 1855 | 3.128 | контроль печи, будет включена пока не перестанет дымить |  | 1h | 2026-06-24 09:00 A | 2026-06-24 10:00 A |  | 100% | start no earlier than 2026-06-24 09:00 | Труфанов А; Макаревич А | 2h | 2h |
| 1856 | 3.129 | **взять на складе у Веры кронштейн под щетку, закрепить на него саму щетку и прикрутить на мезонине навесок в сторону ворот** |  | 28.38d | 2026-07-07 09:00 A | 2026-08-14 12:00 A |  | 100% |  |  | 3.5h | 3.5h |
| 1857 | 3.129.1 | заказать профиль 5мм |  | 15min | 2026-07-07 09:00 A | 2026-07-07 09:15 A |  | 100% | start no earlier than 2026-07-07 09:00 | Зорькин В | 0.25h | 0.25h |
| 1858 | 3.129.2 | контроль досставки |  | 15min | 2026-07-17 09:15 A | 2026-07-17 09:30 A | 1857FS+10d | 100% | start no earlier than 2026-07-07 09:00 | Зорькин В | 0.25h | 0.25h |
| 1859 | 3.129.3 | прикрепить на клепки/ саморезу щетку и установить на мезонине где ворота (все это находиться в 3 ц. справа на входе) Еще одна щетка есть у веры на складе, висела на кабинке | manual | 3h | 2026-08-14 09:00 A | 2026-08-14 12:00 A | 1858 | 100% |  | Макаревич А | 3h | 3h |
| 1860 | 3.130 | кабель трется о дверь, уложить в лоток, приподнять -закрепить к воздуховоду |  | 3h | 2026-06-24 09:00 A | 2026-06-24 12:00 A |  | 100% | start no earlier than 2026-06-24 09:00 | Труфанов А | 3h | 3h |
| 1861 | 3.131 | на частотнике пневмоулитки на жирах- увеличить время разгона и торможения |  | 1h | 2026-06-23 09:00 A | 2026-06-23 10:00 A |  | 100% | start no earlier than 2026-06-23 09:00 | Труфанов А | 1h | 1h |
| 1862 | 3.132 | проверить редукторы на печи (утечка есть или нет) |  | 1h | 2026-06-23 09:00 A | 2026-06-23 10:00 A |  | 100% | start no earlier than 2026-06-23 09:00 | Труфанов А | 1h | 1h |
| 1863 | 3.133 | убрать трубу нерж в коридоре возле охладителя в комнату на выходе из цеха | manual | 1h | 2026-06-20 09:00 A | 2026-06-20 10:00 A |  | 100% | start no earlier than 2026-06-20 09:00 | Бундин В | 1h | 1h |
| 1864 | 3.134 | капает с улитки вытяжки печи- просверлить сверло 6мм |  | 1h | 2026-06-20 09:00 A | 2026-06-22 10:00 A |  | 100% | start no earlier than 2026-06-20 09:00 | Дедов В | 1h | 1h |
| 1865 | 3.135 | герметизация всех стыков вневмотрубы аллюминевым скотчем (улитка с печи на жиры) | manual | 1h | 2026-06-21 09:00 A | 2026-06-21 10:00 A |  | 100% | start no earlier than 2026-06-21 09:00 | Труфанов А | 1h | 1h |
| 1866 | 3.136 | отпилить одну перекладину опоры вентиляции, чтобы открывалась дверь печи | manual | 3h | 2026-06-21 09:00 A | 2026-06-21 12:00 A |  | 100% | start no earlier than 2026-06-21 09:00 | Бундин В | 3h | 3h |
| 1867 | 3.137 | проверка подачи воды в прекондиционер | manual | 1h | 2026-06-21 09:00 A | 2026-06-21 10:00 A |  | 100% | start no earlier than 2026-06-21 09:00 | Труфанов А | 1h | 1h |
| 1868 | 3.138 | включаем печь, прожигаем масло- чтобы вагорело и не дымило… контроль |  | 1h | 2026-06-23 09:00 A | 2026-06-23 10:00 A |  | 100% | start no earlier than 2026-06-23 09:00 | Шуранов Ю | 1h | 1h |
| 1869 | 3.139 | прикрутить горловину прекондиционера (находиться в комнате на выходе из цеха) | manual | 1h | 2026-06-20 09:00 A | 2026-06-20 10:00 A |  | 100% | start no earlier than 2026-06-20 09:00 | Бундин В | 1h | 1h |
| 1870 | 3.140 | на 1 и 2 зоне температура растет больше факта- проверить |  | 1h | 2026-06-23 09:00 A | 2026-06-23 10:00 A |  | 100% | start no earlier than 2026-06-23 09:00 | Труфанов А | 1h | 1h |
| 1871 | 3.141 | собрать парогенератор (насос+ вход вода в парик) |  | 1h | 2026-06-19 09:00 A | 2026-06-19 10:00 A |  | 100% | start no earlier than 2026-06-19 09:00 | Дедов В | 1h | 1h |
| 1872 | 3.142 | увеличить частоту на пневмоулитку с печи в жиры |  | 1h | 2026-06-19 09:00 A | 2026-06-19 10:00 A |  | 100% | start no earlier than 2026-06-19 09:00 | Дедов В | 1h | 1h |
| 1873 | 3.143 | трубу жиротопки утеплить |  | 2h | 2026-06-18 09:00 A | 2026-06-18 11:00 A |  | 100% | start no earlier than 2026-06-18 08:00 | Труфанов А | 2h | 2h |
| 1874 | 3.144 | установка смесителя душа 2 этаж продолжить |  | 4h | 2026-07-07 09:00 A | 2026-07-07 13:00 A |  | 100% | start no earlier than 2026-07-07 09:00 | Бундин В | 4h | 4h |
| 1875 | 3.145 | на прекондеционере настроить премыкание на всех дверцах | manual | 3h | 2026-06-21 09:00 A | 2026-06-21 12:00 A |  | 100% | start no earlier than 2026-06-21 09:00 | Труфанов А | 3h | 3h |
| 1876 | 3.146 | обрезить шпильки, которые торчат, на воздуховодах вентиляции (зона навесок и жиров) |  | 2h | 2026-06-18 09:00 A | 2026-06-18 11:00 A |  | 100% | start no earlier than 2026-06-18 08:00 | Труфанов А | 2h | 2h |

| ID | WBS | Task | Type | Duration | Start | Finish | Predecessors | Complete | Constraint | Resources | Work | Actual work |
| --- | --- | --- | --- | --- | --- | --- | --- | --- | --- | --- | --- | --- |
| 1877 | 3.147 | **модернизация схема ШУ жиротопки - отключается циркуляц насос при достжении температуры** |  | 5.5d | 2026-06-07 09:00 A | 2026-06-15 13:00 A |  | 100% |  |  | 5h | 5h |
| 1878 | 3.147.1 | изучить схему, согласовать предложения модернизации |  | 1h | 2026-06-07 09:00 A | 2026-06-08 10:00 A |  | 100% | start no earlier than 2026-06-07 09:00 | Дедов В | 1h | 1h |
| 1879 | 3.147.2 | реализации модернизации |  | 4h | 2026-06-15 09:00 A | 2026-06-15 13:00 A | 1878 | 100% | start no earlier than 2026-06-15 09:00 | Дедов В | 4h | 4h |
| 1880 | 3.148 | **сборка квадропак с системой дозации** |  | 56.5d | 2026-06-18 09:00 A | 2026-09-04 13:00 A |  | 100% |  |  | 67h | 67h |
| 1881 | 3.148.1 | сборка нория |  | 8h | 2026-07-17 09:00 A | 2026-07-17 18:00 A |  | 100% | start no earlier than 2026-07-17 09:00 | Некрасов А; Тимофеев В | 15h | 15h |
| 1882 | 3.148.2 | сборка площадка |  | 4h | 2026-07-20 09:00 A | 2026-07-20 13:00 A | 1881 | 100% | start no earlier than 2026-07-09 08:00 | Некрасов А; Тимофеев В | 8h | 8h |
| 1883 | 3.148.3 | монтаж весы |  | 4h | 2026-07-20 14:00 A | 2026-07-20 18:00 A | 1882 | 100% | start no earlier than 2026-07-09 08:00 | Некрасов А; Тимофеев В | 8h | 8h |
| 1884 | 3.148.4 | подключить квадропак / пусконаладка |  | 4h | 2026-09-04 09:00 A | 2026-09-04 13:00 A |  | 100% | start no earlier than 2026-09-04 09:00 | Зорькин В; Труфанов А | 8h | 8h |
| 1885 | 3.148.5 | разгрузка / распаковка |  | 1h | 2026-06-18 09:00 A | 2026-06-18 10:00 A |  | 100% | start no earlier than 2026-06-18 09:00 | Некрасов А; Тимофеев В | 1h | 1h |
| 1886 | 3.148.6 | сборка рама в 1ц над столом выгрузки пакетов. Примерка/доработка рамы по месту |  | 4h | 2026-07-09 09:00 A | 2026-07-09 13:00 A |  | 100% | start no earlier than 2026-07-09 09:00 | Некрасов А; Макаревич А; Тимофеев В | 11h | 11h |
| 1887 | 3.148.7 | сборка дозатор |  | 4h | 2026-07-09 09:00 A | 2026-07-09 13:00 A |  | 100% | start no earlier than 2026-07-09 09:00 | Зорькин В; Макаревич А; Некрасов А; Тимофеев В | 16h | 16h |
| 1888 | 3.149 | устранить заусенцы пол площадки жиротопки. Рвет тряпку уборщица. |  | 4h | 2026-05-31 09:00 A | 2026-06-01 13:00 A |  | 100% | start no earlier than 2026-05-31 09:00 | Макаревич А | 4h | 4h |
| 1889 | 3.150 | **востановить насос циркуляция воды на жиротопке** |  | 8.32d | 2026-06-06 09:00 A | 2026-06-18 11:35 A |  | 100% |  |  | 3.58h | 3.58h |
| 1890 | 3.150.1 | разборка насос / выяснить причину заклинивания |  | 1h | 2026-06-06 09:00 A | 2026-06-08 10:00 A |  | 100% | start no earlier than 2026-06-06 09:00 | Бундин В | 1h | 1h |
| 1891 | 3.150.2 | заявка аналог |  | 20min | 2026-06-08 09:00 A | 2026-06-08 09:20 A | 1890 | 100% | start no earlier than 2026-06-08 09:00 | Шуранов Ю | 0.33h | 0.33h |
| 1892 | 3.150.3 | контроль доставка |  | 15min | 2026-06-17 09:20 A | 2026-06-17 09:35 A | 1891FS+7d | 100% | start no earlier than 2026-06-05 08:00 | Шуранов Ю | 0.25h | 0.25h |
| 1893 | 3.150.4 | замена |  | 2h | 2026-06-18 09:35 A | 2026-06-18 11:35 A | 1892FS+1d | 100% | start no earlier than 2026-06-05 08:00 | Тимофеев В | 2h | 2h |
| 1894 | 3.151 | **жиротопка** |  | 9.5d | 2026-06-09 09:00 A | 2026-06-22 13:00 A |  | 100% |  |  | 9h | 9h |
| 1895 | 3.151.1 | (проверить двигатель и сам насос) |  | 1h | 2026-06-09 09:00 A | 2026-06-09 10:00 A |  | 100% | start no earlier than 2026-06-09 09:00 | Тимофеев В | 1h | 1h |
| 1896 | 3.151.2 | ремонт заклинившего насоса жиров (сняли сегодя голову ) |  | 1h | 2026-06-18 09:00 A | 2026-06-18 10:00 A | 1895 | 100% | start no earlier than 2026-06-18 09:00 | Труфанов А | 1h | 1h |
| 1897 | 3.151.3 | установить насос, который перебрал Труфанов поставить на штатное место / если не заработает ставим новый | manual | 1h | 2026-06-21 09:00 A | 2026-06-21 10:00 A | 1896 | 100% | start no earlier than 2026-06-21 09:00 | Бундин В | 1h | 1h |
| 1898 | 3.151.4 | восстановить работу пускателя на насос перекачки с бака в бак |  | 4h | 2026-06-20 09:00 A | 2026-06-22 13:00 A |  | 100% | start no earlier than 2026-06-20 09:00 | Дедов В | 4h | 4h |
| 1899 | 3.151.5 | подключить все шланги подачи жира в баки | manual | 2h | 2026-06-22 09:00 A | 2026-06-22 11:00 A |  | 100% | start no earlier than 2026-06-22 09:00 | Труфанов А | 2h | 2h |
| 1900 | 3.152 | **трасса нерж жиротопка- баки, найти утечки устранить** |  | 0.75d | 2026-05-23 09:00 A | 2026-05-25 16:00 A |  | 100% |  |  | 6h | 6h |
| 1901 | 3.152.1 | заварить места утечки и восстановить утеплитель + греющий кабель |  | 6h | 2026-05-23 09:00 A | 2026-05-25 16:00 A |  | 100% | start no earlier than 2026-05-23 09:00 | Макаревич А | 6h | 6h |

| ID | WBS | Task | Duration | Start | Finish | Predecessors | Complete | Actual start | Actual finish | Constraint | Resources | Work | Actual work |
| --- | --- | --- | --- | --- | --- | --- | --- | --- | --- | --- | --- | --- | --- |
| 1902 | 3.153 | **защита ворот на мезонине загрузки** | 8h? | 2026-05-22 09:00 | 2026-05-22 18:00 |  | 100% | 2026-05-29 09:00 | 2026-08-13 13:00 |  |  | 27h | 27h |
| 1903 | 3.153.1 | покрасить конструкцию | 2h | 2026-05-31 09:00 A | 2026-06-01 11:00 A |  | 100% |  |  | start no earlier than 2026-05-31 09:00 | Макаревич А | 2h | 2h |
| 1904 | 3.153.2 | приварить дополнительную перекладину на защиту воротины | 2h | 2026-07-07 09:00 A | 2026-07-07 11:00 A |  | 100% |  |  | start no earlier than 2026-07-07 09:00 | Труфанов А; Тимофеев В | 4h | 4h |
| 1905 | 3.153.3 | заказать щетку и битумную ленту | 1h | 2026-05-31 11:00 A | 2026-06-01 10:00 A | 1903 | 100% |  |  | start no earlier than 2026-05-22 09:00 | Шуранов Ю | 1h | 1h |
| 1906 | 3.153.4 | контроль доставки | 1d? | 2026-05-31 12:00 A | 2026-06-01 18:00 A | 1905 | 100% |  |  | start no earlier than 2026-05-29 09:00 | Шуранов Ю | 8h | 8h |
| 1907 | 3.153.5 | установка щетки | 4h | 2026-08-13 09:00 A | 2026-08-13 13:00 A |  | 100% |  |  | start no earlier than 2026-08-13 09:00 | Макаревич А | 4h | 4h |
| 1908 | 3.153.6 | монтаж | 1d? | 2026-05-29 09:00 A | 2026-05-29 18:00 A |  | 100% |  |  | start no earlier than 2026-05-29 09:00 | Некрасов А | 8h | 8h |
| 1909 | 3.154 | установить щетку на поломоечную машину (щетка на складе) | 2h | 2026-05-21 09:00 A | 2026-05-21 11:00 A |  | 100% |  |  | start no earlier than 2026-05-21 08:00 | Бундин В | 2h | 2h |
| 1910 | 3.155 | площадка мезонина зона фасовки- убрать щели профиля битумной лентой | 2h | 2026-05-21 09:00 A | 2026-05-21 11:00 A |  | 100% |  |  | start no earlier than 2026-05-21 09:00 | Бундин В | 2h | 2h |
| 1911 | 3.156 | прикрутить дюзы форсунок подачи воды в прекондиционер, взять у меня на столе. | 1h | 2026-05-22 09:00 A | 2026-05-22 10:00 A |  | 100% |  |  | start no earlier than 2026-05-22 09:00 | Тимофеев В | 1h | 1h |
| 1912 | 3.157 | проверить насос подачи жира со 2 бака на барабаны, Викторович его разобрал | 2h | 2026-05-19 08:00 A | 2026-05-19 11:00 A |  | 100% |  |  | start no earlier than 2026-05-19 08:00 | Дедов В | 2h | 2h |
| 1913 | 3.158 | проверить рабочий или нет циркуляционный насос для змеевика на жиротопке | 1h | 2026-05-19 08:00 A | 2026-05-19 10:00 A |  | 100% |  |  | start no earlier than 2026-05-19 08:00 | Дедов В | 1h | 1h |
| 1914 | 3.159 | проверка оборудования на жирах водой | 3h | 2026-05-19 09:00 A | 2026-05-19 12:00 A |  | 100% |  |  | start no earlier than 2026-05-20 09:00 | Тимофеев В | 3h | 3h |
| 1915 | 3.160 | покраска пол под лотком барабан-охладитель | 1h | 2026-05-15 09:00 A | 2026-05-15 10:00 A |  | 100% |  |  | start no earlier than 2026-05-15 09:00 | Бобренок В | 1h | 1h |
| 1916 | 3.161 | **ремонт ворот рольставня** | 4.12d | 2026-05-14 09:00 A | 2026-05-20 10:00 A |  | 100% |  |  |  |  | 2h | 2h |
| 1917 | 3.161.1 | вызывать сервис | 1h | 2026-05-14 09:00 A | 2026-05-14 10:00 A |  | 100% |  |  | start no earlier than 2026-05-14 09:00 | Зорькин В | 1h | 1h |
| 1918 | 3.161.2 | контроль работ | 1h | 2026-05-20 09:00 A | 2026-05-20 10:00 A |  | 100% |  |  | start no earlier than 2026-05-20 09:00 | Зорькин В | 1h | 1h |
| 1919 | 3.162 | вырезать косая пластина в воронку пневмотранспорта на подачу жиров | 2h | 2026-05-14 09:00 A | 2026-05-14 11:00 A |  | 100% |  |  | start no earlier than 2026-05-14 09:00 | Макаревич А | 2h | 2h |
| 1920 | 3.163 | убрать бороду от вентиляторов | 4h | 2026-05-12 09:00 A | 2026-05-12 13:00 A |  | 100% |  |  | start no earlier than 2026-05-12 09:00 | Некрасов А; Труфанов А | 8h | 8h |
| 1921 | 3.164 | монтаж кабель управления заслонками вентиляторы окно | 4h | 2026-05-20 09:00 A | 2026-05-20 13:00 A |  | 100% |  |  | start no earlier than 2026-05-22 09:00 | Некрасов А; Бундин В | 8h | 8h |
| 1922 | 3.165 | **автоматика управления смесителями** | 80.38d | 2026-05-04 09:00 A | 2026-08-24 12:00 A |  | 100% |  |  |  |  | 35h | 35h |
| 1923 | 3.165.1 | поменять местами переключатели управления смесителями левый что бы включал поперечный смеситель | 2h | 2026-07-12 09:00 A | 2026-07-13 11:00 A |  | 100% |  |  | start no earlier than 2026-07-12 09:00 | Дедов В | 2h | 2h |
| 1924 | 3.165.2 | сделать подключение красных смесителей по схеме Домоводова | 22h | 2026-05-18 09:00 A | 2026-05-20 16:00 A |  | 100% |  |  | start no earlier than 2026-05-19 09:00 | Дедов В | 22h | 22h |
| 1925 | 3.165.3 | доработка схемы управления смесителями по логике ТЗ, упорядочить монтаж, промаркировать соденения | 8h | 2026-05-04 09:00 A | 2026-05-04 18:00 A |  | 100% |  |  | start no earlier than 2026-05-04 09:00 | Дедов В | 8h | 8h |
| 1926 | 3.165.4 | уложить красиво все провода в шкафу управления смесителями | 3h | 2026-08-24 09:00 A | 2026-08-24 12:00 A |  | 100% |  |  | start no earlier than 2026-08-24 09:00 | Дедов В | 3h | 3h |

| ID | WBS | Task | Type | Duration | Start | Finish | Predecessors | Complete | Constraint | Resources | Work | Actual work |
| --- | --- | --- | --- | --- | --- | --- | --- | --- | --- | --- | --- | --- |
| 1927 | 3.166 | **установить воздуховод на 300мм на красные смесители** |  | 6.25d | 2026-05-08 08:00 A | 2026-05-18 11:00 A |  | 100% |  |  | 4h | 4h |
| 1928 | 3.166.1 | заказать другой диаметр | milestone | 0d | 2026-05-08 08:00 A | 2026-05-08 08:00 A |  | 100% | start no earlier than 2026-05-08 08:00 | Зорькин В |  |  |
| 1929 | 3.166.2 | установить ф300 | milestone | 0h | 2026-05-13 09:00 A | 2026-05-13 09:00 A |  | 100% | start no earlier than 2026-05-13 09:00 | Тимофеев В; Зорькин В |  |  |
| 1930 | 3.166.3 | красные смесители вернуть воздуховоды (доработать рукав пересыпки воронка-смеситель) |  | 2h | 2026-05-13 09:00 A | 2026-05-13 11:00 A |  | 100% | start no earlier than 2026-05-13 09:00 | Тимофеев В | 2h | 2h |
| 1931 | 3.166.4 | сборка рукав на второй смеситель. Сшить по образцу |  | 2h | 2026-05-18 09:00 A | 2026-05-18 11:00 A |  | 100% | start no earlier than 2026-05-18 09:00 | Тимофеев В | 2h | 2h |
| 1932 | 3.167 | проверить почему не запускается приточная вентиляция в вент. Камере 7,5кВт |  | 1h | 2026-04-29 08:00 A | 2026-04-29 10:00 A |  | 100% | start no earlier than 2026-04-29 08:00 | Дедов В | 1h | 1h |
| 1933 | 3.168 | прозвонить кнопку индикации водителя под сиденьем (позвони объясню) |  | 2h | 2026-04-15 09:00 A | 2026-04-15 11:00 A |  | 100% | start no earlier than 2026-04-15 08:00 | Бундин В | 2h | 2h |
| 1934 | 3.169 | проверить приход с Китая по шнекам и гильзам |  | 1h | 2026-04-09 09:00 A | 2026-04-09 10:00 A |  | 100% | start no earlier than 2026-04-09 08:00 | Шуранов Ю | 1h | 1h |
| 1935 | 3.170 | собрать и установить мойку (со старой прикрутить смеситель) мойка у Веры на складе на 2 верхнем ярусе стеллажей | manual | 2h | 2026-04-05 09:00 A | 2026-04-05 11:00 A |  | 100% | start no earlier than 2026-04-05 09:00 | Труфанов А | 2h | 2h |
| 1936 | 3.171 | вывоз 3 поддона с мусором |  | 30min | 2026-03-24 09:00 A | 2026-03-24 09:30 A |  | 100% | start no earlier than 2026-03-24 09:00 | Некрасов А; Труфанов А | 1h | 1h |
| 1937 | 3.172 | установить отбойники на стеллажи | manual | 8h | 2026-03-29 09:00 A | 2026-03-29 18:00 A |  | 100% | start no earlier than 2026-03-29 09:00 | Бундин В | 8h | 8h |
| 1938 | 3.173 | установить отбойники на стеллажи | manual | 6h | 2026-04-18 09:00 A | 2026-04-18 16:00 A |  | 100% | start no earlier than 2026-04-18 09:00 | Бобренок В | 6h | 6h |
| 1939 | 3.174 | уборка зона курилка / венткамера |  | 4h | 2026-03-17 09:00 A | 2026-03-17 13:00 A |  | 100% | start no earlier than 2026-03-17 09:00 | Тимофеев В; Некрасов А; Макаревич А; Труфанов А | 16h | 16h |
| 1940 | 3.175 | **сборка квадропак** |  | 13.25d | 2026-05-06 09:00 A | 2026-05-25 11:00 A |  | 100% |  |  | 14h | 14h |
| 1941 | 3.175.1 | подвести воздух к квадропаку |  | 4h | 2026-05-22 09:00 A | 2026-05-22 13:00 A |  | 100% | start no earlier than 2026-05-22 09:00 | Тимофеев В | 4h | 4h |
| 1942 | 3.175.2 | установить перед пневмораспределителями влагоотделитель |  | 2h | 2026-05-24 09:00 A | 2026-05-25 11:00 A |  | 100% | start no earlier than 2026-05-24 09:00 | Дедов В | 2h | 2h |
| 1943 | 3.175.3 | подключить квадропак к щитку кабель 5х2,5 |  | 4h | 2026-05-06 09:00 A | 2026-05-06 13:00 A |  | 100% | start no earlier than 2026-05-06 09:00 | Труфанов А; Тимофеев В | 8h | 8h |
| 1944 | 3.176 | крепление магистрали компрессора. Зона дрожировки |  | 1h | 2026-03-08 09:00 A | 2026-03-09 10:00 A |  | 100% | start no earlier than 2026-03-08 09:00 | Бундин В | 1h | 1h |
| 1945 | 3.177 | Собрать транспортер тип2 (уточнить у Шуранова)/ доделать |  | 3h | 2026-03-08 09:00 A | 2026-03-09 12:00 A |  | 100% | start no earlier than 2026-03-08 09:00 | Бобренок В | 3h | 3h |
| 1946 | 3.178 | **Покраска лестницы** |  | 43d | 2026-03-04 09:00 A | 2026-05-01 18:00 A |  | 100% |  |  | 116.33h | 116.33h |
| 1947 | 3.178.1 | Заявка на краску |  | 20min | 2026-03-04 09:00 A | 2026-03-04 09:20 A |  | 100% | start no earlier than 2026-03-04 09:00 | Зорькин В | 0.33h | 0.33h |
| 1948 | 3.178.2 | Доставка |  | 10d | 2026-03-04 09:20 A | 2026-03-18 09:20 A | 1947 | 100% | start no earlier than 2026-03-03 08:00 | Карабанов | 80h | 80h |
| 1949 | 3.178.3 | Работа по покраске |  | 6h | 2026-04-28 09:00 A | 2026-04-28 16:00 A | 1948 | 100% | start no earlier than 2026-04-28 09:00 | оперторы2; Олег | 12h | 12h |
| 1950 | 3.178.4 | покраска колонны в коридоре |  | 4h | 2026-04-28 09:00 A | 2026-04-28 13:00 A |  | 100% | start no earlier than 2026-04-28 08:00 | оперторы2; Олег | 8h | 8h |
| 1951 | 3.178.5 | покарска потолок в корридоре |  | 2d | 2026-04-30 09:00 A | 2026-05-01 18:00 A |  | 100% | start no earlier than 2026-04-30 09:00 | оператор2 | 16h | 16h |

| ID | WBS | Task | Duration | Start | Finish | Predecessors | Complete | Actual start | Actual finish | Total slack | Constraint | Resources | Work | Actual work |
| --- | --- | --- | --- | --- | --- | --- | --- | --- | --- | --- | --- | --- | --- | --- |
| 1952 | 3.179 | **доработка лотка барабан-охладитель - снизить скорость падения, установить сетку** | 1.5d? | 2026-04-14 09:00 | 2026-04-15 13:00 |  | 100% | 2026-05-13 09:00 | 2026-06-17 18:00 |  |  |  | 46.75h | 46.75h |
| 1953 | 3.179.1 | сборка кронштейны + стека | 5h | 2026-05-13 09:00 A | 2026-05-13 15:00 A |  | 100% |  |  |  | start no earlier than 2026-05-13 09:00 | Труфанов А; Некрасов А | 10h | 10h |
| 1954 | 3.179.2 | сборка ручки, установка. Фотоотчет | 2h | 2026-05-15 09:00 A | 2026-05-15 11:00 A |  | 100% |  |  |  | start no earlier than 2026-05-15 09:00 | Некрасов А; Труфанов А | 4h | 4h |
| 1955 | 3.179.3 | сборка вращающаяся заслонка | 4h | 2026-05-15 11:00 A | 2026-05-15 16:00 A | 1954 | 100% |  |  |  | start no earlier than 2026-05-15 09:00 | Некрасов А; Труфанов А | 8h | 8h |
| 1956 | 3.179.4 | доработка пластины, что бы не клинила | 1h | 2026-05-21 09:00 A | 2026-05-21 10:00 A |  | 100% |  |  |  | start no earlier than 2026-05-22 09:00 | Некрасов А; Бундин В | 2h | 2h |
| 1957 | 3.179.5 | заказ на лазере пластину для регулировки шибера | 1d? | 2026-05-25 09:00 A | 2026-05-25 18:00 A |  | 100% |  |  |  | start no earlier than 2026-05-25 09:00 | Зорькин В | 8h | 8h |
| 1958 | 3.179.6 | чертеж пластина фиксации рычага | 2h | 2026-05-19 09:00 A | 2026-05-19 11:00 A | 1955 | 100% |  |  |  | start no earlier than 2026-05-19 09:00 | Зорькин В | 2h | 2h |
| 1959 | 3.179.7 | заявка на изготвление на лазер | 15min | 2026-05-20 11:00 A | 2026-05-20 11:15 A | 1958FS+1d | 100% |  |  |  | start no earlier than 2026-05-15 08:00 | Зорькин В | 0.25h | 0.25h |
| 1960 | 3.179.8 | контроль изг | 15min | 2026-06-01 09:00 A | 2026-06-01 09:15 A | 1959FS+5d | 100% |  |  |  | start no earlier than 2026-06-01 09:00 | Зорькин В | 0.25h | 0.25h |
| 1961 | 3.179.9 | доставка орг | 15min | 2026-06-05 09:00 A | 2026-06-05 09:15 A | 1960FS+1d | 100% |  |  |  | start no earlier than 2026-06-05 09:00 | Зорькин В | 0.25h | 0.25h |
| 1962 | 3.179.10 | сборка рычага | 4h | 2026-06-08 09:15 A | 2026-06-08 14:15 A | 1961FS+1d | 100% |  |  |  | start no earlier than 2026-06-06 09:00 | Бундин В | 4h | 4h |
| 1963 | 3.179.11 | сделать напраляшку на шибере регулируемую- сыпит в одну сторону | 1d? | 2026-06-17 09:00 A | 2026-06-17 18:00 A |  | 100% |  |  |  | start no earlier than 2026-06-23 09:00 | Тимофеев В | 8h | 8h |
| 1964 | 3.180 | сборка система отопления 2 этаж | 1d? | 2026-06-15 09:00 | 2026-06-15 18:00 |  |  |  |  | 204.59d | start no earlier than 2026-06-15 09:00 | Труфанов А; Некрасов А; Олег | 24h |  |
| 1965 | 3.181 | **заменить сопряжение смесителей на гибк вставку** | 29.25d | 2026-03-19 09:00 A | 2026-04-29 11:00 A |  | 100% |  |  |  |  |  | 122.5h | 122.5h |
| 1966 | 3.181.1 | заявка | 30min | 2026-03-19 09:00 A | 2026-03-19 09:30 A |  | 100% |  |  |  | start no earlier than 2026-03-19 09:00 | Зорькин В | 0.5h | 0.5h |
| 1967 | 3.181.2 | доставка | 15d | 2026-03-19 09:30 A | 2026-04-09 09:30 A | 1966 | 100% |  |  |  | start no earlier than 2026-02-27 08:00 | Карабанов | 120h | 120h |
| 1968 | 3.181.3 | замена | 2h | 2026-04-29 09:00 A | 2026-04-29 11:00 A | 1967 | 100% |  |  |  | start no earlier than 2026-04-29 09:00 | Тимофеев В | 2h | 2h |
| 1969 | 3.182 | **приточная вентиляция** | 154.25d | 2026-03-06 09:00 A | 2026-09-29 11:00 A |  | 100% |  |  |  |  |  | 13.5h | 13.5h |
| 1970 | 3.182.1 | визит Евгения. Контроль монтажа | 30min | 2026-03-06 09:00 A | 2026-03-06 09:30 A |  | 100% |  |  |  | start no earlier than 2026-03-06 09:00 | Домоводов К | 0.5h | 0.5h |
| 1971 | 3.182.2 | подключить силовой кабель в ШУ (лежит в лотке) | 3h | 2026-03-13 09:00 A | 2026-03-13 12:00 A |  | 100% |  |  |  | start no earlier than 2026-03-13 09:00 | Подрядчик | 3h | 3h |
| 1972 | 3.182.3 | монтаж изоляционных прокладок вводный автомат между фазами | 2h | 2026-09-24 09:00 A | 2026-09-24 11:00 A |  | 100% |  |  |  | start no earlier than 2026-09-24 09:00 | Дедов В | 2h | 2h |
| 1973 | 3.182.4 | подключить нулевой провод шкаф управления | 2h | 2026-09-24 09:00 A | 2026-09-24 11:00 A |  | 100% |  |  |  | start no earlier than 2026-09-24 09:00 | Дедов В | 2h | 2h |
| 1974 | 3.182.5 | монтаж перемычек от автомата на ТВ реле . Звонить Дедову | 2h | 2026-09-24 09:00 A | 2026-09-24 11:00 A |  | 100% |  |  |  | start no earlier than 2026-09-24 09:00 | Дедов В | 2h | 2h |
| 1975 | 3.182.6 | замена схемы включения вентилятор вытяжка / приточка | 2h | 2026-05-04 09:00 A | 2026-05-04 11:00 A |  | 100% |  |  |  | start no earlier than 2026-05-04 09:00 | Дедов В | 2h | 2h |
| 1976 | 3.182.7 | проверить все подключения / тест | 2h | 2026-09-29 09:00 A | 2026-09-29 11:00 A |  | 100% |  |  |  | start no earlier than 2026-09-29 09:00 | Дедов В | 2h | 2h |
| 1977 | 3.183 | установить гидроаккумулятор | 2h | 2026-03-03 09:00 A | 2026-03-03 11:00 A |  | 100% |  |  |  | start no earlier than 2026-03-03 09:00 | Тимофеев В | 2h | 2h |
| 1978 | 3.184 | тест герметичности. жиропровод нерж оборудовать греющим кабелем + утеплитель. | 2h | 2026-06-01 09:00 A | 2026-06-01 11:00 A |  | 100% |  |  |  | start no earlier than 2026-05-31 09:00 | Макаревич А | 2h | 2h |

| ID | WBS | Task | Type | Duration | Start | Finish | Complete | Actual finish | Total slack | Constraint | Resources | Work | Actual work |
| --- | --- | --- | --- | --- | --- | --- | --- | --- | --- | --- | --- | --- | --- |
| 1979 | 3.185 | **установить перила площадка загрузки навески** |  | 0.25d | 2026-05-27 09:00 A | 2026-05-27 11:00 A | 100% |  |  |  |  | 2h | 2h |
| 1980 | 3.185.1 | покрасить перила |  | 2h | 2026-05-27 09:00 A | 2026-05-27 11:00 A | 100% |  |  | start no earlier than 2026-05-27 09:00 | оператор2 | 2h | 2h |
| 1981 | 3.186 | дорабать качелю безопасности на площадке загрузки навески что бы не задевала за вентиляцию |  | 2h | 2026-05-12 09:00 A | 2026-05-12 11:00 A | 100% |  |  | start no earlier than 2026-05-12 09:00 | Некрасов А | 2h | 2h |
| 1982 | 3.187 | подготовить отражатели тепла на подшипники печи линия 4 |  | 8h | 2025-09-01 09:00 | 2025-09-01 18:00 |  |  | 409.59d | start no earlier than 2025-08-30 09:00 | Тимофеев В | 8h |  |
| 1983 | 3.188 | усилить раму прекондиционера |  | 1d? | 2026-04-28 08:00 A | 2026-04-28 18:00 A | 100% |  |  | start no earlier than 2026-04-28 08:00 | Тимофеев В | 8h | 8h |
| 1984 | 3.189 | переместить магнит загрузки сырья |  | 2h | 2026-05-07 09:00 A | 2026-05-07 11:00 A | 100% |  |  | start no earlier than 2026-05-07 09:00 | Тимофеев В | 2h | 2h |
| 1985 | 3.190 | труба выход пара греет шнек - переместить |  | 1d? | 2026-06-19 09:00 A | 2026-06-19 18:00 A | 100% |  |  | start no earlier than 2026-06-19 09:00 | Тимофеев В | 8h | 8h |
| 1986 | 3.191 | герметизация примыкание на выходе из печи |  | 2d | 2026-05-18 09:00 A | 2026-05-19 18:00 A | 100% |  |  | start no earlier than 2026-05-18 09:00 | Олег | 16h | 16h |
| 1987 | 3.192 | обшить стены курилки |  | 2d | 2026-04-30 09:00 A | 2026-05-01 18:00 A | 100% |  |  | start no earlier than 2026-04-30 09:00 | Олег; Некрасов А | 32h | 32h |
| 1988 | 3.193 | покраска рамы воздуховодов уличные |  | 4h | 2026-05-27 09:00 | 2026-05-27 13:00 |  |  | 218.09d | start no earlier than 2026-05-27 09:00 | оператор2 | 4h |  |
| 1989 | 3.194 | Выяснить количество теплопотерь с печи на входе |  | 1h | 2026-08-28 09:00 | 2026-08-28 10:00 |  |  | 151.47d | start no earlier than 2026-08-28 09:00 | Зорькин В; Бобренок В | 2h |  |
| 1990 | 3.195 | Переделка входа пневмотрассы с печи на жиры, сделать плавный переход из двух углов по 45 |  | 4h | 2026-07-24 09:00 A | 2026-07-24 13:00 A | 100% |  |  | start no earlier than 2026-07-24 09:00 | Бундин В | 4h | 4h |
| 1991 | 3.196 | **Печь** |  | 0d | 2026-07-25 09:00 A | 2026-07-26 11:00 A | 100% |  |  |  |  | 6h | 6h |
| 1992 | 3.196.1 | Переделка входа пневмотрассы с печи на жиры, сделать плавный переход из двух углов по 45, закончить если Валентин не доделал или взять в работу если Валентин не начал. Уточнить у него как он хотел сделать. | manual | 4h | 2026-07-25 09:00 A | 2026-07-25 13:00 A | 100% |  |  | start no earlier than 2026-07-25 09:00 | Макаревич А | 4h | 4h |
| 1993 | 3.196.2 | 4 зона шкаф управления не набирает заданную температуру, выяснить причину/устранить | manual | 2h | 2026-07-26 09:00 A | 2026-07-26 11:00 A | 100% |  |  | start no earlier than 2026-07-26 09:00 | Бобренок В | 2h | 2h |
| 1994 | 3.197 | **розетки** |  | 0.25d | 2026-07-25 09:00 A | 2026-07-27 11:00 A | 100% |  |  |  |  | 6h | 6h |
| 1995 | 3.197.1 | Монтаж розетки для болера, где мойка экструдера, подключиться к резерву ШУ на экструдере | manual | 2h | 2026-07-25 09:00 A | 2026-07-25 11:00 A | 100% |  |  | start no earlier than 2026-07-25 09:00 | Бобренок В | 2h | 2h |
| 1996 | 3.197.2 | Монтаж розетки, где ворота выхода готовой продукции | manual | 2h | 2026-07-27 09:00 A | 2026-07-27 11:00 A | 100% |  |  |  | Некрасов А; Труфанов А | 4h | 4h |
| 1997 | 3.198 | **Дражжировка** |  | 0d | 2026-07-26 09:00 A | 2026-07-26 11:00 A | 100% |  |  |  |  | 2h | 2h |
| 1998 | 3.198.1 | Устранить течь за раковиной. Вода перекрывается на потолке возле главной вентилляции | manual | 2h | 2026-07-26 09:00 A | 2026-07-26 11:00 A | 100% |  |  | start no earlier than 2026-07-26 09:00 | Бобренок В | 2h | 2h |
| 1999 | 3.199 | обшить стены вент камеры |  | 2d | 2026-05-06 09:00 A | 2026-05-07 18:00 A | 100% |  |  | start no earlier than 2026-05-06 09:00 | Олег; Некрасов А | 32h | 32h |
| 2000 | 3.200 | убрать металл 100*100 в зону охладителя или корридор |  | 1h | 2026-03-02 09:00 A | 2026-03-02 10:00 A | 100% |  |  | start no earlier than 2026-03-02 09:00 | Некрасов А; Труфанов А | 2h | 2h |
| 2001 | 4 | **4 склад** |  | 109.75d | 2026-03-13 09:00 A | 2026-07-15 16:00 | 100% | 2026-07-29 11:00 |  |  |  | 93.25h | 93.25h |
| 2002 | 4.1 | реверс направления кнопок движения вперед-назад ричтрака |  | 2h | 2026-07-14 08:00 A | 2026-07-14 11:00 A | 100% |  |  | start no earlier than 2026-07-14 08:00 | Дедов В | 2h | 2h |
| 2003 | 4.2 | 2 ветки не работают светильники -разобраться |  | 1h | 2026-07-02 09:00 A | 2026-07-02 10:00 A | 100% |  |  | start no earlier than 2026-07-02 09:00 | Тимофеев В | 1h | 1h |
| 2004 | 4.3 | Выяснить почему перегорают светильники |  | 2h | 2026-07-29 08:00 A | 2026-07-29 11:00 A | 100% |  |  | start no earlier than 2026-07-29 08:00 | Дедов В | 2h | 2h |
| 2005 | 4.4 | замена светильников |  | 8h | 2026-04-17 09:00 A | 2026-04-17 18:00 A | 100% |  |  | start no earlier than 2026-04-17 08:00 | Некрасов А; Труфанов А | 16h | 16h |
| 2006 | 4.5 | сборка рохли 1шт |  | 1h | 2026-03-13 09:00 A | 2026-03-13 10:00 A | 100% |  |  | start no earlier than 2026-03-13 09:00 | Тимофеев В | 1h | 1h |
| 2007 | 4.6 | ремонт обрамление погрузочной рампы |  | 4h | 2026-05-28 09:00 A | 2026-05-28 13:00 A | 100% |  |  | start no earlier than 2026-05-28 09:00 | Олег | 4h | 4h |
| 2008 | 4.7 | замена неисправных светильников |  | 1d | 2026-03-14 09:00 A | 2026-03-16 18:00 A | 100% |  |  | start no earlier than 2026-03-14 09:00 | Некрасов А; Бобренок В | 15h | 15h |

| ID | WBS | Task | Type | Duration | Start | Finish | Predecessors | Complete | Remaining | Actual start | Total slack | Constraint | Resources | Work | Actual work |
| --- | --- | --- | --- | --- | --- | --- | --- | --- | --- | --- | --- | --- | --- | --- | --- |
| 2009 | 4.8 | **замена неисправных светильников** |  | 87.75d | 2026-03-16 09:00 A | 2026-07-15 16:00 A |  | 100% |  |  |  |  |  | 52.25h | 52.25h |
| 2010 | 4.8.1 | заявка светильники |  | 15min | 2026-03-16 09:00 A | 2026-03-16 09:15 A |  | 100% |  |  |  | start no earlier than 2026-03-16 09:00 | Шуранов Ю | 0.25h | 0.25h |
| 2011 | 4.8.2 | доставка |  | 5d | 2026-03-16 09:15 A | 2026-03-23 09:15 A | 2010 | 100% |  |  |  | start no earlier than 2026-03-12 08:00 | Карабанов | 40h | 40h |
| 2012 | 4.8.3 | замена |  | 6h | 2026-07-15 09:00 A | 2026-07-15 16:00 A | 2011 | 100% |  |  |  | start no earlier than 2026-07-15 09:00 | Некрасов А; Труфанов А | 12h | 12h |
| 2013 | 5 | **5 цех** |  | 974.25d? | 2023-05-29 09:00 A | 2027-02-02 11:00 |  | 64% | 350.12d? |  | 26.34d |  |  | 1959.25h | 1253.42h |
| 2014 | 5.1 | Сделать защелку для прижима сетки на дробилку |  | 1h | 2026-11-09 09:00 A | 2026-11-09 10:00 A |  | 100% |  |  |  | start no earlier than 2026-11-09 08:00 | Некрасов А | 1h | 1h |
| 2015 | 5.2 | монтаж защелки на дробилку |  | 1h | 2026-11-09 09:00 A | 2026-11-09 10:00 A |  | 100% |  |  |  | start no earlier than 2026-11-09 09:00 | Макаревич А | 1h | 1h |
| 2016 | 5.3 | Замена резинок на дробилке, осмотре всех уплотнений/замена при необходимости | manual | 1h | 2026-11-09 09:00 A | 2026-11-09 10:00 A |  | 100% |  |  |  | start no earlier than 2026-11-09 09:00 | Макаревич А | 1h | 1h |
| 2017 | 5.4 | Поставить крышку, которую изготовил бобренок, для тельфера |  | 1h | 2026-11-06 09:00 | 2026-11-06 10:00 |  |  |  |  | 92.47d | start no earlier than 2026-11-06 08:00 | Макаревич А; Николаев | 2h |  |
| 2018 | 5.5 | ТО в пятом цеху, осмотр, дефектовка, протяжка на всем оборудовании | manual | 6h | 2026-11-06 09:00 | 2026-11-06 16:00 |  |  |  |  |  | start no earlier than 2026-11-06 09:00 | Макаревич А; Николаев | 12h |  |
| 2019 | 5.6 | Запенить отверстие от кабеля в углу | manual | 30min | 2026-11-08 09:00 A | 2026-11-08 09:30 A |  | 100% |  |  |  | start no earlier than 2026-11-08 09:00 | Дедов В | 0.5h | 0.5h |
| 2020 | 5.7 | 5а подключить автоматику ворот |  | 1h | 2026-11-10 09:00 | 2026-11-10 10:00 |  |  |  |  | 88.47d | start no earlier than 2026-11-10 09:00 | Некрасов А | 1h |  |
| 2021 | 5.8 | Подготовка к монтажу доп отопления 5 цех. Собрать список материала, чего не хватает. Что расстаскали |  | 1h | 2026-11-30 09:00 | 2026-11-30 10:00 |  |  |  |  | 72.47d | start no earlier than 2026-11-30 09:00 | Труфанов А; Некрасов А | 2h |  |
| 2022 | 5.9 | ремонт хомут с сито |  | 2h | 2026-10-27 09:00 A | 2026-10-27 11:00 A |  | 100% |  |  |  | start no earlier than 2026-10-27 08:00 | Бундин В | 2h | 2h |
| 2023 | 5.10 | изготовить ящик-крышку 5гран для щитка с контакторами на растариватель |  | 2h | 2026-10-29 09:00 A | 2026-10-29 11:00 A |  | 100% |  |  |  | start no earlier than 2026-10-29 09:00 | Бобренок В | 2h | 2h |
| 2024 | 5.11 | Ремонт дробилки |  | 3h | 2026-10-27 09:00 A | 2026-10-27 12:00 A |  | 100% |  |  |  | start no earlier than 2026-10-27 08:00 | Тимофеев В; Бобренок В; Николаев | 9h | 9h |
| 2025 | 5.12 | **изготовить бункер нерж** |  | 77d? | 2026-06-06 09:00 | 2026-09-16 18:00 |  | 97% | 2.29d? | 2026-03-16 09:00 |  |  |  | 151.5h | 147.5h |
| 2026 | 5.12.1 | доработка / покрасить уголок |  | 4h | 2026-10-19 09:00 A | 2026-10-19 13:00 A |  | 100% |  |  |  | start no earlier than 2026-10-19 08:00 | Бундин В | 4h | 4h |
| 2027 | 5.12.2 | печать фланец |  | 2h | 2026-10-22 09:00 | 2026-10-22 11:00 |  |  |  |  | 103.34d | start no earlier than 2026-10-22 09:00 | Домоводов К | 2h |  |
| 2028 | 5.12.3 | установить фильтр воздушный на крышку |  | 2h | 2026-10-22 09:00 | 2026-10-22 11:00 |  |  |  |  | 103.34d | start no earlier than 2026-10-22 09:00 | Бобренок В | 2h |  |
| 2029 | 5.12.4 | составить чертеж |  | 1h | 2026-03-16 09:00 A | 2026-03-16 10:00 A |  | 100% |  |  |  | start no earlier than 2026-03-16 09:00 | Зорькин В | 1h | 1h |
| 2030 | 5.12.5 | заявка на нерж |  | 30min | 2026-03-16 10:00 A | 2026-03-16 10:30 A | 2029 | 100% |  |  |  | start no earlier than 2026-02-27 08:00 | Зорькин В | 0.5h | 0.5h |
| 2031 | 5.12.6 | доставка |  | 10d | 2026-04-23 09:00 A | 2026-05-06 18:00 A | 2030 | 100% |  |  |  | start no earlier than 2026-04-23 09:00 | Карабанов | 80h | 80h |
| 2032 | 5.12.7 | проверка черетежей / подготовка к сборке |  | 1h | 2026-10-12 09:00 A | 2026-10-12 10:00 A |  | 100% |  |  |  | start no earlier than 2026-10-12 09:00 | Труфанов А; Зорькин В | 2h | 2h |
| 2033 | 5.12.8 | сборка | manual | 2d | 2026-10-16 09:00 A | 2026-10-17 18:00 A | 2031, 2032 | 100% |  |  |  | start no earlier than 2026-10-16 09:00 | Макаревич А; Труфанов А | 32h | 32h |
| 2034 | 5.12.9 | сборка шибер |  | 1d? | 2026-10-16 09:00 A | 2026-10-16 18:00 A |  | 100% |  |  |  | start no earlier than 2026-10-16 09:00 | Макаревич А | 8h | 8h |
| 2035 | 5.12.10 | покраска рама |  | 1d? | 2026-10-17 09:00 A | 2026-10-17 18:00 A |  | 100% |  |  |  | start no earlier than 2026-10-17 09:00 | Бундин В | 8h | 8h |
| 2036 | 5.12.11 | сборка крышка с крепеж для магнита |  | 1d? | 2026-10-19 09:00 A | 2026-10-19 18:00 A |  | 100% |  |  |  | start no earlier than 2026-10-19 08:00 | Труфанов А | 8h | 8h |
| 2037 | 5.12.12 | доработка / перевоз бункера / монтаж |  | 4h | 2026-10-20 09:00 A | 2026-10-20 13:00 A |  | 100% |  |  |  | start no earlier than 2026-10-20 09:00 | Труфанов А | 4h | 4h |
| 2038 | 5.13 | Закрепить табличку с графиком работы цеха, взять в кабинете у мастеров, можно присверлить, но аккуратно, посмотреть варианты крепляния на других цехах |  | 1h | 2026-10-12 09:00 A | 2026-10-12 10:00 A |  | 100% |  |  |  | start no earlier than 2026-10-12 08:00 | Бундин В | 1h | 1h |
| 2039 | 5.14 | Выбрать болеменее нормальные балки 2 шт для стеллажей лежат рядом с 5а в углу и закрепить их по аналогу других балок |  | 2h | 2026-10-13 09:00 A | 2026-10-13 11:00 A |  | 100% |  |  |  | start no earlier than 2026-10-13 09:00 | Макаревич А; Труфанов А | 4h | 4h |

| ID | WBS | Task | Duration | Start | Finish | Predecessors | Complete | Remaining | Total slack | Free slack | Constraint | Resources | Work | Actual work |
| --- | --- | --- | --- | --- | --- | --- | --- | --- | --- | --- | --- | --- | --- | --- |
| 2040 | 5.15 | **сборка полок для стеллажей архив бухгалтерии** | 8d? | 2026-10-22 09:00 | 2026-11-02 18:00 |  |  |  | 95.59d |  |  |  | 24h |  |
| 2041 | 5.15.1 | контроль доставка материал | 1d? | 2026-10-22 09:00 | 2026-10-22 18:00 |  |  |  | 100.59d | 5d | start no earlier than 2026-10-22 09:00 | Зорькин В | 8h |  |
| 2042 | 5.15.2 | сборка полок для стеллажей архив бухгалтерии | 1d? | 2026-11-02 09:00 | 2026-11-02 18:00 | 2041FS+1d |  |  | 95.59d |  | start no earlier than 2026-11-02 09:00 | Тимофеев В; Николаев | 16h |  |
| 2043 | 5.16 | **монтаж тепловые пушки подвесные 5 цех** | 86d | 2026-08-21 09:00 A | 2026-12-01 18:00 |  | 36% | 55.04d | 70.59d |  |  |  | 41h | 9h |
| 2044 | 5.16.1 | составить схему монтажа | 4h | 2026-08-26 09:00 A | 2026-08-26 13:00 A |  | 100% |  |  |  | start no earlier than 2026-08-26 09:00 | Зорькин В | 4h | 4h |
| 2045 | 5.16.2 | заявка на тепловые пушки вулкан | 2h | 2026-08-21 09:00 A | 2026-08-21 11:00 A |  | 100% |  |  |  | start no earlier than 2026-08-21 09:00 | Зорькин В | 2h | 2h |
| 2046 | 5.16.3 | контроль остатки нерж труба, фтинги | 2h | 2026-09-07 09:00 A | 2026-09-07 11:00 A | 2045 | 100% |  |  |  | start no earlier than 2026-09-07 09:00 | Зорькин В | 2h | 2h |
| 2047 | 5.16.4 | контроль доставки | 1h | 2026-09-21 09:00 A | 2026-09-21 10:00 A | 2046FS+7d | 100% |  |  |  | start no earlier than 2026-09-21 09:00 | Зорькин В | 1h | 1h |
| 2048 | 5.16.5 | монтаж | 2d | 2026-11-30 09:00 | 2026-12-01 18:00 | 2047FS+1d |  |  | 70.59d |  | start no earlier than 2026-11-30 09:00 | Некрасов А; Труфанов А | 32h |  |
| 2049 | 5.17 | на 2 этаж раковина Установка смесителей (краны) с гибкой подводкой, получить на складе | 1h | 2026-09-21 09:00 A | 2026-09-21 10:00 A |  | 100% |  |  |  | start no earlier than 2026-09-21 09:00 | Некрасов А | 1h | 1h |
| 2050 | 5.18 | ремонт дека от вибросито | 3h | 2026-09-12 09:00 A | 2026-09-12 12:00 A |  | 100% |  |  |  | start no earlier than 2026-09-12 09:00 | Макаревич А | 3h | 3h |
| 2051 | 5.19 | **установить зажим троса на тельфер** | 56d? | 2026-09-03 09:00 A | 2026-11-06 18:00 |  | 3% | 54.35d? | 91.59d |  |  |  | 16.5h | 0.25h |
| 2052 | 5.19.1 | заявка | 15min | 2026-09-03 09:00 A | 2026-09-03 09:15 A |  | 100% |  |  |  | start no earlier than 2026-09-03 09:00 | Зорькин В | 0.25h | 0.25h |
| 2053 | 5.19.2 | контроль доставки | 15min | 2026-10-28 09:00 | 2026-10-28 09:15 | 1234FS+5d |  |  | 97.56d | 5.97d | start no earlier than 2026-10-28 09:00 | Зорькин В | 0.25h |  |
| 2054 | 5.19.3 | монтаж (узнать у Артема) | 1d? | 2026-11-06 09:00 | 2026-11-06 18:00 | 1235FS+1d, 2053FS+1d |  |  | 91.59d |  | start no earlier than 2026-11-06 09:00 | Макаревич А; Николаев | 16h |  |
| 2055 | 5.20 | **ремонт насос водоснабжения** | 73.25d | 2026-09-03 09:00 A | 2026-11-26 11:00 A |  | 100% |  |  |  |  |  | 4.5h | 4.5h |
| 2056 | 5.20.1 | перекрутить американку для удобного обслуживания | 2h | 2026-11-26 09:00 A | 2026-11-26 11:00 A |  | 100% |  |  |  | start no earlier than 2026-11-26 09:00 | Макаревич А | 2h | 2h |
| 2057 | 5.20.2 | Сказать параметры, шильдик насосной станции передать зорькину | 15min | 2026-09-03 09:00 A | 2026-09-03 09:15 A |  | 100% |  |  |  | start no earlier than 2026-09-03 09:00 | Тимофеев В | 0.25h | 0.25h |
| 2058 | 5.20.3 | конртроль поставки | 15min | 2026-09-10 09:00 A | 2026-09-10 09:15 A | 2057 | 100% |  |  |  | start no earlier than 2026-09-10 09:00 | Зорькин В | 0.25h | 0.25h |
| 2059 | 5.20.4 | замена | 1h | 2026-09-11 09:15 A | 2026-09-11 10:15 A | 2058FS+1d | 100% |  |  |  | start no earlier than 2026-09-11 09:00 | Некрасов А; Макаревич А | 2h | 2h |
| 2060 | 5.21 | воставноить заземление на обоих ситах | 2h | 2026-09-04 09:00 A | 2026-09-04 11:00 A |  | 100% |  |  |  | start no earlier than 2026-09-04 09:00 | Бобренок В | 2h | 2h |
| 2061 | 5.22 | востановить контакт пульт тельфера у стены (переменный контакт при движении кабеля у пульта) | 1h | 2026-09-03 09:00 A | 2026-09-03 10:00 A |  | 100% |  |  |  | start no earlier than 2026-09-03 08:00 | Бобренок В | 1h | 1h |
| 2062 | 5.23 | подключить Олегу сварочный автомат | 1h | 2026-08-31 09:00 A | 2026-08-31 10:00 A |  | 100% |  |  |  | start no earlier than 2026-08-31 09:00 | Тимофеев В | 1h | 1h |
| 2063 | 5.24 | **подготовить сетку на мал дробилку 3 и 4мм** | 11.12d | 2026-09-12 09:00 A | 2026-09-23 10:00 A |  | 100% |  |  |  |  |  | 1.5h | 1.5h |
| 2064 | 5.24.1 | проверка отстатков сетки на складах | 30min | 2026-09-12 09:00 A | 2026-09-12 09:30 A |  | 100% |  |  |  | start no earlier than 2026-09-12 09:00 | Макаревич А | 0.5h | 0.5h |
| 2065 | 5.24.2 | вырезатиь сетку в размер | 1h | 2026-09-23 09:00 A | 2026-09-23 10:00 A | 2064FS+1d | 100% |  |  |  | start no earlier than 2026-09-29 09:00 | Тимофеев В | 1h | 1h |
| 2066 | 5.25 | ревизия шнека | 3h | 2026-08-17 09:00 A | 2026-08-17 12:00 A |  | 100% |  |  |  | start no earlier than 2026-08-17 09:00 | Бобренок В; Некрасов А | 6h | 6h |

| ID | WBS | Task | Type | Duration | Start | Finish | Predecessors | Complete | Remaining | Total slack | Free slack | Constraint | Resources | Work | Actual work |
| --- | --- | --- | --- | --- | --- | --- | --- | --- | --- | --- | --- | --- | --- | --- | --- |
| 2067 | 5.26 | **свет в туалет передать крепление светильника** |  | 1.12d | 2026-08-14 09:00 A | 2026-08-17 10:00 A |  | 100% |  |  |  |  |  | 2.25h | 2.25h |
| 2068 | 5.26.1 | проверить наличие светильника с боковым монтажем |  | 15min | 2026-08-14 09:00 A | 2026-08-14 09:15 A |  | 100% |  |  |  | start no earlier than 2026-08-14 09:00 | Домоводов К | 0.25h | 0.25h |
| 2069 | 5.26.2 | замена светильника / или закрепить |  | 1h | 2026-08-17 09:00 A | 2026-08-17 10:00 A | 2068 | 100% |  |  |  | start no earlier than 2026-08-15 09:00 | Бундин В | 1h | 1h |
| 2070 | 5.26.3 | закрепить светильник в коридоре -вход в туалет |  | 1h | 2026-08-17 09:00 A | 2026-08-17 10:00 A |  | 100% |  |  |  | start no earlier than 2026-08-17 09:00 | Бундин В | 1h | 1h |
| 2071 | 5.27 | трещина вибросито №2 1см ремонт |  | 6h | 2026-08-27 09:00 A | 2026-08-27 16:00 A |  | 100% |  |  |  | start no earlier than 2026-08-27 09:00 | Макаревич А | 6h | 6h |
| 2072 | 5.28 | трещина вибросито №1 кольцо. ремонт |  | 4h | 2026-08-28 09:00 A | 2026-08-28 13:00 A |  | 100% |  |  |  | start no earlier than 2026-08-28 09:00 | Макаревич А | 4h | 4h |
| 2073 | 5.29 | **проект новая дробилка** |  | 40.03d | 2026-08-21 09:00 A | 2026-10-06 09:15 |  | 17% | 33.37d | 116.56d |  |  |  | 144.25h | 24h |
| 2074 | 5.29.1 | **кабель для доп мощности** |  | 40.03d | 2026-08-21 09:00 A | 2026-10-06 09:15 |  | 17% | 33.37d | 116.56d |  |  |  | 144.25h | 24h |
| 2075 | 5.29.1.1 | составить ТЗ на монтаж кабеля |  | 3d | 2026-08-21 09:00 A | 2026-08-25 18:00 A |  | 100% |  |  |  | start no earlier than 2026-08-21 09:00 | Домоводов К | 24h | 24h |
| 2076 | 5.29.1.2 | получить КП / счет договор | milestone | 0d | 2026-09-09 09:00 | 2026-09-09 09:00 | 2075FS+2d |  |  | 116.56d | 0d | start no earlier than 2026-09-09 09:00 | Домоводов К |  |  |
| 2077 | 5.29.1.3 | предоплата |  | 15min | 2026-09-10 09:00 | 2026-09-10 09:15 | 2076FS+1d |  |  | 116.56d | 0d | start no earlier than 2026-08-10 08:00 | Домоводов К | 0.25h |  |
| 2078 | 5.29.1.4 | монтаж |  | 15d | 2026-09-20 09:15 | 2026-10-06 09:15 | 2077FS+10d |  |  | 116.56d |  | start no earlier than 2026-08-10 08:00 | Подрядчик | 120h |  |
| 2079 | 5.30 | **монтаж вода в 5ц** |  | 64.01d | 2026-08-10 08:00 A | 2026-10-26 09:05 |  | 96% | 2.66d | 101.58d |  |  |  | 128.08h | 125.08h |
| 2080 | 5.30.1 | Подключение греющего кабеля |  | 3h | 2026-09-16 09:00 A | 2026-09-16 12:00 A |  | 100% |  |  |  | start no earlier than 2026-09-16 09:00 | Некрасов А; Труфанов А | 6h | 6h |
| 2081 | 5.30.2 | подклюючить воду на прямую |  | 2h | 2026-09-14 09:00 A | 2026-09-14 11:00 A |  | 100% |  |  |  | start no earlier than 2026-09-15 09:00 | Тимофеев В | 2h | 2h |
| 2082 | 5.30.3 | Все доделать/подключить |  | 6h | 2026-09-18 09:00 A | 2026-09-18 16:00 A |  | 100% |  |  |  | start no earlier than 2026-09-18 09:00 | Труфанов А; Некрасов А | 12h | 12h |
| 2083 | 5.30.4 | установить в конце линии расширительный бак / защита от гидроудара |  | 2h | 2026-09-21 09:00 A | 2026-09-21 11:00 A |  | 100% |  |  |  | start no earlier than 2026-09-21 09:00 | Труфанов А; Некрасов А | 4h | 4h |
| 2084 | 5.30.5 | Установка точек воды для пожврного гидранта и набора воды для поломоечной машинки цех 3,4,5а и 5 |  | 6h | 2026-09-22 09:00 A | 2026-09-22 16:00 A |  | 100% |  |  |  | start no earlier than 2026-09-22 09:00 | Труфанов А; Некрасов А | 12h | 12h |
| 2085 | 5.30.6 | переключение линии "без бачка" |  | 2h | 2026-09-22 09:00 A | 2026-09-22 11:00 A | 2083 | 100% |  |  |  | start no earlier than 2026-09-22 09:00 | Труфанов А; Некрасов А | 4h | 4h |
| 2086 | 5.30.7 | тестирование системы |  | 2h | 2026-09-21 09:00 A | 2026-09-21 11:00 A | 2085 | 100% |  |  |  | start no earlier than 2026-09-18 08:00 | Труфанов А; Некрасов А | 4h | 4h |
| 2087 | 5.30.8 | выяснить возможность обмена тройников 1+1/4-1/2 на 3/4-1/2 |  | 15min | 2026-09-21 09:00 A | 2026-09-21 09:15 A |  | 100% |  |  |  | start no earlier than 2026-09-21 09:00 | Зорькин В | 0.25h | 0.25h |
| 2088 | 5.30.9 | Прокнуть греющий кабель | manual | 3h | 2026-09-16 09:00 A | 2026-09-16 12:00 A |  | 100% |  |  |  |  | Некрасов А; Труфанов А | 6h | 6h |
| 2089 | 5.30.10 | **монтаж трассы по 3ц** |  | 4.5d | 2026-08-11 09:00 A | 2026-08-17 13:00 A |  | 100% |  |  |  |  |  | 16.5h | 16.5h |
| 2090 | 5.30.10.1 | заявка хомуты сантех - получить дату поставки |  | 15min | 2026-08-11 09:00 A | 2026-08-11 09:15 A |  | 100% |  |  |  | start no earlier than 2026-08-11 09:00 | Домоводов К | 0.25h | 0.25h |
| 2091 | 5.30.10.2 | контроль доставки |  | 15min | 2026-08-14 09:15 A | 2026-08-14 09:30 A | 2090FS+3d | 100% |  |  |  | start no earlier than 2026-08-10 08:00 | Зорькин В | 0.25h | 0.25h |
| 2092 | 5.30.10.3 | монтаж продложть |  | 4h | 2026-08-14 09:30 A | 2026-08-14 14:30 A | 2091 | 100% |  |  |  | start no earlier than 2026-08-10 08:00 | Некрасов А; Бундин В | 8h | 8h |
| 2093 | 5.30.10.4 | монтаж продложть |  | 4h | 2026-08-17 09:00 A | 2026-08-17 13:00 A | 2091 | 100% |  |  |  | start no earlier than 2026-08-17 09:00 | Некрасов А; Бобренок В | 8h | 8h |

| ID | WBS | Task | Type | Duration | Start | Finish | Predecessors | Complete | Remaining | Total slack | Constraint | Resources | Work | Actual work |
| --- | --- | --- | --- | --- | --- | --- | --- | --- | --- | --- | --- | --- | --- | --- |
| 2094 | 5.30.11 | **монтаж труба в земле между 3 и 4ц- УЗО на грей кабель** |  | 64.01d | 2026-08-10 08:00 A | 2026-10-26 09:05 |  | 75% | 15.89d | 101.58d |  |  | 19.08h | 16.08h |
| 2095 | 5.30.11.1 | монтаж ф32 в ф40 |  | 4h | 2026-08-10 08:00 A | 2026-08-10 13:00 A |  | 100% |  |  | start no earlier than 2026-08-10 08:00 | Некрасов А; Макаревич А | 8h | 8h |
| 2096 | 5.30.11.2 | заявка греющий кабель внтуреннего монтажа + |  | 1h | 2026-08-11 09:00 A | 2026-08-11 10:00 A | 2095 | 100% |  |  | start no earlier than 2026-08-11 09:00 | Домоводов К | 1h | 1h |
| 2097 | 5.30.11.3 | заявка защита УЗО |  | 1h | 2026-08-24 09:00 A | 2026-08-24 10:00 A |  | 100% |  |  | start no earlier than 2026-08-24 09:00 | Зорькин В | 1h | 1h |
| 2098 | 5.30.11.4 | контоль доставка |  | 5min | 2026-10-26 09:00 A | 2026-10-26 09:05 A | 2096FS+5d, 2097 | 100% |  |  | start no earlier than 2026-10-26 09:00 | Зорькин В | 0.08h | 0.08h |
| 2099 | 5.30.11.5 | монтаж кабеля |  | 3h | 2026-09-16 12:00 A | 2026-09-16 16:00 A | 2098FS+1d, 2080 | 100% |  |  | start no earlier than 2026-09-16 09:00 | Некрасов А; Макаревич А | 6h | 6h |
| 2100 | 5.30.11.6 | монтаж щиток кабеля с УЗО |  | 3h | 2026-09-14 09:00 | 2026-09-14 12:00 |  |  |  | 137.22d | start no earlier than 2026-09-14 09:00 | Дедов В | 3h |  |
| 2101 | 5.30.12 | **монтаж трассы по воздуху м/д 4 и 5А** |  | 9.5d | 2026-08-11 09:00 A | 2026-08-24 13:00 A |  | 100% |  |  |  |  | 9.25h | 9.25h |
| 2102 | 5.30.12.1 | подготовка материал |  | 1h | 2026-08-11 09:00 A | 2026-08-11 10:00 A |  | 100% |  |  | start no earlier than 2026-08-11 09:00 | Некрасов А; Макаревич А | 1h | 1h |
| 2103 | 5.30.12.2 | контроль поставки рым 10 |  | 15min | 2026-08-21 09:00 A | 2026-08-21 09:15 A |  | 100% |  |  | start no earlier than 2026-08-21 09:00 | Зорькин В | 0.25h | 0.25h |
| 2104 | 5.30.12.3 | монтаж |  | 4h | 2026-08-24 09:00 A | 2026-08-24 13:00 A | 2103 | 100% |  |  | start no earlier than 2026-08-24 09:00 | Некрасов А; Тимофеев В | 8h | 8h |
| 2105 | 5.30.13 | монтаж щиток греющего кабеля по воздуху |  | 4h | 2026-09-16 09:00 A | 2026-09-16 13:00 A |  | 100% |  |  | start no earlier than 2026-09-16 09:00 | Труфанов А | 4h | 4h |
| 2106 | 5.30.14 | монтаж трассы по 4ц |  | 6h | 2026-08-18 09:00 A | 2026-08-18 16:00 A | 2091 | 100% |  |  | start no earlier than 2026-08-18 09:00 | Некрасов А; Макаревич А | 11h | 11h |
| 2107 | 5.30.15 | монтаж трассы по 5ц |  | 4h | 2026-08-19 09:00 A | 2026-08-19 13:00 A | 2106 | 100% |  |  | start no earlier than 2026-08-19 09:00 | Некрасов А; Макаревич А | 8h | 8h |
| 2108 | 5.30.16 | монтаж трассы по 5ц |  | 6h | 2026-08-24 09:00 A | 2026-08-24 16:00 A | 2106 | 100% |  |  | start no earlier than 2026-08-24 09:00 | Некрасов А; Макаревич А | 10h | 10h |
| 2109 | 5.31 | замена светильника перегоревшего у Большакова в кабинете |  | 2h | 2026-08-06 09:00 A | 2026-08-06 11:00 A |  | 100% |  |  | start no earlier than 2026-08-07 09:00 | Труфанов А | 2h | 2h |
| 2110 | 5.32 | устранить утечку воды в душе |  | 1h | 2026-08-06 09:00 A | 2026-08-06 10:00 A |  | 100% |  |  | start no earlier than 2026-08-06 08:00 | Бундин В | 1h | 1h |
| 2111 | 5.33 | **установить унитаз на 3 этаже** |  | 3.38d? | 2026-08-04 09:00 A | 2026-08-07 12:00 A |  | 100% |  |  |  | Бобренок В | 38h | 38h |
| 2112 | 5.33.1 | заказать гофру и гибкую вставку |  | 1d? | 2026-08-04 09:00 A | 2026-08-04 18:00 A |  | 100% |  |  | start no earlier than 2026-08-04 08:00 | Шуранов Ю | 8h | 8h |
| 2113 | 5.33.2 | установка унитаза (гофротруба и гибкая подводка и коронка у Большакова) коронку вернуть Большакову |  | 3h | 2026-08-07 09:00 A | 2026-08-07 12:00 A |  | 100% |  |  | start no earlier than 2026-08-07 09:00 | Труфанов А | 3h | 3h |
| 2114 | 5.34 | монтаж свет в туалете 3 этаж (оператора дадут в помощь) | manual | 6h | 2026-08-09 09:00 A | 2026-08-09 16:00 A |  | 100% |  |  | start no earlier than 2026-08-09 09:00 | Бобренок В | 6h | 6h |
| 2115 | 5.35 | прикрутить смотровые окна на дробилке, не хватает саморезов- просыпается сырье |  | 1h | 2026-08-02 09:00 A | 2026-08-03 10:00 A |  | 100% |  |  | start no earlier than 2026-08-02 09:00 | Макаревич А | 1h | 1h |
| 2116 | 5.36 | сборка ограничиетелей на сетку №2 для сито из лазера |  | 4h | 2026-07-17 09:00 A | 2026-07-17 13:00 A |  | 100% |  |  | start no earlier than 2026-07-17 09:00 | Макаревич А | 4h | 4h |
| 2117 | 5.37 | ремонт сетки, хомуты с 5ц |  | 2h | 2026-07-15 09:00 A | 2026-07-15 11:00 A |  | 100% |  |  | start no earlier than 2026-07-15 09:00 | Бундин В | 2h | 2h |
| 2118 | 5.38 | вырезать сетку 2мм на большую дробилку |  | 2h | 2026-07-15 09:00 A | 2026-07-15 11:00 A |  | 100% |  |  | start no earlier than 2026-07-15 09:00 | Бобренок В | 2h | 2h |
| 2119 | 5.39 | заменаить ножи на мал дробилке |  | 6h | 2026-07-06 08:00 A | 2026-07-06 16:00 A |  | 100% |  |  | start no earlier than 2026-07-06 08:00 | Дедов В | 6h | 6h |
| 2120 | 5.40 | заварить хомут от деко 5 ц. в слесарке |  | 2h | 2026-07-11 09:00 A | 2026-07-13 11:00 A |  | 100% |  |  | start no earlier than 2026-07-11 09:00 | Макаревич А | 2h | 2h |
| 2121 | 5.41 | Дефектовка кнопок растаривателя, ремонт, клинит кнопку |  | 30min | 2026-07-06 08:00 A | 2026-07-06 09:30 A |  | 100% |  |  | start no earlier than 2026-07-06 08:00 | Дедов В | 0.5h | 0.5h |
| 2122 | 5.42 | сито просечка с лазера - доплнить 4шт до 6-8 уголоков ограничителей. |  | 2h | 2026-06-26 08:00 A | 2026-06-26 11:00 A |  | 100% |  |  | start no earlier than 2026-06-26 08:00 | Макаревич А | 2h | 2h |
| 2123 | 5.43 | просечки нерж. наварить уголки, чтобы не падало внутрь |  | 2h | 2026-06-25 08:00 A | 2026-06-25 11:00 A |  | 100% |  |  | start no earlier than 2026-06-25 08:00 | Макаревич А | 2h | 2h |
| 2124 | 5.44 | на поворотную кнопку реверса шнека №1 установить бокс (взять на складе) |  | 1h | 2026-06-24 09:00 A | 2026-06-24 10:00 A |  | 100% |  |  | start no earlier than 2026-06-24 09:00 | Труфанов А | 1h | 1h |
| 2125 | 5.45 | развернуть ножи на большой дробилке, если не успеваем передаем по смене |  | 3h | 2026-06-23 08:00 A | 2026-06-23 12:00 A |  | 100% |  |  | start no earlier than 2026-06-23 08:00 | Труфанов А; Макаревич А | 6h | 6h |

| ID | WBS | Task | Duration | Start | Finish | Predecessors | Complete | Remaining | Actual finish | Total slack | Free slack | Constraint | Resources | Work | Actual work |
| --- | --- | --- | --- | --- | --- | --- | --- | --- | --- | --- | --- | --- | --- | --- | --- |
| 2126 | 5.46 | **протянуть все болтовые соединения: шиберы растаривателей, металлоконструкции под бункера и т.д. если нет болта - прикручиваем** | 3h? | 2026-06-23 09:00 A | 2026-06-23 12:00 |  | 100% |  | 2026-06-23 18:00 |  |  |  | Труфанов А | 11h | 11h |
| 2127 | 5.46.1 | заказать краску | 1d? | 2026-06-23 09:00 A | 2026-06-23 18:00 A |  | 100% |  |  |  |  | start no earlier than 2026-06-23 08:00 | Шуранов Ю | 8h | 8h |
| 2128 | 5.47 | проверить откуда гайку нашли на магните, растариватель-дробилка -шнеки -крепление магнитов | 1h | 2026-06-22 09:00 A | 2026-06-22 10:00 A |  | 100% |  |  |  |  | start no earlier than 2026-06-22 08:00 | Бундин В | 1h | 1h |
| 2129 | 5.48 | **закрепить штурвал на растаривателе 1** | 1d? | 2026-06-23 09:00 A | 2026-06-23 18:00 A |  | 100% |  |  |  |  |  | Бундин В | 16h | 16h |
| 2130 | 5.48.1 | заказываем растариватель | 1d? | 2026-06-23 09:00 A | 2026-06-23 18:00 A |  | 100% |  |  |  |  | start no earlier than 2026-06-23 09:00 | Шуранов Ю | 8h | 8h |
| 2131 | 5.49 | заварить просеиватель ближе к стеллажам и на правом (расскажу как) | 3h | 2026-06-11 09:00 A | 2026-06-11 12:00 A |  | 100% |  |  |  |  | start no earlier than 2026-06-11 09:00 | Бундин В | 3h | 3h |
| 2132 | 5.50 | ремонт просечку с вибросито, передать в 5ц | 2h | 2026-06-12 09:00 A | 2026-06-12 11:00 A |  | 100% |  |  |  |  | start no earlier than 2026-06-12 09:00 | Бундин В | 2h | 2h |
| 2133 | 5.51 | ремонт хомут с вибросито | 2h | 2026-06-05 09:00 A | 2026-06-05 11:00 A |  | 100% |  |  |  |  | start no earlier than 2026-06-05 08:00 | Бундин В | 2h | 2h |
| 2134 | 5.52 | заварить хомут от деко 5 ц. в слесарке | 2h | 2026-07-14 09:00 A | 2026-07-14 11:00 A |  | 100% |  |  |  |  | start no earlier than 2026-07-14 09:00 | Бундин В | 2h | 2h |
| 2135 | 5.53 | **востановить коробку тельфера** | 186.25d | 2026-06-04 09:00 A | 2027-02-02 11:00 |  | 59% | 76.33d |  | 26.34d |  |  |  | 5.08h | 3h |
| 2136 | 5.53.1 | найти производителя тельфера и выяснить марку коробку / найти в продаже подходящий артикул | 2h | 2026-06-04 09:00 A | 2026-06-04 11:00 A |  | 100% |  |  |  |  | start no earlier than 2026-06-04 09:00 | Шуранов Ю | 2h | 2h |
| 2137 | 5.53.2 | заявка | 1h | 2026-06-05 09:00 A | 2026-06-05 10:00 A |  | 100% |  |  |  |  | start no earlier than 2026-06-05 09:00 | Шуранов Ю | 1h | 1h |
| 2138 | 5.53.3 | доставка контроль | 5min | 2026-09-18 09:00 | 2026-09-18 09:05 |  |  |  |  | 133.33d | 106.99d | start no earlier than 2026-09-18 09:00 | Домоводов К | 0.08h |  |
| 2139 | 5.53.4 | замена | 2h | 2027-02-02 09:00 | 2027-02-02 11:00 | 2138 |  |  |  | 26.34d |  | start no earlier than 2027-02-02 09:00 | Некрасов А | 2h |  |
| 2140 | 5.54 | замена пускатель тельфер 24дц / найти/изготовить + установить крышку контакторов / доработать крепеж кабеля к тросу | 1h | 2026-05-27 09:00 A | 2026-05-27 10:00 A |  | 100% |  |  |  |  | start no earlier than 2026-05-27 09:00 | Некрасов А; Бундин В | 2h | 2h |
| 2141 | 5.55 | проверка всех банок АКБ штабелера / замена неисправных | 2h | 2026-05-30 09:00 A | 2026-06-01 11:00 A |  | 100% |  |  |  |  | start no earlier than 2026-05-30 09:00 | Бобренок В | 2h | 2h |
| 2142 | 5.56 | посмотреть что с тельфером на дробилке | 1h | 2026-05-26 09:00 A | 2026-05-26 10:00 A |  | 100% |  |  |  |  | start no earlier than 2026-05-26 09:00 | Некрасов А | 1h | 1h |
| 2143 | 5.57 | приварить магниты на сито | 0.5h | 2026-05-26 09:00 A | 2026-05-26 09:30 A |  | 100% |  |  |  |  | start no earlier than 2026-05-26 09:00 | Некрасов А | 0.5h | 0.5h |
| 2144 | 5.58 | заварить растариватель №2 | 4h | 2026-05-25 08:00 A | 2026-05-25 13:00 A |  | 100% |  |  |  |  | start no earlier than 2026-05-25 08:00 | Тимофеев В; Некрасов А | 7h | 7h |
| 2145 | 5.59 | уложить красиво кабель в гофре зона дробилки | 1h | 2026-05-19 09:00 A | 2026-05-19 10:00 A |  | 100% |  |  |  |  | start no earlier than 2026-05-19 09:00 | Бундин В; Некрасов А | 2h | 2h |
| 2146 | 5.60 | заварить 2 просечки от сито и отправить все на 5 цех | 1h | 2026-05-19 09:00 A | 2026-05-19 10:00 A |  | 100% |  |  |  |  | start no earlier than 2026-05-19 09:00 | Бундин В | 1h | 1h |
| 2147 | 5.61 | сделать дублирующий пост (вкл. И выкл. Смесителя) на мезонине дробилки | 4h | 2026-05-18 08:00 A | 2026-05-18 13:00 A |  | 100% |  |  |  |  | start no earlier than 2026-05-18 08:00 | Дедов В | 4h | 4h |
| 2148 | 5.62 | прошприцевать сам двигатель дробилки | 1h | 2026-05-19 09:00 A | 2026-05-19 10:00 A |  | 100% |  |  |  |  | start no earlier than 2026-05-19 09:00 | Некрасов А; Бундин В | 2h | 2h |
| 2149 | 5.63 | **сборка схемы блокировки дробилки при открытом люке** | 7.25d? | 2026-05-17 09:00 A | 2026-05-27 11:00 A |  | 100% |  |  |  |  |  |  | 17h | 17h |
| 2150 | 5.63.1 | монтаж кабель | 4h | 2026-05-17 09:00 A | 2026-05-18 13:00 A |  | 100% |  |  |  |  | start no earlier than 2026-05-17 09:00 | Макаревич А | 4h | 4h |
| 2151 | 5.63.2 | сборка схема | 2h | 2026-05-27 09:00 A | 2026-05-27 11:00 A | 2150 | 100% |  |  |  |  | start no earlier than 2026-05-27 09:00 | Дедов В | 2h | 2h |
| 2152 | 5.63.3 | заказать концевики | 1d? | 2026-05-25 09:00 A | 2026-05-25 18:00 A |  | 100% |  |  |  |  | start no earlier than 2026-05-25 08:00 | Шуранов Ю | 8h | 8h |
| 2153 | 5.63.4 | доделать схему блокировки- концевики LA167-Z8/122 на складе | 3h | 2026-05-26 09:00 A | 2026-05-26 12:00 A |  | 100% |  |  |  |  | start no earlier than 2026-05-26 09:00 | Дедов В | 3h | 3h |
| 2154 | 5.64 | проверка центровки мотора после замены подшипнка + замена подшипник задний | 4h | 2026-05-12 08:00 A | 2026-05-12 13:00 A |  | 100% |  |  |  |  | start no earlier than 2026-05-12 08:00 | Тимофеев В; Бобренок В | 8h | 8h |
| 2155 | 5.65 | заварить сито | 2h | 2026-05-08 08:00 A | 2026-05-08 11:00 A |  | 100% |  |  |  |  | start no earlier than 2026-05-08 08:00 | Макаревич А | 2h | 2h |
| 2156 | 5.66 | закрепить штурвал, чтобы не болтался на растаривателе 1 | 1h | 2026-05-08 08:00 A | 2026-05-08 10:00 A |  | 100% |  |  |  |  | start no earlier than 2026-05-08 08:00 | Макаревич А | 1h | 1h |
| 2157 | 5.67 | посмотреть компрессор (если проблема в предохранителе- то взять у меня на столе)пароль8989 | 1h | 2026-05-08 08:00 A | 2026-05-08 10:00 A |  | 100% |  |  |  |  | start no earlier than 2026-05-08 08:00 | Дедов В | 1h | 1h |
| 2158 | 5.68 | проверить на 2х котлах давление в системе отопления- где нужно долить воды. И слить воду система отопления 5а цех | 2h | 2026-05-06 08:00 A | 2026-05-06 11:00 A |  | 100% |  |  |  |  | start no earlier than 2026-05-06 08:00 | Бобренок В | 2h | 2h |

| ID | WBS | Task | Type | Duration | Start | Finish | Predecessors | Complete | Actual start | Actual finish | Total slack | Constraint | Resources | Work | Actual work |
| --- | --- | --- | --- | --- | --- | --- | --- | --- | --- | --- | --- | --- | --- | --- | --- |
| 2159 | 5.69 | **ремонт сито (попробовать заклеить эпоксидкой) / ремонт у производсителя** |  | 13d | 2026-05-13 09:00 A | 2026-05-29 18:00 A |  | 100% |  |  |  |  |  | 0.75h | 0.75h |
| 2160 | 5.69.1 | отправить сито на ремонт производителю |  | 30min | 2026-05-13 09:00 A | 2026-05-13 09:30 A |  | 100% |  |  |  | start no earlier than 2026-05-13 09:00 | Шуранов Ю | 0.5h | 0.5h |
| 2161 | 5.69.2 | контроль доставки |  | 15min | 2026-05-29 17:45 A | 2026-05-29 18:00 A | 2160SF+15d | 100% |  |  |  | start no earlier than 2026-05-12 08:00 | Шуранов Ю | 0.25h | 0.25h |
| 2162 | 5.70 | зачистить приемный бункер после дробилке болгаркой |  | 1h | 2026-04-30 08:00 A | 2026-04-30 10:00 A |  | 100% |  |  |  | start no earlier than 2026-04-30 08:00 | Дедов В | 1h | 1h |
| 2163 | 5.71 | **ремонт стиральной машинки / шум подшипника** |  | 1d? | 2026-04-27 09:00 | 2026-04-27 18:00 |  |  |  |  | 239.59d |  |  | 8h |  |
| 2164 | 5.71.1 | договор |  | 1d? | 2026-04-27 09:00 | 2026-04-27 18:00 |  |  |  |  | 239.59d | start no earlier than 2026-04-27 08:00 | Шуранов Ю | 8h |  |
| 2165 | 5.72 | **ремонт утечки с системы отопления** |  | 1.12d | 2026-05-04 09:00 | 2026-05-05 10:00 |  | 100% | 2026-05-07 09:00 | 2026-05-08 10:00 |  |  |  | 10h | 10h |
| 2166 | 5.72.1 | слив воды |  | 4h | 2026-05-07 09:00 A | 2026-05-07 13:00 A |  | 100% |  |  |  | start no earlier than 2026-05-07 09:00 | Макаревич А | 4h | 4h |
| 2167 | 5.72.2 | ремонт утечки |  | 2h | 2026-05-07 13:00 A | 2026-05-07 16:00 A | 2166 | 100% |  |  |  | start no earlier than 2026-04-27 08:00 | Макаревич А | 2h | 2h |
| 2168 | 5.72.3 | заправить воду / опресовать |  | 4h | 2026-05-07 15:00 A | 2026-05-08 10:00 A | 2167 | 100% |  |  |  | start no earlier than 2026-04-27 08:00 | Макаревич А | 4h | 4h |
| 2169 | 5.73 | долить в систему отопления воды цех 5а, электрокотел не включаем. Работаем на газ котле |  | 1h | 2026-04-24 09:00 A | 2026-04-24 10:00 A |  | 100% |  |  |  | start no earlier than 2026-04-24 08:00 | Бундин В | 1h | 1h |
| 2170 | 5.74 | вывезти шнек на синий склад |  | 1h | 2026-04-23 09:00 A | 2026-04-23 10:00 A |  | 100% |  |  |  | start no earlier than 2026-04-24 09:00 | Бобренок В; Тимофеев В | 2h | 2h |
| 2171 | 5.75 | взять на зажима для троса на складе и натянуть трос на воротах 5а |  | 2h | 2026-04-25 09:00 A | 2026-04-27 11:00 A |  | 100% |  |  |  | start no earlier than 2026-04-25 09:00 | Макаревич А | 2h | 2h |
| 2172 | 5.76 | убавить температуры на газ котлах |  | 1h | 2026-04-24 09:00 A | 2026-04-24 10:00 A |  | 100% |  |  |  | start no earlier than 2026-04-24 09:00 | Шуранов Ю | 1h | 1h |
| 2173 | 5.77 | заварить сито и хомуты |  | 1h | 2026-04-24 09:00 A | 2026-04-24 10:00 A |  | 100% |  |  |  | start no earlier than 2026-04-24 09:00 | Тимофеев В | 1h | 1h |
| 2174 | 5.78 | проверка вибросит детальный осмотр с полной разборкой / ремонт трещин |  | 4h | 2026-04-21 09:00 A | 2026-04-21 13:00 A |  | 100% |  |  |  | start no earlier than 2026-04-21 09:00 | Бундин В | 4h | 4h |
| 2175 | 5.79 | протяжка анкеров стеллажей, болтается |  | 2h | 2026-04-20 09:00 A | 2026-04-20 11:00 A |  | 100% |  |  |  | start no earlier than 2026-04-20 09:00 | Макаревич А | 2h | 2h |
| 2176 | 5.80 | замена потускневших ламп в инсекютере. Мастеру сообщить кол-во. б/у складывать в коробку |  | 2h | 2026-05-06 09:00 A | 2026-05-06 11:00 A |  | 100% |  |  |  | start no earlier than 2026-05-06 09:00 | Бобренок В | 2h | 2h |
| 2177 | 5.81 | переворачиваем молотки дробилка |  | 4h | 2026-04-15 09:00 A | 2026-04-15 13:00 A |  | 100% |  |  |  | start no earlier than 2026-04-17 08:00 | Макаревич А; Тимофеев В | 8h | 8h |
| 2178 | 5.82 | завершить работы по примыканию к кровли 5А (излишки изоспан) |  | 1d? | 2026-06-19 09:00 | 2026-06-19 18:00 |  |  |  |  | 200.59d | start no earlier than 2026-06-19 09:00 | Олег | 8h |  |
| 2179 | 5.83 | монтаж тамбур для завоза навесок |  | 10d | 2026-04-16 09:00 | 2026-04-29 18:00 |  |  |  |  | 237.59d | start no earlier than 2026-04-16 08:00 | Некрасов А; Олег | 160h |  |
| 2180 | 5.84 | вырезать верхушку еврокуба возле мусорки, будет туда засыпать отсев для дворника | manual | 1h | 2026-04-18 09:00 A | 2026-04-18 10:00 A |  | 100% |  |  |  | start no earlier than 2026-04-18 09:00 | Макаревич А | 1h | 1h |
| 2181 | 5.85 | заварить хомуты и сетки от сито |  | 1h | 2026-04-14 09:00 A | 2026-04-14 10:00 A |  | 100% |  |  |  | start no earlier than 2026-04-14 08:00 | Труфанов А | 1h | 1h |
| 2182 | 5.86 | проверить дист. Воду на штабелере, если нужно долить (фото модели акб) |  | 1h | 2026-04-13 09:00 A | 2026-04-13 10:00 A |  | 100% |  |  |  | start no earlier than 2026-04-13 08:00 | Бундин В | 1h | 1h |
| 2183 | 5.87 | установка шнека отремонтированного обратно на дробилку |  | 6h | 2026-04-21 09:00 A | 2026-04-21 16:00 A |  | 100% |  |  |  | start no earlier than 2026-04-21 09:00 | Некрасов А; Труфанов А | 12h | 12h |
| 2184 | 5.88 | установка бойлера отремонтированного в туалет, а с туалета на 2 этаж, мастер выделит человека в помощь |  | 4h | 2026-04-13 09:00 A | 2026-04-13 13:00 A |  | 100% |  |  |  | start no earlier than 2026-04-13 09:00 | Труфанов А | 4h | 4h |
| 2185 | 5.89 | замена паука на расстаривателе- высокие бэги не могут поднять до конца |  | 1h | 2026-04-10 08:00 A | 2026-04-10 10:00 A |  | 100% |  |  |  | start no earlier than 2026-04-10 08:00 | Тимофеев В | 1h | 1h |

| ID | WBS | Task | Type | Duration | Start | Finish | Predecessors | Complete | Actual start | Actual finish | Constraint | Resources | Work | Actual work |
| --- | --- | --- | --- | --- | --- | --- | --- | --- | --- | --- | --- | --- | --- | --- |
| 2186 | 5.90 | **получить насос Wilo, установить на 1 газовый котел** |  | 0.12d | 2026-04-10 09:00 A | 2026-04-10 10:00 A |  | 100% |  |  |  | Бундин В | 2h | 2h |
| 2187 | 5.90.1 | проверить направление подачи воды, посмотреть по аналогии 2 котла |  | 1h | 2026-04-10 09:00 A | 2026-04-10 10:00 A |  | 100% |  |  | start no earlier than 2026-04-10 09:00 | Тимофеев В | 1h | 1h |
| 2188 | 5.91 | ремот сеток с сито |  | 2h | 2026-04-06 09:00 A | 2026-04-06 11:00 A |  | 100% |  |  | start no earlier than 2026-04-06 08:00 | Труфанов А | 2h | 2h |
| 2189 | 5.92 | на выходах из сито №1 и №2 установить сетки с бортиками |  | 2h | 2026-04-06 09:00 A | 2026-04-06 11:00 A |  | 100% |  |  | start no earlier than 2026-04-06 08:00 | Труфанов А | 2h | 2h |
| 2190 | 5.93 | сыпит сырье с дробилки (вход) |  | 2h | 2026-06-15 09:00 A | 2026-06-15 11:00 A |  | 100% |  |  | start no earlier than 2026-06-13 09:00 | Некрасов А; Труфанов А | 4h | 4h |
| 2191 | 5.94 | востановить ручной штурвал заслонки на растаривателе дробилки |  | 1h | 2026-04-02 08:00 A | 2026-04-02 10:00 A |  | 100% |  |  | start no earlier than 2026-04-02 08:00 | Бобренок В | 1h | 1h |
| 2192 | 5.95 | изготовить штурвал заслонки на растариватель вибросита у стены |  | 2h | 2026-04-13 09:00 A | 2026-04-13 11:00 A |  | 100% |  |  | start no earlier than 2026-04-13 09:00 | Труфанов А | 2h | 2h |
| 2193 | 5.96 | монтаж отбойников | manual | 6h | 2026-04-18 09:00 A | 2026-04-18 16:00 A |  | 100% |  |  | start no earlier than 2026-04-18 09:00 | Бобренок В | 6h | 6h |
| 2194 | 5.97 | **ремонт шкаф управления шнеком 1 растариватель (замена щитка взять на складе)** |  | 13.5d? | 2026-04-21 09:00 | 2026-05-07 13:00 |  | 100% | 2026-04-17 09:00 | 2026-04-29 09:30 |  |  | 91.75h | 91.75h |
| 2195 | 5.97.1 | вывод кнопки управления частотником на ШУ (если нужно замена частотника) с мастером согласовать остановку |  | 5h | 2026-04-20 09:00 A | 2026-04-20 15:00 A |  | 100% |  |  | start no earlier than 2026-04-20 09:00 | Дедов В | 5h | 5h |
| 2196 | 5.97.2 | установить кнопочный пост |  | 2h | 2026-04-21 09:00 A | 2026-04-21 11:00 A |  | 100% |  |  | start no earlier than 2026-04-21 09:00 | Дедов В | 2h | 2h |
| 2197 | 5.97.3 | заявка кнопка SB7 |  | 15min | 2026-04-21 09:00 A | 2026-04-21 09:15 A |  | 100% |  |  | start no earlier than 2026-04-21 09:00 | Зорькин В | 0.25h | 0.25h |
| 2198 | 5.97.4 | доставка |  | 5d | 2026-04-21 09:15 A | 2026-04-28 09:15 A | 2197 | 100% |  |  | start no earlier than 2026-04-20 08:00 | Карабанов | 40h | 40h |
| 2199 | 5.97.5 | замена |  | 1h | 2026-04-27 09:15 A | 2026-04-27 10:15 A | 2198 | 100% |  |  | start no earlier than 2026-04-20 08:00 | Дедов В | 1h | 1h |
| 2200 | 5.97.6 | ремонт корпус |  | 1h | 2026-04-17 09:00 A | 2026-04-17 10:00 A | 2195 | 100% |  |  | start no earlier than 2026-04-09 09:00 | Труфанов А | 1h | 1h |
| 2201 | 5.97.7 | **замена корпус** |  | 6.06d | 2026-04-21 09:00 A | 2026-04-29 09:30 A |  | 100% |  |  |  |  | 42.5h | 42.5h |
| 2202 | 5.97.7.1 | заявка |  | 30min | 2026-04-21 09:00 A | 2026-04-21 09:30 A |  | 100% |  |  | start no earlier than 2026-03-31 08:00 | Зорькин В | 0.5h | 0.5h |
| 2203 | 5.97.7.2 | доставка |  | 5d | 2026-04-21 09:30 A | 2026-04-29 09:30 A | 2202 | 100% |  |  | start no earlier than 2026-03-31 08:00 | Карабанов | 40h | 40h |
| 2204 | 5.97.7.3 | замена |  | 2h | 2026-04-28 09:30 A | 2026-04-28 11:30 A | 2203 | 100% |  |  | start no earlier than 2026-04-14 09:00 | Тимофеев В | 2h | 2h |
| 2205 | 5.98 | получить фланец на складе NMRV040 и установить мотор-редуктор на расстаривателе №1 |  | 2h | 2026-04-28 09:00 A | 2026-04-28 11:00 A |  | 100% |  |  | start no earlier than 2026-04-28 09:00 | Бундин В | 2h | 2h |
| 2206 | 5.99 | убрать красный скотч везде в дробилке, сделать крепление фильтра с малой дробилки на ленточный хомут |  | 3h | 2026-03-27 09:00 A | 2026-03-27 12:00 A |  | 100% |  |  | start no earlier than 2026-03-27 08:00 | Труфанов А | 3h | 3h |
| 2207 | 5.100 | ремонт вибросито |  | 4h | 2026-03-27 08:00 A | 2026-03-27 13:00 A |  | 100% |  |  | start no earlier than 2026-03-27 08:00 | Тимофеев В; Некрасов А | 7h | 7h |
| 2208 | 5.101 | заварить сито возле слесарки (2 шт) и деки 2 шт |  | 3h | 2026-03-26 09:00 A | 2026-03-26 12:00 A |  | 100% |  |  | start no earlier than 2026-03-26 08:00 | Труфанов А | 3h | 3h |
| 2209 | 5.102 | сделать отбойник на входную дверь |  | 1h | 2026-03-28 09:00 A | 2026-03-30 10:00 A |  | 100% |  |  | start no earlier than 2026-03-28 09:00 | Бундин В | 1h | 1h |
| 2210 | 5.103 | сделать трап в курилку |  | 3h | 2026-04-01 09:00 A | 2026-04-01 12:00 A |  | 100% |  |  | start no earlier than 2026-04-01 09:00 | Бундин В | 3h | 3h |
| 2211 | 5.104 | заварить бункер дробилки |  | 2h | 2026-03-24 09:00 A | 2026-03-24 11:00 A |  | 100% |  |  | start no earlier than 2026-03-24 09:00 | Некрасов А; Труфанов А | 4h | 4h |
| 2212 | 5.105 | перенос металл с торца стеллажа напротив ВРУ / на син склад |  | 1h | 2026-03-25 09:00 A | 2026-03-25 10:00 A |  | 100% |  |  | start no earlier than 2026-03-25 09:00 | Бобренок В | 1h | 1h |
| 2213 | 5.106 | пульт управления шибером растариватель правый демонтаж красный скотч / закрепить |  | 1h | 2026-03-22 09:00 A | 2026-03-23 10:00 A |  | 100% |  |  | start no earlier than 2026-03-22 09:00 | Бобренок В | 1h | 1h |
| 2214 | 5.107 | установить корпус на переключатель реверса шнек растаривателя правый / продуть от пыли контакты |  | 30min | 2026-03-22 09:00 A | 2026-03-23 09:30 A |  | 100% |  |  | start no earlier than 2026-03-22 09:00 | Бобренок В | 0.5h | 0.5h |
| 2215 | 5.108 | демонтаж розетки без крышки 2 этаж щиток в фае |  | 30min | 2026-03-25 09:00 A | 2026-03-25 09:30 A |  | 100% |  |  | start no earlier than 2026-03-25 09:00 | Бобренок В | 0.5h | 0.5h |
| 2216 | 5.109 | подлючить розетку для зарядки нового АКБ для штабелера Ц.5А |  | 2h | 2026-03-21 09:00 A | 2026-03-23 11:00 A |  | 100% |  |  | start no earlier than 2026-03-21 09:00 | Дедов В | 2h | 2h |

| ID | WBS | Task | Type | Duration | Start | Finish | Predecessors | Complete | Total slack | Free slack | Constraint | Resources | Work | Actual work |
| --- | --- | --- | --- | --- | --- | --- | --- | --- | --- | --- | --- | --- | --- | --- |
| 2217 | 5.110 | **ремонт шнек с дробилки** |  | 11.75d | 2026-03-17 09:00 A | 2026-04-01 16:00 A |  | 100% |  |  |  |  | 7h | 7h |
| 2218 | 5.110.1 | орг пескоструйка корпус шнека - отправить |  | 1h | 2026-03-17 09:00 A | 2026-03-17 10:00 A |  | 100% |  |  | start no earlier than 2026-03-17 08:00 | Шуранов Ю | 1h | 1h |
| 2219 | 5.110.2 | сборка шнека с ремонта |  | 6h | 2026-04-01 09:00 A | 2026-04-01 16:00 A | 2218 | 100% |  |  | start no earlier than 2026-04-01 09:00 | Некрасов А | 6h | 6h |
| 2220 | 5.111 | установить уплотнения на гофра без красн скотча |  | 4h | 2026-03-20 09:00 A | 2026-03-20 13:00 A |  | 100% |  |  | start no earlier than 2026-03-20 09:00 | Некрасов А; Труфанов А | 8h | 8h |
| 2221 | 5.112 | добавить воду в 4 газ. Котел проверить реальное давление в системе |  | 2h | 2026-03-19 08:00 A | 2026-03-19 11:00 A |  | 100% |  |  | start no earlier than 2026-03-19 08:00 | Бундин В | 2h | 2h |
| 2222 | 5.113 | сменить палярность вращения дробилки / сточило ножи |  | 1h | 2026-03-16 09:00 A | 2026-03-16 10:00 A |  | 100% |  |  | start no earlier than 2026-03-16 09:00 | Труфанов А; Некрасов А | 2h | 2h |
| 2223 | 5.114 | **устанвить ИБП на клапан газ** |  | 0.03d | 2026-03-16 09:00 A | 2026-03-16 09:15 A |  | 100% |  |  |  |  | 0.25h | 0.25h |
| 2224 | 5.114.1 | координация сроков выполнения с газовщиком |  | 15min | 2026-03-16 09:00 A | 2026-03-16 09:15 A |  | 100% |  |  | start no earlier than 2026-03-16 09:00 | Шуранов Ю | 0.25h | 0.25h |
| 2225 | 5.115 | **установить вентилятор с клапаном и фильтром** |  | 11.03d? | 2026-03-18 09:00 | 2026-04-02 09:15 |  |  | 257.56d |  |  |  | 88.25h |  |
| 2226 | 5.115.1 | получить сммету / счет |  | 15min | 2026-03-18 09:00 | 2026-03-18 09:15 |  |  | 257.56d | 0d | start no earlier than 2026-03-18 09:00 | Домоводов К | 0.25h |  |
| 2227 | 5.115.2 | изготовление поставка |  | 10d | 2026-03-18 09:15 | 2026-04-01 09:15 | 2226 |  | 257.56d | 0d | start no earlier than 2026-03-17 08:00 | оплот | 80h |  |
| 2228 | 5.115.3 | монтаж |  | 1d? | 2026-04-01 09:15 | 2026-04-02 09:15 | 2227 |  | 257.56d |  | start no earlier than 2026-03-17 08:00 | оплот | 8h |  |
| 2229 | 5.116 | закрыть отвертстие от демонтированной аспирации фильтротканью. Временно, до изг фильтра |  | 1h | 2026-03-13 08:00 A | 2026-03-13 10:00 A |  | 100% |  |  | start no earlier than 2026-03-13 08:00 | Дедов В | 1h | 1h |
| 2230 | 5.117 | **на отверстие от демонтированной оспирации установить фильтр** |  | 7.01d | 2026-03-20 09:00 A | 2026-03-31 09:05 A |  | 100% |  |  |  |  | 2.08h | 2.08h |
| 2231 | 5.117.1 | получить фильтры |  | 5min | 2026-03-31 09:00 A | 2026-03-31 09:05 A |  | 100% |  |  | start no earlier than 2026-03-31 09:00 | Шуранов Ю | 0.08h | 0.08h |
| 2232 | 5.117.2 | монтаж |  | 1h | 2026-03-20 09:00 A | 2026-03-20 10:00 A | 2231FS+1d | 100% |  |  | start no earlier than 2026-03-20 09:00 | Некрасов А; Труфанов А | 2h | 2h |
| 2233 | 5.118 | **устранить ржавчину шнека после дробилки** |  | 1d? | 2026-03-16 09:00 A | 2026-03-16 18:00 A |  | 100% |  |  |  |  | 16h | 16h |
| 2234 | 5.118.1 | полная разборка / зачистка / сборка |  | 1d? | 2026-03-16 09:00 A | 2026-03-16 18:00 A |  | 100% |  |  | start no earlier than 2026-03-16 09:00 | Труфанов А; Некрасов А | 16h | 16h |
| 2235 | 5.118.2 | согласовать чем можно покрыть шнек внутри | milestone | 0d | 2026-03-16 09:00 A | 2026-03-16 09:00 A |  | 100% |  |  | start no earlier than 2026-03-16 09:00 | Домоводов К |  |  |
| 2236 | 5.119 | заменаить гидро АКБ на насосной станции / замена мебраны и золотника |  | 2h | 2026-03-15 09:00 A | 2026-03-16 11:00 A |  | 100% |  |  | start no earlier than 2026-03-15 09:00 | Бундин В | 2h | 2h |
| 2237 | 5.120 | устарнить выдавливание материала с шнека №1 узел дробилки |  | 4h | 2026-03-13 09:00 A | 2026-03-13 13:00 A |  | 100% |  |  | start no earlier than 2026-03-13 09:00 | Тимофеев В; Бундин В | 8h | 8h |
| 2238 | 5.121 | проверить обр клапан бойлер в гардеробе. Стреляет |  | 30min | 2026-03-13 09:00 A | 2026-03-13 09:30 A |  | 100% |  |  | start no earlier than 2026-03-13 09:00 | Бундин В | 0.5h | 0.5h |
| 2239 | 5.122 | долить дистилят в АКБ штабелер свинцовый |  | 1h | 2026-03-11 09:00 A | 2026-03-11 10:00 A |  | 100% |  |  | start no earlier than 2026-03-11 09:00 | Макаревич А | 1h | 1h |
| 2240 | 5.123 | **замена бойлер туалет** |  | 16.25d | 2026-03-23 09:00 A | 2026-04-14 11:00 A |  | 100% |  |  |  |  | 82.25h | 82.25h |
| 2241 | 5.123.1 | заявка бойлер |  | 15min | 2026-03-23 09:00 A | 2026-03-23 09:15 A |  | 100% |  |  | start no earlier than 2026-03-23 09:00 | Шуранов Ю | 0.25h | 0.25h |
| 2242 | 5.123.2 | доставка |  | 10d | 2026-03-30 09:00 A | 2026-04-10 18:00 A | 2241 | 100% |  |  | start no earlier than 2026-03-29 09:00 | Карабанов | 80h | 80h |
| 2243 | 5.123.3 | монтаж |  | 2h | 2026-04-14 09:00 A | 2026-04-14 11:00 A | 2242 | 100% |  |  | start no earlier than 2026-03-12 08:00 | Тимофеев В | 2h | 2h |
| 2244 | 5.124 | ремонт хомут с вибросито |  | 1h | 2026-03-10 09:00 A | 2026-03-10 10:00 A |  | 100% |  |  | start no earlier than 2026-03-10 09:00 | Макаревич А | 1h | 1h |
| 2245 | 5.125 | Заварить деку на сито |  | 2h | 2026-03-06 09:00 A | 2026-03-06 11:00 A |  | 100% |  |  | start no earlier than 2026-03-06 09:00 | Тимофеев В | 2h | 2h |
| 2246 | 5.126 | Замена двойной розетки (созвон с Шурановым) или спросить у мастера |  | 1h | 2026-03-05 08:00 A | 2026-03-05 10:00 A |  | 100% |  |  | start no earlier than 2026-03-05 08:00 | Дедов В | 1h | 1h |
| 2247 | 5.127 | ошибка Е10 стиральная машинка |  | 1h | 2026-03-04 09:00 A | 2026-03-04 10:00 A |  | 100% |  |  | start no earlier than 2026-03-04 09:00 | Дедов В | 1h | 1h |
| 2248 | 5.128 | ремонт сито, сварка шов |  | 2h | 2026-03-03 09:00 A | 2026-03-03 11:00 A |  | 100% |  |  | start no earlier than 2026-03-03 09:00 | Макаревич А | 2h | 2h |
| 2249 | 5.129 | ремонт растариватель №1 + установить косынки |  | 2h | 2026-03-03 09:00 A | 2026-03-03 11:00 A |  | 100% |  |  | start no earlier than 2026-03-03 09:00 | Некрасов А; Труфанов А | 4h | 4h |

| ID | WBS | Task | Duration | Start | Finish | Predecessors | Complete | Actual start | Constraint | Resources | Work | Actual work |
| --- | --- | --- | --- | --- | --- | --- | --- | --- | --- | --- | --- | --- |
| 2250 | 5.130 | **ремонт растаривателя №3 - клинит заслонку** | 97.81d | 2026-04-20 09:00 A | 2026-09-02 16:30 A |  | 100% |  |  |  | 16.92h | 16.92h |
| 2251 | 5.130.1 | установка ручной штурвал управления шибером | 2h | 2026-04-20 09:00 A | 2026-04-20 11:00 A |  | 100% |  | start no earlier than 2026-04-20 09:00 | Бундин В | 2h | 2h |
| 2252 | 5.130.2 | контроль поставка Зип - оплачивали или нет? | 10min | 2026-08-12 09:00 A | 2026-08-12 09:10 A |  | 100% |  | start no earlier than 2026-08-12 09:00 | Зорькин В | 0.17h | 0.17h |
| 2253 | 5.130.3 | получить счет | 15min | 2026-08-13 09:00 A | 2026-08-13 09:15 A |  | 100% |  | start no earlier than 2026-08-13 09:00 | Домоводов К | 0.25h | 0.25h |
| 2254 | 5.130.4 | контроль поставки | 15min | 2026-08-31 09:15 A | 2026-08-31 09:30 A | 2253FS+12d | 100% |  | start no earlier than 2026-08-31 09:00 | Зорькин В | 0.25h | 0.25h |
| 2255 | 5.130.5 | приемка | 15min | 2026-09-01 09:30 A | 2026-09-01 09:45 A | 2254FS+1d | 100% |  | start no earlier than 2026-08-31 09:00 | Зорькин В | 0.25h | 0.25h |
| 2256 | 5.130.6 | замена | 4h | 2026-09-02 09:30 A | 2026-09-02 14:30 A | 2255FS+1d | 100% |  | start no earlier than 2026-08-12 09:00 | Тимофеев В | 4h | 4h |
| 2257 | 5.130.7 | Ремонт паука с растаривателя, оценить состояние. | 2h | 2026-09-02 09:00 A | 2026-09-02 11:00 A |  | 100% |  | start no earlier than 2026-09-02 09:00 | Тимофеев В | 2h | 2h |
| 2258 | 5.130.8 | установить фланец на редуктор NMRV050 | 2h | 2026-05-18 09:00 A | 2026-05-18 11:00 A |  | 100% |  | start no earlier than 2026-05-20 09:00 | Бобренок В | 2h | 2h |
| 2259 | 5.130.9 | настройка тепловое реле, настройка концевиков | 2h | 2026-09-02 14:30 A | 2026-09-02 16:30 A | 2256, 2258 | 100% |  | start no earlier than 2026-05-08 09:00 | Дедов В | 2h | 2h |
| 2260 | 5.130.10 | доработка пластины, которая клинит | 4h | 2026-05-07 09:00 A | 2026-05-07 13:00 A |  | 100% |  | start no earlier than 2026-05-07 09:00 | Тимофеев В | 4h | 4h |
| 2261 | 5.131 | **установить курилку на раму. Изготовить лавочку** | 19.25d? | 2026-02-28 09:00 A | 2026-03-27 11:00 A |  | 100% |  |  |  | 27h | 27h |
| 2262 | 5.131.1 | сделать удлинители для синей платформы, на которые встанет курилка | 1d? | 2026-02-28 09:00 A | 2026-03-02 18:00 A |  | 100% |  | start no earlier than 2026-02-28 09:00 | Макаревич А | 8h | 8h |
| 2263 | 5.131.2 | закрыть отверстие в полу жзелезом | 1h | 2026-03-13 09:00 A | 2026-03-13 10:00 A |  | 100% |  | start no earlier than 2026-03-13 09:00 | Некрасов А; Труфанов А | 2h | 2h |
| 2264 | 5.131.3 | монтаж фанера на лавочку | 2h | 2026-03-27 09:00 A | 2026-03-27 11:00 A | 2263 | 100% |  | start no earlier than 2026-03-27 09:00 |  |  |  |
| 2265 | 5.131.4 | поворот курилки к стене, от ветра | 1h | 2026-03-20 09:00 A | 2026-03-20 10:00 A |  | 100% |  | start no earlier than 2026-03-20 09:00 | Некрасов А | 1h | 1h |
| 2266 | 5.131.5 | изготовить трап входной | 4h | 2026-03-20 10:00 A | 2026-03-20 15:00 A | 2265 | 100% |  | start no earlier than 2026-03-12 08:00 | Некрасов А | 4h | 4h |
| 2267 | 5.131.6 | изготовить лавку по периметру курилки. На железо будет потом доска или пенка. Металл с остатков 3ц или с синего склада | 1d? | 2026-03-01 09:00 A | 2026-03-02 18:00 A |  | 100% |  | start no earlier than 2026-03-01 09:00 | Макаревич А | 8h | 8h |
| 2268 | 5.131.7 | приготовить ручки за которые будет толпа поднимать руками курилку | 2h | 2026-03-09 09:00 A | 2026-03-09 11:00 A |  | 100% |  | start no earlier than 2026-03-09 09:00 | Некрасов А; Труфанов А | 4h | 4h |
| 2269 | 5.132 | ТО штабелеров - обрезать нитки. Дефектовка подшипников, указать в отчете состояние | 2h | 2026-03-01 09:00 A | 2026-03-02 11:00 A |  | 100% |  | start no earlier than 2026-03-01 09:00 | Макаревич А | 2h | 2h |
| 2270 | 5.133 | **штабелер - замена ролик мачты. Подшипник котка** | 0.01d | 2026-03-03 09:00 A | 2026-03-03 09:05 A |  | 100% |  |  |  | 0.17h | 0.17h |
| 2271 | 5.133.1 | контроль | 5min | 2026-03-03 09:00 A | 2026-03-03 09:05 A |  | 100% |  | start no earlier than 2026-03-03 09:00 | Зорькин В; Тракресурс | 0.17h | 0.17h |
| 2272 | 5.134 | **установить стеллажи для архив образцов** | 25.06d? | 2026-03-03 09:00 | 2026-04-07 09:30 A |  | 100% | 2026-03-05 09:00 |  |  | 227.25h | 227.25h |
| 2273 | 5.134.1 | монтаж освещение | 4h | 2026-03-06 09:00 A | 2026-03-06 13:00 A |  | 100% |  | start no earlier than 2026-03-06 09:00 | Некрасов А; Труфанов А | 8h | 8h |

| ID | WBS | Task | Duration | Start | Finish | Predecessors | Complete | Actual start | Actual finish | Constraint | Resources | Work | Actual work |
| --- | --- | --- | --- | --- | --- | --- | --- | --- | --- | --- | --- | --- | --- |
| 2274 | 5.134.2 | **покрасить стеллажи** | 12.02d | 2026-03-06 14:00 A | 2026-03-24 14:10 A | 2273 | 100% |  |  |  |  | 92.17h | 92.17h |
| 2275 | 5.134.2.1 | Заказать краску не пахнущую для радиаторов | 10min | 2026-03-06 14:00 A | 2026-03-06 14:10 A |  | 100% |  |  | start no earlier than 2026-03-03 09:00 | Зорькин В | 0.17h | 0.17h |
| 2276 | 5.134.2.2 | Доставка | 10d | 2026-03-06 14:10 A | 2026-03-24 14:10 A | 2275 | 100% |  |  | start no earlier than 2026-03-03 09:00 | Карабанов | 80h | 80h |
| 2277 | 5.134.2.3 | покраска | 4h | 2026-03-06 14:00 A | 2026-03-06 18:00 A |  | 100% |  |  | start no earlier than 2026-03-06 09:00 | Некрасов А; Труфанов А | 8h | 8h |
| 2278 | 5.134.2.4 | покраска | 4h | 2026-03-06 14:00 A | 2026-03-06 18:00 A |  | 100% |  |  | start no earlier than 2026-03-06 09:00 | Бундин В | 4h | 4h |
| 2279 | 5.134.3 | занести стеллажи в кабинеты с работниками 5ц | 4h | 2026-03-09 09:00 A | 2026-03-09 13:00 A | 2281 | 100% |  |  | start no earlier than 2026-03-09 09:00 | Бобренок В | 4h | 4h |
| 2280 | 5.134.4 | сборка стеллажей | 4h | 2026-03-13 09:00 A | 2026-03-13 13:00 A |  | 100% |  |  | start no earlier than 2026-03-13 09:00 | Труфанов А; Некрасов А | 8h | 8h |
| 2281 | 5.134.5 | монтаж доп полок с уголка | 4h | 2026-03-08 09:00 A | 2026-03-09 13:00 A | 2282 | 100% |  |  | start no earlier than 2026-03-08 09:00 | Бобренок В | 4h | 4h |
| 2282 | 5.134.6 | напилить фанеру на стеллажи | 8h | 2026-03-15 09:00 A | 2026-03-16 18:00 A |  | 100% |  |  | start no earlier than 2026-03-15 09:00 | Бундин В | 8h | 8h |
| 2283 | 5.134.7 | напилить фанеру на стеллажи | 4h | 2026-03-16 09:00 A | 2026-03-16 13:00 A |  | 100% |  |  | start no earlier than 2026-03-16 09:00 | Макаревич А; Тимофеев В | 8h | 8h |
| 2284 | 5.134.8 | **монтаж двери** | 8.06d? | 2026-03-03 09:00 | 2026-03-11 09:30 |  | 100% | 2026-03-05 09:00 | 2026-04-07 09:30 |  |  | 95.08h | 95.08h |
| 2285 | 5.134.8.1 | заявка фурнитуры | 30min | 2026-03-05 09:00 A | 2026-03-05 09:30 A |  | 100% |  |  | start no earlier than 2026-03-05 09:00 | Зорькин В | 0.5h | 0.5h |
| 2286 | 5.134.8.2 | получить коробку на дверь / контроолль поставки | 5min | 2026-03-18 09:00 A | 2026-03-18 09:05 A |  | 100% |  |  | start no earlier than 2026-03-18 09:00 | Зорькин В | 0.08h | 0.08h |
| 2287 | 5.134.8.3 | монтаж 2 двери | 4h | 2026-03-20 09:00 A | 2026-03-20 13:00 A |  | 100% |  |  | start no earlier than 2026-03-20 09:00 | Тимофеев В; Бундин В | 8h | 8h |
| 2288 | 5.134.8.4 | монтаж замка и ручек | 2h | 2026-03-24 09:00 A | 2026-03-24 11:00 A |  | 100% |  |  | start no earlier than 2026-03-24 09:00 | Тимофеев В | 2h | 2h |
| 2289 | 5.134.8.5 | **монтаж наличноков** | 10.06d | 2026-03-24 09:00 A | 2026-04-07 09:30 A |  | 100% |  |  |  |  | 84.5h | 84.5h |
| 2290 | 5.134.8.5.1 | заявка на наличинки | 30min | 2026-03-24 09:00 A | 2026-03-24 09:30 A |  | 100% |  |  | start no earlier than 2026-03-24 09:00 | Зорькин В | 0.5h | 0.5h |
| 2291 | 5.134.8.5.2 | доставка | 10d | 2026-03-24 09:30 A | 2026-04-07 09:30 A | 2290 | 100% |  |  | start no earlier than 2026-03-20 08:00 | Карабанов | 80h | 80h |
| 2292 | 5.134.8.5.3 | монтаж | 4h | 2026-04-04 09:30 A | 2026-04-06 13:00 A | 2291 | 100% |  |  | start no earlier than 2026-03-20 08:00 | Тимофеев В | 4h | 4h |
| 2293 | 5.135 | **монтаж розеток для весов** | 83d | 2026-03-02 09:00 A | 2026-06-24 18:00 A |  | 100% |  |  |  |  | 98.5h | 98.5h |
| 2294 | 5.135.1 | составить план монтажа, расчет материалов | 30min | 2026-03-02 09:00 A | 2026-03-02 09:30 A |  | 100% |  |  | start no earlier than 2026-03-02 09:00 | Некрасов А; Зорькин В; Труфанов А | 1.5h | 1.5h |
| 2295 | 5.135.2 | заявка трос/ талреп | 30min | 2026-03-02 09:30 A | 2026-03-02 10:00 A | 2294 | 100% |  |  | start no earlier than 2026-02-27 08:00 | Зорькин В | 0.5h | 0.5h |
| 2296 | 5.135.3 | доставка | 10d | 2026-03-02 10:00 A | 2026-03-16 10:00 A | 2295 | 100% |  |  | start no earlier than 2026-02-27 08:00 | Карабанов | 80h | 80h |
| 2297 | 5.135.4 | комплектация | 30min | 2026-06-01 09:00 A | 2026-06-01 09:30 A |  | 100% |  |  | start no earlier than 2026-06-01 09:00 | Зорькин В | 0.5h | 0.5h |
| 2298 | 5.135.5 | монтаж | 8h | 2026-06-24 09:00 A | 2026-06-24 18:00 A | 2296 | 100% |  |  | start no earlier than 2026-06-24 09:00 | Тимофеев В; Макаревич А | 16h | 16h |

| ID | WBS | Task | Duration | Start | Finish | Predecessors | Complete | Remaining | Total slack | Free slack | Constraint | Resources | Work | Actual work |
| --- | --- | --- | --- | --- | --- | --- | --- | --- | --- | --- | --- | --- | --- | --- |
| 2299 | 5.136 | **установить кнопочный пост вентилятора в окно в доступную зону** | 5.06d | 2026-03-03 09:00 A | 2026-03-10 09:30 |  | 1% | 5.01d | 274.53d |  |  |  | 44.5h | 0.5h |
| 2300 | 5.136.1 | заявка частотник 0,5-0,75квт | 30min | 2026-03-03 09:00 A | 2026-03-03 09:30 A |  | 100% |  |  |  | start no earlier than 2026-03-03 09:00 | Зорькин В | 0.5h | 0.5h |
| 2301 | 5.136.2 | доставка | 5d | 2026-03-03 09:30 | 2026-03-10 09:30 | 2300 |  |  | 274.53d |  | start no earlier than 2026-02-27 08:00 | Карабанов | 40h |  |
| 2302 | 5.136.3 | монтаж | 4h | 2026-03-03 09:00 | 2026-03-03 13:00 |  |  |  | 279.09d |  | start no earlier than 2026-03-03 09:00 | Дедов В | 4h |  |
| 2303 | 5.137 | замена местами бойлер с раздевали и кухня | 2h | 2026-02-27 09:00 A | 2026-02-27 11:00 A |  | 100% |  |  |  | start no earlier than 2026-02-27 08:00 | Бундин В; Труфанов А | 4h | 4h |
| 2304 | 5.138 | **установить калорифер на 4 котел** | 17d? | 2026-10-12 09:00 | 2026-11-02 18:00 |  |  |  | 95.59d |  |  |  | 97h |  |
| 2305 | 5.138.1 | заявка | 1h | 2026-10-12 09:00 | 2026-10-12 10:00 |  |  |  | 101.47d | 0d | start no earlier than 2026-10-12 09:00 | Зорькин В | 1h |  |
| 2306 | 5.138.2 | доставка | 10d | 2026-10-12 10:00 | 2026-10-23 10:00 | 2305 |  |  | 101.47d | 5.88d | start no earlier than 2026-02-27 08:00 | Карабанов | 80h |  |
| 2307 | 5.138.3 | монтаж | 1d? | 2026-11-02 09:00 | 2026-11-02 18:00 | 2306 |  |  | 95.59d |  | start no earlier than 2026-11-02 09:00 | Некрасов А; Труфанов А | 16h |  |
| 2308 | 5.139 | аудит по взрывоопасности 5ц | 1d? | 2025-09-03 09:00 | 2025-09-03 18:00 |  |  |  | 407.59d |  | start no earlier than 2025-09-03 09:00 |  |  |  |
| 2309 | 5.140 | **расширить прорем для проезда погрузчика** | 3d? | 2024-05-27 09:00 | 2024-05-29 18:00 |  |  |  | 737.59d |  |  |  | 24h |  |
| 2310 | 5.140.1 | перенос канализ трубы | 1d? | 2024-05-27 09:00 | 2024-05-27 18:00 |  |  |  | 737.59d | 0d | start no earlier than 2024-05-27 09:00 | Некрасов А | 8h |  |
| 2311 | 5.140.2 | монтаж закладных в прорем +400мм | 1d? | 2024-05-28 09:00 | 2024-05-28 18:00 | 2310 |  |  | 737.59d | 0d | start no earlier than 2024-05-17 09:00 | Некрасов А | 8h |  |
| 2312 | 5.140.3 | демонтаж /расширение | 1d? | 2024-05-29 09:00 | 2024-05-29 18:00 | 2311 |  |  | 737.59d |  | start no earlier than 2024-05-17 09:00 | Некрасов А | 8h |  |
| 2313 | 5.141 | подключить концевые выключатели шибера растаривателя | 2h | 2023-06-21 09:00 | 2023-06-21 11:00 |  |  |  | 983.34d |  | start no earlier than 2023-06-21 09:00 | Дедов В | 2h |  |
| 2314 | 5.142 | **установить сирену при включении тельфера** | 119d? | 2023-05-29 09:00 A | 2023-11-09 18:00 |  |  | 118.79d? | 881.59d |  |  |  | 48.08h | 0.08h |
| 2315 | 5.142.1 | заявка на сирену и кабель | 5min | 2023-05-29 09:00 A | 2023-05-29 09:05 A |  | 100% |  |  |  | start no earlier than 2023-05-29 09:00 | Лобанов И | 0.08h | 0.08h |
| 2316 | 5.142.2 | доставка | 5d | 2023-05-29 09:05 | 2023-06-05 09:05 | 2315 |  |  | 994.58d | 112.99d | start no earlier than 2023-05-22 09:00 | Малинина М | 40h |  |
| 2317 | 5.142.3 | монтаж | 1d? | 2023-11-09 09:00 | 2023-11-09 18:00 | 2316 |  |  | 881.59d |  | start no earlier than 2023-11-09 09:00 | Дедов В | 8h |  |
| 2318 | 5.143 | держак мешка для сбора отработанного корма лопатой, что бы второй не держал мешок | 1d? | 2026-05-04 09:00 | 2026-05-04 18:00 |  |  |  | 234.59d |  | start no earlier than 2026-05-04 09:00 | Тимофеев В | 8h |  |
| 2319 | 5.144 | **Замена насосной станции** | 9.25d | 2026-09-01 09:00 A | 2026-09-11 11:00 A |  | 100% |  |  |  |  |  | 6.33h | 6.33h |
| 2320 | 5.144.1 | Замена насоса | 2h | 2026-09-01 09:00 A | 2026-09-01 11:00 A |  | 100% |  |  |  | start no earlier than 2026-09-01 09:00 | Бундин В | 2h | 2h |
| 2321 | 5.144.2 | Заявка на станцию | 15min | 2026-09-02 09:00 A | 2026-09-02 09:15 A |  | 100% |  |  |  | start no earlier than 2026-09-02 08:00 | Зорькин В | 0.25h | 0.25h |
| 2322 | 5.144.3 | контроль доставки | 5min | 2026-09-11 09:00 A | 2026-09-11 09:05 A |  | 100% |  |  |  | start no earlier than 2026-09-11 09:00 | Зорькин В | 0.08h | 0.08h |
| 2323 | 5.144.4 | установка новой насосной станции | 2h | 2026-09-11 09:00 A | 2026-09-11 11:00 A |  | 100% |  |  |  | start no earlier than 2026-09-11 09:00 | Некрасов А; Макаревич А | 4h | 4h |
| 2324 | 5.145 | Попытаться заварить деки и хомуты той проволокой по нерже, что есть у нас | 3h | 2026-07-28 08:00 A | 2026-07-28 12:00 A |  | 100% |  |  |  | start no earlier than 2026-07-28 08:00 | Макаревич А | 3h | 3h |

| ID | WBS | Task | Duration | Start | Finish | Predecessors | Complete | Remaining | Total slack | Constraint | Resources | Work | Actual work |
| --- | --- | --- | --- | --- | --- | --- | --- | --- | --- | --- | --- | --- | --- |
| 2325 | 5.146 | **5 цех** | 0.25d | 2026-04-07 09:00 A | 2026-04-07 11:00 A |  | 100% |  |  |  |  | 3.5h | 3.5h |
| 2326 | 5.146.1 | Установка сеток на сито | 1h | 2026-04-07 09:00 A | 2026-04-07 10:00 A |  | 100% |  |  | start no earlier than 2026-04-07 08:00 | Бундин В | 1h | 1h |
| 2327 | 5.146.2 | **2 цех** | 0.25d | 2026-04-07 09:00 A | 2026-04-07 11:00 A |  | 100% |  |  |  |  | 2.5h | 2.5h |
| 2328 | 5.146.2.1 | Взять шланг с мойки зона экструдера, установить на складе навесок цех 2, для набора воды в кубы | 30min | 2026-04-07 09:00 A | 2026-04-07 09:30 A |  | 100% |  |  | start no earlier than 2026-04-07 08:00 | Бундин В | 0.5h | 0.5h |
| 2329 | 5.146.2.2 | Посмотреть подачу воды на поломоечной машинке | 2h | 2026-04-07 09:00 A | 2026-04-07 11:00 A |  | 100% |  |  | start no earlier than 2026-04-07 08:00 | Бундин В | 2h | 2h |
| 2330 | 6 | **модернизация** | 988.5d? | 2023-06-07 09:00 A | 2027-03-03 13:00 |  | 48% | 510.74d? | 5.09d |  |  | 3394.67h | 2643.67h |
| 2331 | 6.1 | доработка нерж труб для парогенератора (антиэлектрод) | 1h | 2026-07-06 09:00 | 2026-07-06 10:00 |  |  |  | 190.47d | start no earlier than 2026-07-06 09:00 | Тимофеев В | 1h |  |
| 2332 | 6.2 | **Дражжировка 2 линия 1 цех** | 0.25d | 2026-07-29 08:00 A | 2026-07-29 11:00 A |  | 100% |  |  |  |  | 2h | 2h |
| 2333 | 6.2.1 | установка трубки с отверстиями, эксперимент | 2h | 2026-07-29 08:00 A | 2026-07-29 11:00 A |  | 100% |  |  | start no earlier than 2026-07-29 08:00 | Тимофеев В | 2h | 2h |
| 2334 | 6.3 | **поточные весы на входе в барабан жира** | 0.12d | 2026-06-15 09:00 A | 2026-06-15 10:00 A |  | 100% |  |  |  |  | 1h | 1h |
| 2335 | 6.3.1 | запрос КП у НОТИС - весы с дозатором / бункеры | 1h | 2026-06-15 09:00 A | 2026-06-15 10:00 A |  | 100% |  |  | start no earlier than 2026-06-15 09:00 | Зорькин В | 1h | 1h |
| 2336 | 6.4 | **устройство загрузки в смесители** | 0.12d | 2026-03-31 09:00 | 2026-03-31 10:00 |  |  |  | 259.47d |  |  | 1h |  |
| 2337 | 6.4.1 | подбор оборудования, запрос КП | 1h | 2026-03-31 09:00 | 2026-03-31 10:00 |  |  |  | 259.47d | start no earlier than 2026-03-31 08:00 | Зорькин В | 1h |  |
| 2338 | 6.5 | **определить параметры сушки гранулы лаб испытанием** | 6d | 2024-09-09 09:00 A | 2024-09-16 18:00 A |  | 100% |  |  |  |  | 16h | 16h |
| 2339 | 6.5.1 | изучить метод материал, физ законы процесса сушки. | 4h | 2024-09-09 09:00 A | 2024-09-09 13:00 A |  | 100% |  |  | start no earlier than 2024-09-09 09:00 | Зорькин В | 4h | 4h |
| 2340 | 6.5.2 | Определить набор средств измерения и оборыдования для лаб работы. | 4h | 2024-09-09 14:00 A | 2024-09-09 18:00 A | 2339 | 100% |  |  | start no earlier than 2024-09-09 09:00 | Зорькин В | 4h | 4h |
| 2341 | 6.5.3 | разрабоать пошаговый план лаб работы сушки 1кг продукта в термошкафу | 4h | 2024-09-16 09:00 A | 2024-09-16 13:00 A | 2340 | 100% |  |  | start no earlier than 2024-09-16 09:00 | Зорькин В | 4h | 4h |
| 2342 | 6.5.4 | определить зависимость времени сушки от температуры и влажности среды. | 4h | 2024-09-16 14:00 A | 2024-09-16 18:00 A | 2341 | 100% |  |  | start no earlier than 2024-09-06 08:00 | Зорькин В | 4h | 4h |
| 2343 | 6.6 | **станция фильтрации гидролизат с еврокуба в промежут емкость. Фильтр + насос** | 27.25d | 2026-03-13 09:00 A | 2026-04-21 11:00 A |  | 100% |  |  |  |  | 8h | 8h |
| 2344 | 6.6.1 | составить схему размещения насос / фильтр | 1h | 2026-03-13 09:00 A | 2026-03-13 10:00 A |  | 100% |  |  | start no earlier than 2026-03-13 09:00 | Зорькин В | 1h | 1h |
| 2345 | 6.6.2 | заявка фильтр 5" коллона + фитинги РР | 1h | 2026-03-13 10:00 A | 2026-03-13 11:00 A | 2344 | 100% |  |  | start no earlier than 2026-03-12 08:00 | Зорькин В | 1h | 1h |
| 2346 | 6.6.3 | доставка | 10d | 2026-03-13 11:00 A | 2026-03-27 11:00 A | 2345 | 100% |  |  | start no earlier than 2026-03-12 08:00 |  |  |  |
| 2347 | 6.6.4 | сборка насосная станция с фильром в 1ц | 4h | 2026-04-20 09:00 A | 2026-04-20 13:00 A | 2346 | 100% |  |  | start no earlier than 2026-04-20 09:00 | Тимофеев В | 4h | 4h |
| 2348 | 6.6.5 | оформление протокол испытаний | 2h | 2026-04-21 09:00 A | 2026-04-21 11:00 A |  | 100% |  |  | start no earlier than 2026-04-21 09:00 | Зорькин В | 2h | 2h |

| ID | WBS | Task | Type | Duration | Start | Finish | Predecessors | Complete | Remaining | Total slack | Constraint | Resources | Work | Actual work |
| --- | --- | --- | --- | --- | --- | --- | --- | --- | --- | --- | --- | --- | --- | --- |
| 2349 | 6.7 | **тест форсунки на гидролизат фильтрованный гидролизат** |  | 95.25d | 2026-04-21 11:00 A | 2026-09-01 13:00 | 2343 | 72% | 26.28d | 149.09d |  |  | 19h | 15h |
| 2350 | 6.7.1 | подготовить переходник |  | 2h | 2026-04-21 11:00 A | 2026-04-21 13:00 A |  | 100% |  |  | start no earlier than 2026-03-12 08:00 | Тимофеев В | 2h | 2h |
| 2351 | 6.7.2 | тестирование разных форсунок |  | 2h | 2026-04-21 13:00 A | 2026-04-21 16:00 A | 2350 | 100% |  |  | start no earlier than 2026-03-12 08:00 | Тимофеев В; Зорькин В | 4h | 4h |
| 2352 | 6.7.3 | контроль наличия фитингов для подключения насосной фильтровальной станции к еврокубу |  | 30min | 2026-04-24 08:00 A | 2026-04-24 09:30 A |  | 100% |  |  | start no earlier than 2026-04-24 08:00 | Зорькин В; Тимофеев В | 1h | 1h |
| 2353 | 6.7.4 | тест - наполнить канистру с куба гидролизатом через станцию+фильтр |  | 2h | 2026-04-27 09:00 A | 2026-04-27 11:00 A |  | 100% |  |  | start no earlier than 2026-04-27 09:00 | Зорькин В; Тимофеев В | 3h | 3h |
| 2354 | 6.7.5 | фильтрованный гдз распылить форсунками штатным насосом - забивакет |  | 4h | 2026-05-13 09:00 A | 2026-05-13 13:00 A | 2353 | 100% |  |  | start no earlier than 2026-05-13 09:00 | Зорькин В; Тимофеев В | 5h | 5h |
| 2355 | 6.7.6 | проект распыление моторчиком |  | 4h | 2026-09-01 09:00 | 2026-09-01 13:00 |  |  |  | 149.09d | start no earlier than 2026-09-01 09:00 | Домоводов К | 4h |  |
| 2356 | 6.8 | **станция фильтраци куринный жир с еврокуба в промежут емкость. Насос + фильтр** |  | 36.75d? | 2026-03-05 09:00 A | 2026-04-24 16:00 A |  | 100% |  |  |  |  | 46h | 46h |
| 2357 | 6.8.1 | подбор производительный насос и фильтр для жира. Закачка с еврокуба, перекачка через фильтр |  | 1d? | 2026-03-05 09:00 A | 2026-03-05 18:00 A |  | 100% |  |  | start no earlier than 2026-03-05 09:00 | Домоводов К; Зорькин В | 16h | 16h |
| 2358 | 6.8.2 | заявка материалы |  | 1d? | 2026-03-06 09:00 A | 2026-03-06 18:00 A | 2357 | 100% |  |  | start no earlier than 2026-02-27 08:00 | Зорькин В | 8h | 8h |
| 2359 | 6.8.3 | тест насосной станцией с фильтром |  | 1d? | 2026-04-20 09:00 A | 2026-04-20 18:00 A |  | 100% |  |  | start no earlier than 2026-04-20 09:00 | Зорькин В; Тимофеев В | 16h | 16h |
| 2360 | 6.8.4 | сборка второй станции для жира на БГ11А |  | 6h | 2026-04-24 08:00 A | 2026-04-24 16:00 A |  | 100% |  |  | start no earlier than 2026-04-24 08:00 | Тимофеев В | 6h | 6h |
| 2361 | 6.9 | **мешалка гидролизата** |  | 131.12d | 2026-03-03 09:00 A | 2026-09-02 10:00 A |  | 100% |  |  |  |  | 37.08h | 37.08h |
| 2362 | 6.9.1 | определить диаметр вала / где инструкция? Выяснить |  | 20min | 2026-08-28 09:00 A | 2026-08-28 09:20 A |  | 100% |  |  | start no earlier than 2026-08-28 09:00 | Зорькин В | 0.33h | 0.33h |
| 2363 | 6.9.2 | согласовать договор /оплата счет |  | 1h | 2026-03-03 09:00 A | 2026-03-03 10:00 A |  | 100% |  |  | start no earlier than 2026-03-03 09:00 | Домоводов К | 1h | 1h |
| 2364 | 6.9.3 | доставка | milestone | 0d | 2026-08-10 08:00 A | 2026-08-10 08:00 A |  | 100% |  |  | start no earlier than 2026-08-10 08:00 |  |  |  |
| 2365 | 6.9.4 | планирование технологии работы / какие нужны доработки |  | 15min | 2026-08-12 09:00 A | 2026-08-12 09:15 A |  | 100% |  |  | start no earlier than 2026-08-12 09:00 | Домоводов К | 0.25h | 0.25h |
| 2366 | 6.9.5 | сборка и тест с операторами в 1ц. Можно приварить кронштейны под штабелер |  | 4h | 2026-08-12 09:00 A | 2026-08-12 13:00 A |  | 100% |  |  | start no earlier than 2026-08-12 09:00 | Макаревич А | 4h | 4h |
| 2367 | 6.9.6 | составить чертеж кронштейна |  | 1h | 2026-08-17 09:00 A | 2026-08-17 10:00 A |  | 100% |  |  | start no earlier than 2026-08-17 09:00 | Шуранов Ю | 1h | 1h |
| 2368 | 6.9.7 | заявка на лебедка |  | 15min | 2026-08-17 10:00 A | 2026-08-17 10:15 A | 2367 | 100% |  |  | start no earlier than 2026-08-14 09:00 | Шуранов Ю | 0.25h | 0.25h |
| 2369 | 6.9.8 | конроль доставки |  | 15min | 2026-08-22 10:15 A | 2026-08-24 09:15 A | 2368FS+5d | 100% |  |  | start no earlier than 2026-08-14 09:00 | Шуранов Ю | 0.25h | 0.25h |
| 2370 | 6.9.9 | монтаж лебедка |  | 6h | 2026-08-31 09:00 A | 2026-08-31 16:00 A | 2369FS+1d | 100% |  |  | start no earlier than 2026-08-31 09:00 | Некрасов А; Труфанов А | 12h | 12h |
| 2371 | 6.9.10 | монтаж кронштейн под лебедку |  | 6h | 2026-08-31 16:00 A | 2026-09-01 13:00 A | 2370 | 100% |  |  | start no earlier than 2026-08-31 09:00 | Некрасов А; Труфанов А | 12h | 12h |
| 2372 | 6.9.11 | Установить 3-х фазную вилку для мешалки рядом с частотником |  | 2h | 2026-08-31 08:00 A | 2026-08-31 11:00 A |  | 100% |  |  | start no earlier than 2026-08-31 08:00 | Дедов В | 2h | 2h |
| 2373 | 6.9.12 | Установить розетку для электротали, проложить кабель к розетке возле мухобойки |  | 3h | 2026-08-31 08:00 A | 2026-08-31 12:00 A |  | 100% |  |  | start no earlier than 2026-08-31 08:00 | Дедов В | 3h | 3h |
| 2374 | 6.9.13 | Подключить таль к розетке, проложить гофру |  | 1h | 2026-09-02 09:00 A | 2026-09-02 10:00 A |  | 100% |  |  | start no earlier than 2026-09-02 09:00 | Бундин В | 1h | 1h |

| ID | WBS | Task | Duration | Start | Finish | Predecessors | Complete | Remaining | Total slack | Constraint | Resources | Work | Actual work |
| --- | --- | --- | --- | --- | --- | --- | --- | --- | --- | --- | --- | --- | --- |
| 2375 | 6.10 | **качественное нанесение жира тесты** | 275.5d? | 2026-03-02 09:00 A | 2027-03-03 13:00 A |  | 100% |  |  |  |  | 2102h | 2102h |
| 2376 | 6.10.1 | **испытания форсунка 2х фазная 1ц** | 2.25d | 2026-03-02 09:00 A | 2026-03-04 11:00 A |  | 100% |  |  |  |  | 5.5h | 5.5h |
| 2377 | 6.10.1.1 | подготовить кронштейн крепления форсунки к конвейеру | 2h | 2026-03-02 09:00 A | 2026-03-02 11:00 A |  | 100% |  |  | start no earlier than 2026-03-02 09:00 | Тимофеев В | 2h | 2h |
| 2378 | 6.10.1.2 | подготовить пневморедуктор, временно с НОТИС 3ц | 1h | 2026-03-02 11:00 A | 2026-03-02 12:00 A | 2377 | 100% |  |  | start no earlier than 2026-02-27 08:00 | Тимофеев В | 1h | 1h |
| 2379 | 6.10.1.3 | подготовить фильтр 1шт | 30min | 2026-03-02 12:00 A | 2026-03-02 12:30 A | 2378 | 100% |  |  | start no earlier than 2026-02-27 08:00 | Тимофеев В | 0.5h | 0.5h |
| 2380 | 6.10.1.4 | Тест форсунки на жирах, скооперироваться с технологами | 2h | 2026-03-04 09:00 A | 2026-03-04 11:00 A |  | 100% |  |  | start no earlier than 2026-03-04 09:00 | Тимофеев В | 2h | 2h |
| 2381 | 6.10.2 | **монтаж форсунки в линию** | 266.5d? | 2026-03-11 09:00 A | 2027-03-03 13:00 A |  | 100% |  |  |  | Тимофеев В | 2096.5h | 2096.5h |
| 2382 | 6.10.2.1 | **тест однофазная форсунка** | 30.25d? | 2026-03-11 09:00 A | 2026-04-22 11:00 A |  | 100% |  |  |  |  | 52.5h | 52.5h |
| 2383 | 6.10.2.1.1 | заявка пневморедуктор, фитинги насос - кран - 3х ходовой | 30min | 2026-03-11 09:00 A | 2026-03-11 09:30 A |  | 100% |  |  | start no earlier than 2026-03-11 09:00 | Зорькин В | 0.5h | 0.5h |
| 2384 | 6.10.2.1.2 | проект рама для монтаж фильтров, редуктор, кронштейн форсунки | 1d? | 2026-03-11 09:30 A | 2026-03-12 09:30 A | 2383 | 100% |  |  | start no earlier than 2026-02-27 08:00 | Домоводов К | 8h | 8h |
| 2385 | 6.10.2.1.3 | доставка | 5d | 2026-03-30 09:00 A | 2026-04-03 18:00 A |  | 100% |  |  | start no earlier than 2026-03-30 09:00 | Карабанов | 40h | 40h |
| 2386 | 6.10.2.1.4 | сборка рама, покраска | 2h | 2026-04-22 09:00 A | 2026-04-22 11:00 A | 2384 | 100% |  |  | start no earlier than 2026-04-22 09:00 | Тимофеев В | 2h | 2h |
| 2387 | 6.10.2.1.5 | монтаж 0,3 форсунки | 2h | 2026-04-22 09:00 A | 2026-04-22 11:00 A | 2385 | 100% |  |  | start no earlier than 2026-04-22 09:00 | Тимофеев В | 2h | 2h |
| 2388 | 6.11 | **тест однофазная форсунка** | 0.02d | 2026-03-16 09:00 A | 2026-03-16 09:10 A |  | 100% |  |  |  |  | 0.17h | 0.17h |
| 2389 | 6.11.1 | получить счет | 10min | 2026-03-16 09:00 A | 2026-03-16 09:10 A |  | 100% |  |  | start no earlier than 2026-03-16 09:00 | Домоводов К | 0.17h | 0.17h |
| 2390 | 6.12 | **установить фильтры жир на 1 и 2 линию** | 71.25d | 2026-03-17 09:00 A | 2026-06-24 11:00 |  | 83% | 11.88d | 198.34d |  |  | 14h | 12h |
| 2391 | 6.12.1 | сборка система фильтров 2 фильтра на 2 линии подготовиь + рама | 4h | 2026-03-17 09:00 A | 2026-03-17 13:00 A |  | 100% |  |  | start no earlier than 2026-03-17 09:00 | Тимофеев В | 4h | 4h |
| 2392 | 6.12.2 | монтаж стационарно рама под фильтры | 4h | 2026-04-22 09:00 A | 2026-04-22 13:00 A | 2391 | 100% |  |  | start no earlier than 2026-04-22 09:00 | Тимофеев В | 4h | 4h |
| 2393 | 6.12.3 | калибровка PID регулятора подачи жира | 2h | 2026-05-13 09:00 A | 2026-05-13 11:00 A |  | 100% |  |  | start no earlier than 2026-05-13 09:00 | Зорькин В; Домоводов К | 4h | 4h |
| 2394 | 6.12.4 | подготовка для установить на 1 линию | 2h | 2026-06-24 09:00 | 2026-06-24 11:00 |  |  |  | 198.34d | start no earlier than 2026-06-24 09:00 | Тимофеев В | 2h |  |
| 2395 | 6.13 | **ТЕКО 0,4 или 1,5 поставить пленку с БЕСТРОМА 620мм** | 6.09d | 2026-03-13 09:00 A | 2026-03-23 09:45 A |  | 100% |  |  |  |  | 0.75h | 0.75h |
| 2396 | 6.13.1 | запрос возможности в ТЕКО | 30min | 2026-03-13 09:00 A | 2026-03-13 09:30 A |  | 100% |  |  | start no earlier than 2026-03-13 09:00 | Зорькин В | 0.5h | 0.5h |
| 2397 | 6.13.2 | контроль ответ | 15min | 2026-03-23 09:30 A | 2026-03-23 09:45 A | 2396FS+10d | 100% |  |  | start no earlier than 2026-03-12 08:00 | Зорькин В | 0.25h | 0.25h |
| 2398 | 6.14 | **фильера с вставками для 2ц** | 0.02d | 2025-02-21 09:00 A | 2025-02-21 09:10 A |  | 100% |  |  |  |  | 0.17h | 0.17h |
| 2399 | 6.14.1 | контроль изготовления | 10min | 2025-02-21 09:00 A | 2025-02-21 09:10 A |  | 100% |  |  | start no earlier than 2025-02-21 09:00 | Шуранов Ю | 0.17h | 0.17h |

| ID | WBS | Task | Duration | Start | Finish | Predecessors | Complete | Total slack | Free slack | Constraint | Resources | Work | Actual work |
| --- | --- | --- | --- | --- | --- | --- | --- | --- | --- | --- | --- | --- | --- |
| 2400 | 6.15 | **ручка для экструдера крутиьт мотор на 1 и 2 линию** | 138d? | 2024-08-09 09:00 | 2025-02-18 18:00 |  |  | 548.59d |  |  |  | 9h |  |
| 2401 | 6.15.1 | изготовление | 1d? | 2025-02-18 09:00 | 2025-02-18 18:00 |  |  | 548.59d |  | start no earlier than 2025-02-18 09:00 | Черепанов И | 8h |  |
| 2402 | 6.15.2 | составить чертежи / разместить изготовление | 1h | 2024-08-09 09:00 | 2024-08-09 10:00 |  |  | 686.47d |  | start no earlier than 2024-08-09 09:00 | Шуранов Ю | 1h |  |
| 2403 | 6.16 | **охлаждение шкафов управления печью 1 2 3 линия** | 5d? | 2024-04-18 09:00 | 2024-04-24 18:00 |  |  | 762.59d |  |  |  | 40h |  |
| 2404 | 6.16.1 | выбор и заявка кондиционеры для щитов управления | 1d? | 2024-04-18 09:00 | 2024-04-18 18:00 |  |  | 762.59d | 0d | start no earlier than 2024-04-18 09:00 | Домоводов К | 8h |  |
| 2405 | 6.16.2 | оплата / доставка | 1d? | 2024-04-19 09:00 | 2024-04-19 18:00 | 2404 |  | 762.59d | 0d | start no earlier than 2024-04-04 09:00 | Мультан | 8h |  |
| 2406 | 6.16.3 | монтаж | 3d | 2024-04-22 09:00 | 2024-04-24 18:00 | 2405 |  | 762.59d |  | start no earlier than 2024-04-11 09:00 | Некрасов А | 24h |  |
| 2407 | 6.17 | **подача гидролизат в смеситель насосом** | 25d? | 2024-03-25 09:00 | 2024-04-26 18:00 |  |  | 760.59d |  |  |  | 200h |  |
| 2408 | 6.17.1 | выбор насоса / заявка на насос | 1d? | 2024-03-25 09:00 | 2024-03-25 18:00 |  |  | 760.59d | 0d | start no earlier than 2024-03-25 09:00 | Домоводов К | 8h |  |
| 2409 | 6.17.2 | проректирование автоматика, монтажная часть / заявка | 1d? | 2024-03-26 09:00 | 2024-03-26 18:00 | 2408 |  | 760.59d | 0d | start no earlier than 2024-03-22 09:00 | Домоводов К | 8h |  |
| 2410 | 6.17.3 | поставка оборудования | 20d | 2024-03-27 09:00 | 2024-04-23 18:00 | 2409 |  | 760.59d | 0d | start no earlier than 2024-03-22 09:00 | Мультан | 160h |  |
| 2411 | 6.17.4 | монтаж электрика | 1d? | 2024-04-24 09:00 | 2024-04-24 18:00 | 2410 |  | 760.59d | 0d | start no earlier than 2024-03-22 09:00 | Некрасов А | 8h |  |
| 2412 | 6.17.5 | монтаж трубопровод | 1d? | 2024-04-25 09:00 | 2024-04-25 18:00 | 2411 |  | 760.59d | 0d | start no earlier than 2024-03-22 09:00 | Некрасов А | 8h |  |
| 2413 | 6.17.6 | монтаж автоматика | 1d? | 2024-04-26 09:00 | 2024-04-26 18:00 | 2412 |  | 760.59d |  | start no earlier than 2024-03-22 09:00 | Некрасов А | 8h |  |
| 2414 | 6.18 | **установить форсунки на подачу жир и гидролизат** | 106.38d | 2024-03-26 09:00 A | 2024-08-21 12:00 A |  | 100% |  |  |  |  | 187h | 187h |
| 2415 | 6.18.1 | выбор тип форсунок, заявка | 1d | 2024-03-26 09:00 A | 2024-03-26 18:00 A |  | 100% |  |  | start no earlier than 2024-03-26 09:00 | Домоводов К | 8h | 8h |
| 2416 | 6.18.2 | проректирование / заявка на пневматику и электрику для управления форсунками | 1d | 2024-03-27 09:00 A | 2024-03-27 18:00 A | 2415 | 100% |  |  | start no earlier than 2024-03-22 09:00 | Домоводов К | 8h | 8h |
| 2417 | 6.18.3 | тех решение / чертеж крепления форсунок | 1d | 2024-03-28 09:00 A | 2024-03-28 18:00 A | 2416 | 100% |  |  | start no earlier than 2024-03-22 09:00 | Домоводов К | 8h | 8h |
| 2418 | 6.18.4 | доставка | 20d | 2024-03-29 09:00 A | 2024-04-25 18:00 A | 2415, 2417 | 100% |  |  | start no earlier than 2024-03-22 09:00 | Мультан | 160h | 160h |
| 2419 | 6.18.5 | монтаж механника | 2h | 2024-08-21 09:00 A | 2024-08-21 11:00 A | 2418 | 100% |  |  | start no earlier than 2024-08-21 09:00 | Тимофеев В | 2h | 2h |
| 2420 | 6.18.6 | монтаж пневматика | 1h | 2024-08-21 11:00 A | 2024-08-21 12:00 A | 2419 | 100% |  |  | start no earlier than 2024-03-22 09:00 | Тимофеев В | 1h | 1h |
| 2421 | 6.19 | **модернизация откидной воронка загрузки в барабан дрожировки** | 10.62d | 2024-05-14 09:00 A | 2024-05-28 15:00 A |  | 100% |  |  |  |  | 89h | 89h |
| 2422 | 6.19.1 | составить эскиз / заказ шарниры (при остановке экструдера) | 1h | 2024-05-14 09:00 A | 2024-05-14 10:00 A |  | 100% |  |  | start no earlier than 2024-05-14 09:00 | Шуранов Ю | 1h | 1h |
| 2423 | 6.19.2 | доставка | 10d | 2024-05-14 10:00 A | 2024-05-28 10:00 A | 2422 | 100% |  |  | start no earlier than 2024-03-14 09:00 | Мультан | 80h | 80h |
| 2424 | 6.19.3 | монгтаж | 4h | 2024-05-28 10:00 A | 2024-05-28 15:00 A | 2423 | 100% |  |  | start no earlier than 2024-05-14 09:00 | Макаревич А; Некрасов А | 8h | 8h |
| 2425 | 6.20 | модернизация ножевого узла | 1d? | 2023-12-28 09:00 | 2023-12-28 18:00 |  |  | 846.59d |  | start no earlier than 2023-12-28 09:00 |  |  |  |

| ID | WBS | Task | Duration | Start | Finish | Predecessors | Complete | Remaining | Total slack | Free slack | Constraint | Resources | Work | Actual work |
| --- | --- | --- | --- | --- | --- | --- | --- | --- | --- | --- | --- | --- | --- | --- |
| 2426 | 6.21 | **модернизация дозации воды в прекондиционер** | 0.62d | 2023-12-25 09:00 A | 2023-12-25 15:00 A |  | 100% |  |  |  |  |  | 5h | 5h |
| 2427 | 6.21.1 | установить балансировочный кран 2 линия | 1h | 2023-12-25 09:00 A | 2023-12-25 10:00 A |  | 100% |  |  |  | start no earlier than 2023-12-25 09:00 | Дедов В | 1h | 1h |
| 2428 | 6.21.2 | установить расходомер 2 линия | 2h | 2023-12-25 10:00 A | 2023-12-25 12:00 A | 2427 | 100% |  |  |  | start no earlier than 2023-12-20 09:00 | Дедов В | 2h | 2h |
| 2429 | 6.21.3 | установить расходомер 2 линия | 2h | 2023-12-25 12:00 A | 2023-12-25 15:00 A | 2428 | 100% |  |  |  | start no earlier than 2023-12-20 09:00 | Дедов В | 2h | 2h |
| 2430 | 6.22 | **заменить шланг на высоктемпературный на жир** | 1.62d? | 2024-05-14 09:00 A | 2024-05-15 15:00 A |  | 100% |  |  |  |  |  | 13h | 13h |
| 2431 | 6.22.1 | заявка / подбор | 1h | 2024-05-14 09:00 A | 2024-05-14 10:00 A |  | 100% |  |  |  | start no earlier than 2024-05-14 09:00 | Шуранов Ю | 1h | 1h |
| 2432 | 6.22.2 | доставка | 1d? | 2024-05-14 10:00 A | 2024-05-15 10:00 A | 2431 | 100% |  |  |  | start no earlier than 2023-12-13 08:00 | Малинина М | 8h | 8h |
| 2433 | 6.22.3 | замена | 4h | 2024-05-15 10:00 A | 2024-05-15 15:00 A | 2432 | 100% |  |  |  | start no earlier than 2024-01-15 09:00 | Тимофеев В | 4h | 4h |
| 2434 | 6.23 | **тепловая защита электромоторов мехнизмов** | 108.75d | 2023-12-28 09:00 A | 2024-05-28 16:00 |  | 2% | 106.58d | 738.84d |  |  |  | 100h | 2h |
| 2435 | 6.23.1 | **составить список эл моторов (нужен ток ) без теплового реле - от вибросита - до упаковки вся технология** | 75.25d | 2024-01-30 09:00 A | 2024-05-14 11:00 |  | 17% | 62.71d | 749.34d |  |  |  | 12h | 2h |
| 2436 | 6.23.1.1 | 5 цех | 2h | 2024-01-30 09:00 A | 2024-01-30 11:00 A |  | 100% |  |  |  | start no earlier than 2024-01-30 09:00 | Дедов В | 2h | 2h |
| 2437 | 6.23.1.2 | 1 цех | 4h | 2024-01-30 09:00 | 2024-01-30 13:00 |  |  |  | 824.09d |  | start no earlier than 2024-01-30 09:00 | Дедов В | 4h |  |
| 2438 | 6.23.1.3 | 2 цех | 4h | 2024-01-30 09:00 | 2024-01-30 13:00 |  |  |  | 824.09d |  | start no earlier than 2024-01-30 09:00 | Дедов В | 4h |  |
| 2439 | 6.23.1.4 | заполнитьт таблицу для заявки место-двиг-ток | 2h | 2024-05-14 09:00 | 2024-05-14 11:00 |  |  |  | 749.34d |  | start no earlier than 2024-05-14 09:00 | Шуранов Ю | 2h |  |
| 2440 | 6.23.2 | переписать список мотор-редукторов | 2h | 2023-12-28 09:00 | 2023-12-28 11:00 |  |  |  | 835.59d | 96.75d | start no earlier than 2023-12-28 09:00 | Дедов В | 2h |  |
| 2441 | 6.23.3 | заявка тепл реле | 2h | 2024-05-14 09:00 | 2024-05-14 11:00 | 2440FS+1d |  |  | 738.84d | 0d | start no earlier than 2024-05-14 09:00 | Шуранов Ю | 2h |  |
| 2442 | 6.23.4 | дост авка | 10d | 2024-05-14 11:00 | 2024-05-28 11:00 | 2441 |  |  | 738.84d | 0d | start no earlier than 2023-12-13 08:00 | Малинина М | 80h |  |
| 2443 | 6.23.5 | монтаж конвейер 2ц | 2h | 2024-05-28 11:00 | 2024-05-28 13:00 | 2441, 2442 |  |  | 738.84d | 0d | start no earlier than 2024-01-19 09:00 | Дедов В | 2h |  |
| 2444 | 6.23.6 | монтаж составить список | 2h | 2024-05-28 14:00 | 2024-05-28 16:00 | 2443 |  |  | 738.84d |  | start no earlier than 2023-12-13 08:00 | Домоводов К | 2h |  |
| 2445 | 6.24 | **устройство контроля уровня сырья в большом бункере** | 14.03d | 2023-08-16 09:00 A | 2023-09-05 09:15 |  |  | 14d | 929.56d |  |  |  | 192.25h | 0.25h |
| 2446 | 6.24.1 | заявка на датчик | 15min | 2023-08-16 09:00 A | 2023-08-16 09:15 A |  | 100% |  |  |  | start no earlier than 2023-08-14 09:00 | Лобанов И | 0.25h | 0.25h |
| 2447 | 6.24.2 | доставка | 10d | 2023-08-16 09:15 | 2023-08-30 09:15 | 2446 |  |  | 929.56d | 0d | start no earlier than 2023-03-10 09:00 | Малинина М; Домоводов К | 160h |  |
| 2448 | 6.24.3 | выполнение монажных работ | 4d | 2023-08-30 09:15 | 2023-09-05 09:15 | 2447 |  |  | 929.56d |  | start no earlier than 2023-03-10 09:00 | Подрядчик | 32h |  |
| 2449 | 6.25 | **конвейер с охладителя регулировка ленты - модернизация** | 6.25d | 2024-05-14 09:00 A | 2024-05-22 11:00 A |  | 100% |  |  |  |  |  | 50h | 50h |
| 2450 | 6.25.1 | выбор и заявка натяжные буксы | 2h | 2024-05-14 09:00 A | 2024-05-14 11:00 A |  | 100% |  |  |  | start no earlier than 2024-05-14 09:00 | Шуранов Ю | 2h | 2h |
| 2451 | 6.25.2 | доставка | 5d | 2024-05-14 11:00 A | 2024-05-21 11:00 A | 2450 | 100% |  |  |  | start no earlier than 2023-10-30 09:00 | Малинина М | 40h | 40h |
| 2452 | 6.25.3 | монтаж | 1d | 2024-05-21 11:00 A | 2024-05-22 11:00 A | 2451 | 100% |  |  |  | start no earlier than 2023-12-01 09:00 | Тимофеев В | 8h | 8h |

| ID | WBS | Task | Duration | Start | Finish | Predecessors | Complete | Remaining | Actual start | Total slack | Free slack | Constraint | Resources | Work | Actual work |
| --- | --- | --- | --- | --- | --- | --- | --- | --- | --- | --- | --- | --- | --- | --- | --- |
| 2453 | 6.26 | **прекондиционер забивается отслоением слипшегося сырья** | 204d? | 2023-08-03 09:00 | 2024-05-14 18:00 |  |  |  |  | 0d |  |  |  | 24h |  |
| 2454 | 6.26.1 | **решение тех совет** | 1d? | 2023-08-03 09:00 | 2023-08-03 18:00 |  |  |  |  |  |  |  |  | 24h |  |
| 2455 | 6.26.1.1 | вар1 - доп лопатки на выходе | 1d? | 2024-05-14 09:00 | 2024-05-14 18:00 |  |  |  |  | 748.59d |  | start no earlier than 2024-05-14 09:00 | Шуранов Ю | 8h |  |
| 2456 | 6.26.1.2 | вар 2 - вертикальные ворошители | 1d? | 2024-05-14 09:00 | 2024-05-14 18:00 |  |  |  |  | 748.59d |  | start no earlier than 2024-05-14 09:00 | Шуранов Ю | 8h |  |
| 2457 | 6.26.1.3 | вар 3 - подача пара | 1d? | 2024-05-14 09:00 | 2024-05-14 18:00 |  |  |  |  | 748.59d |  | start no earlier than 2024-05-14 09:00 | Шуранов Ю | 8h |  |
| 2458 | 6.27 | **фильтры на баки жиров перед насосами** | 439.12d | 2023-07-20 09:00 A | 2025-03-26 10:00 A |  | 100% |  |  |  |  |  |  | 4.75h | 4.75h |
| 2459 | 6.27.1 | утвердить тех решение | 1h | 2023-07-20 09:00 A | 2023-07-20 10:00 A |  | 100% |  |  |  |  | start no earlier than 2023-07-20 09:00 | Лобанов И; Домоводов К; Сапелин С | 3h | 3h |
| 2460 | 6.27.2 | купить сетку в корпусе | 30min | 2024-05-14 09:00 A | 2024-05-14 09:30 A |  | 100% |  |  |  |  | start no earlier than 2024-05-14 09:00 | Шуранов Ю | 0.5h | 0.5h |
| 2461 | 6.27.3 | купить 1/2 муфта для установки фитингов | 15min | 2025-03-26 09:00 A | 2025-03-26 09:15 A |  | 100% |  |  |  |  | start no earlier than 2025-03-26 08:00 | Шуранов Ю | 0.25h | 0.25h |
| 2462 | 6.27.4 | проверка фитингов | 1h | 2025-03-26 09:00 A | 2025-03-26 10:00 A |  | 100% |  |  |  |  | start no earlier than 2025-03-26 08:00 | Зорькин В | 1h | 1h |
| 2463 | 6.28 | **защита редутора шнеков при отказе маслянного насоса** | 20.12d? | 2023-08-02 09:00 | 2023-08-30 10:00 |  | 33% | 13.52d? | 2023-07-28 09:00 |  |  |  |  | 126.5h | 41.5h |
| 2464 | 6.28.1 | поиск фитинг для замера реле давления | 30min | 2023-07-28 09:00 A | 2023-07-28 09:30 A |  | 100% |  |  |  |  | start no earlier than 2023-07-28 09:00 | Тимофеев В | 0.5h | 0.5h |
| 2465 | 6.28.2 | заявка на фитинг | 1h | 2023-07-31 09:00 A | 2023-07-31 10:00 A | 2464 | 100% |  |  |  |  | start no earlier than 2023-07-31 09:00 | Лобанов И | 1h | 1h |
| 2466 | 6.28.3 | доставка | 5d | 2023-07-31 10:00 A | 2023-08-07 10:00 A | 2465 | 100% |  |  |  |  | start no earlier than 2023-07-31 09:00 | Малинина М | 40h | 40h |
| 2467 | 6.28.4 | заявка реле потока 1/2 или 3/4 | 1h | 2026-03-19 09:00 | 2026-03-19 10:00 |  |  |  |  | 256.97d | 0d | start no earlier than 2026-03-19 09:00 | Шуранов Ю | 1h |  |
| 2468 | 6.28.5 | доставка | 10d | 2026-03-19 10:00 | 2026-04-02 10:00 | 2467 |  |  |  | 256.97d | 1.88d | start no earlier than 2026-03-12 08:00 | Карабанов | 80h |  |
| 2469 | 6.28.6 | монтаж гидравлика | 2h | 2026-04-06 09:00 | 2026-04-06 11:00 | 2468 |  |  |  | 255.09d | 0d | start no earlier than 2026-04-06 09:00 | Тимофеев В | 2h |  |
| 2470 | 6.28.7 | монтаж электрика схема защиты + привязка к частотному приводу | 2h | 2026-04-06 11:00 | 2026-04-06 13:00 | 2469 |  |  |  | 255.09d |  | start no earlier than 2023-07-20 09:00 | Тимофеев В | 2h |  |
| 2471 | 6.29 | **подача сырья в упаковщки 1 цех** | 199.5d? | 2023-06-07 09:00 A | 2024-03-12 13:00 |  | 12% | 175.32d? |  | 794.09d |  |  |  | 37h | 8h |
| 2472 | 6.29.1 | испытание пневмотранспорта напорная магистраль | 4h | 2024-03-12 09:00 A | 2024-03-12 13:00 A |  | 100% |  |  |  |  | start no earlier than 2024-03-12 09:00 | Бобренок В; Некрасов А | 8h | 8h |
| 2473 | 6.29.2 | технологическая схема подачи продукта в упаковщики | 1d? | 2023-06-19 09:00 | 2023-06-19 18:00 |  |  |  |  | 984.59d |  | start no earlier than 2023-06-19 09:00 | Технолог | 8h |  |
| 2474 | 6.29.3 | поиск / запрорс цен на диверторы | 2h | 2023-06-07 09:00 | 2023-06-07 11:00 |  |  |  |  | 990.97d | 0d | start no earlier than 2023-06-07 09:00 | Домоводов К | 2h |  |
| 2475 | 6.29.4 | поиск / запрос цены на эжекторный приемник | 2h | 2023-06-07 11:00 | 2023-06-07 13:00 | 2474 |  |  |  | 990.97d | 0d | start no earlier than 2023-05-10 08:00 | Домоводов К | 2h |  |
| 2476 | 6.29.5 | расчет трассы | 2d | 2023-06-07 14:00 | 2023-06-09 13:00 | 2475 |  |  |  | 990.97d | 0d | start no earlier than 2023-05-10 08:00 | Домоводов К | 16h |  |
| 2477 | 6.29.6 | подбор приобритение вентилятора | 1h | 2023-06-09 14:00 | 2023-06-09 15:00 | 2476 |  |  |  | 990.97d |  | start no earlier than 2023-04-27 09:00 | Домоводов К | 1h |  |

| ID | WBS | Task | Type | Duration | Start | Finish | Predecessors | Complete | Remaining | Total slack | Free slack | Constraint | Resources | Work | Actual work |
| --- | --- | --- | --- | --- | --- | --- | --- | --- | --- | --- | --- | --- | --- | --- | --- |
| 2478 | 6.30 | **защита тэн печи при отключении вентиляторов** |  | 160.25d? | 2023-06-09 09:00 | 2024-01-19 11:00 |  |  |  | 831.34d |  |  |  | 66h |  |
| 2479 | 6.30.1 | устиановить защиту на пускателе 380 1 линия |  | 2h | 2024-01-19 09:00 | 2024-01-19 11:00 |  |  |  | 831.34d |  | start no earlier than 2024-01-19 09:00 | Тимофеев В | 2h |  |
| 2480 | 6.30.2 | составить схему защиты |  | 1d? | 2023-06-09 09:00 | 2023-06-09 18:00 |  |  |  | 983.59d | 0d | start no earlier than 2023-06-09 09:00 | Домоводов К | 8h |  |
| 2481 | 6.30.3 | заявка |  | 1d? | 2023-06-12 09:00 | 2023-06-12 18:00 | 2480 |  |  | 983.59d | 0d | start no earlier than 2023-04-25 09:00 | Домоводов К | 8h |  |
| 2482 | 6.30.4 | оплата поставка |  | 5d | 2023-06-13 09:00 | 2023-06-19 18:00 | 2481 |  |  | 983.59d | 5d | start no earlier than 2023-05-02 09:00 | Малинина М | 40h |  |
| 2483 | 6.30.5 | сборка и монтаж |  | 1d? | 2023-06-27 09:00 | 2023-06-27 18:00 | 2482 |  |  | 978.59d |  | start no earlier than 2023-06-27 09:00 | Бобренок В | 8h |  |
| 2484 | 6.31 | Настройка даты на пробнике, нужно приподнять на 3-5 мм (ждем решение технологов, информация поменялась, читать письмо от 01.09.2026) |  | 3h | 2026-09-03 09:00 A | 2026-09-03 12:00 A |  | 100% |  |  |  | start no earlier than 2026-09-03 09:00 | Тимофеев В | 3h | 3h |
| 2485 | 7 | **техника** |  | 661.25d? | 2024-05-14 09:00 A | 2026-11-10 11:00 |  | 95% | 35.69d? | 88.34d |  |  |  | 56.58h | 51.58h |
| 2486 | 7.1 | ремонт генератора - замена реле / покупка с курьером |  | 2h | 2026-11-10 09:00 | 2026-11-10 11:00 |  |  |  | 88.34d |  | start no earlier than 2026-11-10 09:00 | Некрасов А; Труфанов А | 4h |  |
| 2487 | 7.2 | **KAMATSU #1** |  | 1d | 2026-10-19 09:00 A | 2026-10-20 09:00 |  | 99% | 0d | 105.59d |  |  |  | 0.08h | 0.08h |
| 2488 | 7.2.1 | **заявка 19_10** |  | 1d | 2026-10-19 09:00 A | 2026-10-20 09:00 |  | 99% | 0d | 105.59d |  |  |  | 0.08h | 0.08h |
| 2489 | 7.2.1.1 | вызов АВТОБЕСТ |  | 5min | 2026-10-19 09:00 A | 2026-10-19 09:05 A |  | 100% |  |  |  | start no earlier than 2026-10-19 08:00 | Зорькин В | 0.08h | 0.08h |
| 2490 | 7.2.1.2 | рвет ремень генератора | milestone | 0d | 2026-10-20 09:00 | 2026-10-20 09:00 | 2489 |  |  | 105.59d | 0d | start no earlier than 2026-10-20 09:00 | Автобест |  |  |
| 2491 | 7.2.1.3 | течь "всех" патрубков - комплексная замена | milestone | 0d | 2026-10-20 09:00 | 2026-10-20 09:00 | 2490 |  |  | 105.59d | 0d | start no earlier than 2026-10-19 08:00 | Автобест |  |  |
| 2492 | 7.2.1.4 | течь с масл наоса гидравлики - 1р/нет подливка уровень | milestone | 0d | 2026-10-20 09:00 | 2026-10-20 09:00 | 2491 |  |  | 105.59d |  | start no earlier than 2026-10-19 08:00 | Автобест |  |  |
| 2493 | 7.3 | не заводится TRF, сломана шпилька колесо. Контроль приезда приемка работ |  | 1h | 2026-08-17 09:00 A | 2026-08-17 10:00 A |  | 100% |  |  |  | start no earlier than 2026-08-17 09:00 | Шуранов Ю | 1h | 1h |
| 2494 | 7.4 | **капремонт погрузчика коматсу короткий** |  | 51.03d | 2026-08-13 09:00 A | 2026-10-13 09:15 A |  | 100% |  |  |  |  |  | 2.75h | 2.75h |
| 2495 | 7.4.1 | заявка получить цену в тракресурс |  | 15min | 2026-08-13 09:00 A | 2026-08-13 09:15 A |  | 100% |  |  |  | start no earlier than 2026-08-13 09:00 | Домоводов К | 0.25h | 0.25h |
| 2496 | 7.4.2 | заявка получить цену в форклифт |  | 15min | 2026-08-13 09:15 A | 2026-08-13 09:30 A | 2495 | 100% |  |  |  | start no earlier than 2026-08-13 09:00 | Домоводов К | 0.25h | 0.25h |
| 2497 | 7.4.3 | получить КП 2 | milestone | 0d | 2026-08-17 09:00 A | 2026-08-17 09:00 A |  | 100% |  |  |  | start no earlier than 2026-08-17 09:00 | Домоводов К |  |  |
| 2498 | 7.4.4 | решение о дате | milestone | 0d | 2026-09-07 09:00 A | 2026-09-07 09:00 A | 2496FS+1d | 100% |  |  |  | start no earlier than 2026-09-07 09:00 | Домоводов К |  |  |
| 2499 | 7.4.5 | орг отправить погрузчик в ремонт / составить акт |  | 2h | 2026-09-01 09:00 A | 2026-09-01 11:00 A | 2496, 2498FS+1d | 100% |  |  |  | start no earlier than 2026-08-26 09:00 | Шуранов Ю | 2h | 2h |
| 2500 | 7.4.6 | контроль сроков ремонта |  | 15min | 2026-10-13 09:00 A | 2026-10-13 09:15 A | 2499FS+20d | 100% |  |  |  | start no earlier than 2026-10-13 09:00 | Зорькин В | 0.25h | 0.25h |
| 2501 | 7.5 | заказать по комплекту воздушных фильтров для погрузчиков |  | 1h | 2026-08-18 09:00 A | 2026-08-18 10:00 A |  | 100% |  |  |  | start no earlier than 2026-08-18 09:00 | Шуранов Ю | 1h | 1h |
| 2502 | 7.6 | провкрить моточасы для проведения ТО |  | 1h | 2026-08-18 09:00 A | 2026-08-18 10:00 A |  | 100% |  |  |  | start no earlier than 2026-08-18 09:00 | Шуранов Ю | 1h | 1h |
| 2503 | 7.7 | не заводиться trf погрузчик, посмотреть подачу топлива |  | 1h | 2026-05-25 08:00 A | 2026-05-25 10:00 A |  | 100% |  |  |  | start no earlier than 2026-05-25 08:00 | Тимофеев В; Шуранов Ю | 2h | 2h |
| 2504 | 7.8 | ТО карбюратора ТРФ организовать |  | 1h | 2026-05-27 09:00 A | 2026-05-27 10:00 A |  | 100% |  |  |  | start no earlier than 2026-05-27 09:00 | Шуранов Ю | 1h | 1h |
| 2505 | 7.9 | ренгулировка ремня погрузчик желтый №209490 контроль |  | 1h | 2026-05-14 09:00 A | 2026-05-14 10:00 A |  | 100% |  |  |  | start no earlier than 2026-05-14 09:00 | Шуранов Ю | 1h | 1h |
| 2506 | 7.10 | ремонт генераторов -найти фирму |  | 1d? | 2026-05-07 09:00 A | 2026-05-07 18:00 A |  | 100% |  |  |  | start no earlier than 2026-05-07 09:00 | Шуранов Ю | 8h | 8h |
| 2507 | 7.11 | греется мотор сменный погрузчик (вероятно помпа). Орг визит |  | 15min | 2026-04-27 09:00 A | 2026-04-27 09:15 A |  | 100% |  |  |  | start no earlier than 2026-04-27 08:00 | Шуранов Ю | 0.25h | 0.25h |
| 2508 | 7.12 | установить вентиляторы на погрузчики |  | 2h | 2026-04-27 08:00 A | 2026-04-27 11:00 A |  | 100% |  |  |  | start no earlier than 2026-04-27 08:00 | Тимофеев В | 2h | 2h |
| 2509 | 7.13 | заменить шланги гидравлики погрузчик ТРФ |  | 1d? | 2026-04-21 09:00 A | 2026-04-21 18:00 A |  | 100% |  |  |  | start no earlier than 2026-04-21 09:00 |  |  |  |
| 2510 | 7.14 | пригласить тракресурс |  | 1h | 2026-04-21 09:00 A | 2026-04-21 10:00 A |  | 100% |  |  |  | start no earlier than 2026-04-21 09:00 | Шуранов Ю | 1h | 1h |
| 2511 | 7.15 | проварить ковш трактора в слесарке |  | 4h | 2026-03-24 08:00 A | 2026-03-24 13:00 A |  | 100% |  |  |  | start no earlier than 2026-03-24 08:00 | Бобренок В | 4h | 4h |
| 2512 | 7.16 | контроль доставки / приемка погрузчи коматсу |  | 1h | 2026-03-13 09:00 A | 2026-03-13 10:00 A |  | 100% |  |  |  | start no earlier than 2026-03-13 09:00 | Шуранов Ю | 1h | 1h |
| 2513 | 7.17 | ремонт штабелер 5 цех ролик и опрное колесо. Контроль |  | 30min | 2026-03-13 09:00 A | 2026-03-13 09:30 A |  | 100% |  |  |  | start no earlier than 2026-03-13 09:00 | Шуранов Ю | 0.5h | 0.5h |
| 2514 | 7.18 | ремонт ковш трактор |  | 6h | 2026-03-03 09:00 A | 2026-03-03 16:00 A |  | 100% |  |  |  | start no earlier than 2026-03-03 08:00 | Некрасов А; Труфанов А | 12h | 12h |

| ID | WBS | Task | Type | Duration | Start | Finish | Predecessors | Complete | Remaining | Total slack | Constraint | Resources | Work | Actual work |
| --- | --- | --- | --- | --- | --- | --- | --- | --- | --- | --- | --- | --- | --- | --- |
| 2515 | 7.19 | **ремонт цепи желтый вилочный + ручник** |  | 0.16d | 2025-07-28 09:00 A | 2025-07-28 10:15 A |  | 100% |  |  |  |  | 1.25h | 1.25h |
| 2516 | 7.19.1 | контроль даты визита |  | 15min | 2025-07-28 09:00 A | 2025-07-28 09:15 A |  | 100% |  |  | start no earlier than 2025-07-28 09:00 | Шуранов Ю | 0.25h | 0.25h |
| 2517 | 7.19.2 | ремонт контроль \принять работы |  | 1h | 2025-07-28 09:15 A | 2025-07-28 10:15 A | 2516 | 100% |  |  | start no earlier than 2025-07-23 09:00 | Шуранов Ю | 1h | 1h |
| 2518 | 7.20 | реморнт педаль газ на 3d принтере |  | 1h | 2025-07-23 09:00 A | 2025-07-23 10:00 A |  | 100% |  |  | start no earlier than 2025-07-23 09:00 | Шуранов Ю | 1h | 1h |
| 2519 | 7.21 | реморнт педаль газ на 3d принтере |  | 1h | 2026-09-01 09:00 | 2026-09-01 10:00 |  |  |  | 149.47d | start no earlier than 2026-09-01 09:00 | Домоводов К | 1h |  |
| 2520 | 7.22 | ТО штабелеры кайтымовская орг |  | 1h | 2025-07-23 09:00 A | 2025-07-23 10:00 A |  | 100% |  |  | start no earlier than 2025-07-23 09:00 | Шуранов Ю | 1h | 1h |
| 2521 | 7.23 | заявка доводчик двери желт коматсу |  | 15min | 2024-05-14 09:00 A | 2024-05-14 09:15 A |  | 100% |  |  | start no earlier than 2024-05-14 09:00 | Шуранов Ю | 0.25h | 0.25h |
| 2522 | 7.24 | **ошибка 02а22 штабелер PS16N 414** |  | 0.12d | 2024-05-14 09:00 A | 2024-05-14 10:00 A |  | 100% |  |  |  |  | 1h | 1h |
| 2523 | 7.24.1 | составить рекламацию / вызов специалистов |  | 1h | 2024-05-14 09:00 A | 2024-05-14 10:00 A |  | 100% |  |  | start no earlier than 2024-05-14 09:00 | Шуранов Ю | 1h | 1h |
| 2524 | 7.25 | **неисправна кнопка стоп штабелер 5 цех** |  | 0.19d | 2024-05-14 09:00 A | 2024-05-14 10:30 A |  | 100% |  |  |  |  | 1.5h | 1.5h |
| 2525 | 7.25.1 | орг работы по замене калеса штабелера |  | 1h | 2024-05-14 09:00 A | 2024-05-14 10:00 A |  | 100% |  |  | start no earlier than 2024-05-14 09:00 | Шуранов Ю | 1h | 1h |
| 2526 | 7.25.2 | орг забор штабелера на ремонт гидроциондра. Договор с сервисной компанией о дате, обменть штабелер с 2 цеха |  | 30min | 2024-05-14 10:00 A | 2024-05-14 10:30 A | 2525 | 100% |  |  | start no earlier than 2024-05-14 09:00 | Шуранов Ю | 0.5h | 0.5h |
| 2527 | 7.26 | **ремонт стеклоочиститель вилочного** |  | 0.5d | 2024-05-14 09:00 A | 2024-05-14 13:00 A |  | 100% |  |  |  |  | 5h | 5h |
| 2528 | 7.26.1 | осмотр механизма чтто сломалось |  | 4h | 2024-05-14 09:00 A | 2024-05-14 13:00 A |  | 100% |  |  | start no earlier than 2024-05-14 09:00 | Шуранов Ю | 4h | 4h |
| 2529 | 7.26.2 | заявка на покупку стеклоочист |  | 1h | 2024-05-14 09:00 A | 2024-05-14 10:00 A |  | 100% |  |  | start no earlier than 2024-05-14 09:00 | Шуранов Ю | 1h | 1h |
| 2530 | 7.27 | купить ремень на генератор |  | 2h | 2024-05-14 09:00 A | 2024-05-14 11:00 A |  | 100% |  |  | start no earlier than 2024-05-14 09:00 | Шуранов Ю | 2h | 2h |
| 2531 | 8 | **Лаборатория** |  | 0.06d | 2026-04-20 09:00 A | 2026-04-20 09:30 A |  | 100% |  |  |  |  | 1h | 1h |
| 2532 | 8.1 | Отнести старый бульбулятор в архив |  | 30min | 2026-04-20 09:00 A | 2026-04-20 09:30 A |  | 100% |  |  | start no earlier than 2026-04-20 09:00 | Тимофеев В | 0.5h | 0.5h |
| 2533 | 8.2 | Отнести короб от нового бульбулятора тоже в архив |  | 30min | 2026-04-20 09:00 A | 2026-04-20 09:30 A |  | 100% |  |  | start no earlier than 2026-04-20 09:00 | Тимофеев В | 0.5h | 0.5h |
| 2534 | 9 | **слесарное помещение** |  | 125.75d? | 2026-06-11 09:00 A | 2026-11-16 16:00 |  | 81% | 24.37d? | 81.84d |  |  | 80.83h | 60.33h |
| 2535 | 9.1 | Подготовка к инвентаризации |  | 6h | 2026-11-16 09:00 | 2026-11-16 16:00 |  |  |  | 81.84d | start no earlier than 2026-11-16 08:00 | Тимофеев В | 6h |  |
| 2536 | 9.2 | Собрать вакуумный насос от поломоечной машинки |  | 2h | 2026-11-10 09:00 | 2026-11-10 11:00 |  |  |  | 88.34d | start no earlier than 2026-11-10 09:00 | Макаревич А; Николаев | 4h |  |
| 2537 | 9.3 | Доделать 3 треугольника - покрасить / расставить | manual | 3h | 2026-11-10 09:00 | 2026-11-10 12:00 |  |  |  |  | start no earlier than 2026-11-10 09:00 | Макаревич А; Николаев | 6h |  |
| 2538 | 9.4 | Пересобрать редуктор привода печи, привезли 02.11.26, собран только что бы проверить венец. Обязательно смазать вручную подшипник на валу солидолом или синькой. |  | 2h | 2026-11-04 09:00 A | 2026-11-04 11:00 A |  | 100% |  |  | start no earlier than 2026-11-04 09:00 | Макаревич А | 2h | 2h |
| 2539 | 9.5 | Изучение инструкции по водоподготовке воды 1 цех/ предложения по запуску и реализации |  | 3h | 2026-11-03 09:00 | 2026-11-03 12:00 |  |  |  | 95.22d | start no earlier than 2026-11-03 09:00 | Николаев | 3h |  |

| ID | WBS | Task | Type | Duration | Start | Finish | Predecessors | Complete | Total slack | Constraint | Resources | Work | Actual work |
| --- | --- | --- | --- | --- | --- | --- | --- | --- | --- | --- | --- | --- | --- |
| 2540 | 9.6 | **Модернизация люльки** |  | 1d | 2026-10-31 09:00 A | 2026-11-02 18:00 A |  | 100% |  |  |  | 16h | 16h |
| 2541 | 9.6.1 | сделать вставку в люльку со ступенькой и перилами, для возможности подниматься выше. Высота ступеньки по нижнюю перилину, высота перила нужно определить внутреннюю часть скреплять на болты | manual | 2d | 2026-10-31 09:00 A | 2026-11-02 18:00 A |  | 100% |  | start no earlier than 2026-10-31 09:00 | Макаревич А | 16h | 16h |
| 2542 | 9.7 | Доработка кронштейна для оснастки Бестрома по ТЗ труфанова |  | 3h | 2026-10-23 09:00 A | 2026-10-23 12:00 A |  | 100% |  | start no earlier than 2026-10-23 08:00 | Макаревич А | 3h | 3h |
| 2543 | 9.8 | Ремонт насоса для гидролизата 2 цех, который снимали в четверг 22.10.26 |  | 2h | 2026-10-23 09:00 A | 2026-10-23 11:00 A |  | 100% |  | start no earlier than 2026-10-23 08:00 | Макаревич А | 2h | 2h |
| 2544 | 9.9 | Дефектовка болера со склада упаковки, выяснить почему не работает с проверкой под водой, болер снят |  | 2h | 2026-10-20 09:00 A | 2026-10-20 11:00 A |  | 100% |  | start no earlier than 2026-10-20 09:00 | Бобренок В | 2h | 2h |
| 2545 | 9.10 | Заварить обруч от сеялки, лежит в слесарке |  | 1h | 2026-10-13 09:00 A | 2026-10-13 10:00 A |  | 100% |  | start no earlier than 2026-10-13 08:00 | Бобренок В | 1h | 1h |
| 2546 | 9.11 | Собрать насосы НШГ какие можно и какие есть в слесарке. Сообщить по количеству Б/У насосов, новых и количество ремкомплекта |  | 2h | 2026-10-14 09:00 A | 2026-10-14 11:00 A |  | 100% |  | start no earlier than 2026-10-14 08:00 | Бобренок В | 2h | 2h |
| 2547 | 9.12 | **Ремонт двигателя от поломоечной машинки** |  | 13.25d | 2026-10-13 09:00 A | 2026-10-29 11:00 A |  | 100% |  |  |  | 3.33h | 3.33h |
| 2548 | 9.12.1 | Заявка на подшипник |  | 10min | 2026-10-13 09:00 A | 2026-10-13 09:10 A |  | 100% |  | start no earlier than 2026-10-13 09:00 | Зорькин В | 0.17h | 0.17h |
| 2549 | 9.12.2 | контроль |  | 10min | 2026-10-20 09:00 A | 2026-10-20 09:10 A | 2548 | 100% |  | start no earlier than 2026-10-20 09:00 | Зорькин В | 0.17h | 0.17h |
| 2550 | 9.12.3 | Сборка двигателя обратно |  | 2h | 2026-10-29 09:00 A | 2026-10-29 11:00 A | 2549 | 100% |  | start no earlier than 2026-10-29 09:00 | Бобренок В | 2h | 2h |
| 2551 | 9.12.4 | Снять прикипевшую часть подшипника с вала насоса поломоечной машинки. |  | 1h | 2026-10-13 09:00 A | 2026-10-13 10:00 A | 2550 | 100% |  | start no earlier than 2026-10-13 08:00 | Бобренок В | 1h | 1h |
| 2552 | 9.13 | Доделать электрод | manual | 2h | 2026-10-11 09:00 A | 2026-10-11 11:00 A | 2553 | 100% |  |  | Бобренок В | 2h | 2h |
| 2553 | 9.14 | Разбор полок на большом стеллаже, наведенеие порядка | manual | 3h | 2026-10-10 09:00 A | 2026-10-10 12:00 A |  | 100% |  | start no earlier than 2026-10-10 09:00 | Бундин В | 3h | 3h |
| 2554 | 9.15 | Ремонт электродов парогенератора, один из электродов травит, пересобрать |  | 3h | 2026-10-05 09:00 A | 2026-10-05 12:00 A |  | 100% |  | start no earlier than 2026-10-05 09:00 | Бобренок В | 3h | 3h |
| 2555 | 9.16 | **уборка и сортировка. Приготовить, дневные проверят и продолжат** |  | 3.25d | 2026-09-22 09:00 A | 2026-09-25 11:00 A |  | 100% |  |  |  | 9h | 9h |
| 2556 | 9.16.1 | освободить стеллаж для оперативного хранения с ФИО |  | 1h | 2026-09-22 16:00 A | 2026-09-22 17:00 A | 2559 | 100% |  | start no earlier than 2026-09-22 09:00 | Макаревич А | 1h | 1h |
| 2557 | 9.16.2 | куча №1 - не годное на выброс |  | 2h | 2026-09-22 09:00 A | 2026-09-22 11:00 A |  | 100% |  | start no earlier than 2026-09-22 09:00 | Макаревич А | 2h | 2h |
| 2558 | 9.16.3 | куча №2 - годное, но хранить нужно на дальних складах |  | 2h | 2026-09-22 11:00 A | 2026-09-22 13:00 A | 2557 | 100% |  | start no earlier than 2026-09-21 09:00 | Макаревич А | 2h | 2h |
| 2559 | 9.16.4 | куча №3 - не понятно где хранить. |  | 2h | 2026-09-22 14:00 A | 2026-09-22 16:00 A | 2558 | 100% |  | start no earlier than 2026-09-18 08:00 | Макаревич А | 2h | 2h |
| 2560 | 9.16.5 | сортировка и перемещение мусор / металлолм/ дальние стеллажи |  | 2h | 2026-09-25 09:00 A | 2026-09-25 11:00 A |  | 100% |  | start no earlier than 2026-09-25 09:00 | Бундин В | 2h | 2h |
| 2561 | 9.17 | отвезти паллет возле слесарки в синий | manual | 1h | 2026-08-30 09:00 A | 2026-08-30 10:00 A |  | 100% |  | start no earlier than 2026-08-30 09:00 | Бундин В | 1h | 1h |
| 2562 | 9.18 | заварить хомут от деко 5 ц. |  | 2h | 2026-07-02 09:00 A | 2026-07-02 11:00 A |  | 100% |  | start no earlier than 2026-07-02 09:00 | Тимофеев В | 2h | 2h |
| 2563 | 9.19 | доставить временно наш компрессор на 3 склад для обдува погрузчиков | manual | 1h | 2026-06-29 09:00 A | 2026-06-29 10:00 A |  | 100% |  | start no earlier than 2026-06-29 09:00 | Тимофеев В | 1h | 1h |
| 2564 | 9.20 | ремонт 2-х ручных запайщиков- запчасти на складе (нагревательные блоки, тены) | manual | 2h | 2026-06-27 09:00 A | 2026-06-27 11:00 A |  | 100% |  | start no earlier than 2026-06-27 09:00 | Дедов В | 2h | 2h |
| 2565 | 9.21 | оставляем порядок после своей смены в слесарке |  | 0.5h | 2026-06-12 09:00 | 2026-06-12 09:30 |  |  | 206.53d | start no earlier than 2026-06-12 09:00 | Дедов В; Бобренок В; Бундин В | 1.5h |  |
| 2566 | 9.22 | Проверка напольных весов, почему не работают, возможно отошел контакт |  | 2h | 2026-07-24 09:00 A | 2026-07-24 11:00 A |  | 100% |  | start no earlier than 2026-07-24 09:00 | Бундин В | 2h | 2h |
| 2567 | 9.23 | уборка |  | 0.25d? | 2026-06-11 09:00 A | 2026-06-11 11:00 A |  | 100% |  |  | Труфанов А | 2h | 2h |
| 2568 | 9.24 | проверить весы настольные (показывают вес больше, если получится калибровать) |  | 2h | 2026-06-11 09:00 A | 2026-06-11 11:00 A |  | 100% |  | start no earlier than 2026-06-11 09:00 | Дедов В | 2h | 2h |

| ID | WBS | Task | Type | Duration | Start | Finish | Predecessors | Complete | Remaining | Total slack | Constraint | Resources | Work | Actual work |
| --- | --- | --- | --- | --- | --- | --- | --- | --- | --- | --- | --- | --- | --- | --- |
| 2569 | 10 | **ЗИП ремонт** |  | 677.25d? | 2024-05-09 09:00 A | 2026-11-25 11:00 |  | 55% | 307.5d? | 75.34d |  |  | 845.42h | 411.58h |
| 2570 | 10.1 | Восстановление электродов в слесарке |  | 3h | 2026-11-17 09:00 | 2026-11-17 12:00 |  |  |  | 81.22d | start no earlier than 2026-11-17 09:00 | Дедов В | 3h |  |
| 2572 | 10.2 | бойлер с 2ц на ремонт / проверка потенциометра |  | 2h | 2026-11-13 09:00 | 2026-11-13 11:00 |  |  |  | 85.34d | start no earlier than 2026-11-13 08:00 | Бундин В | 2h |  |
| 2573 | 10.3 | Восстановление платы от пробника, зачистка контактов, где погоревшие пины соединение через внешний клемник (отметить статус задачи) | manual | 2h | 2026-11-03 09:00 | 2026-11-03 11:00 |  |  |  |  | start no earlier than 2026-11-03 09:00 | Дедов В | 2h |  |
| 2574 | 10.4 | **ремонт блоков управления датерами** |  | 0.38d | 2026-10-02 09:00 A | 2026-10-02 12:00 A |  | 100% |  |  |  |  | 3h | 3h |
| 2575 | 10.4.1 | составить схему подключения - мотор / датчик / тен / -- первые компоненты на плате блока (основной упор на эту задачу) Продолжаем делать |  | 3h | 2026-10-02 09:00 A | 2026-10-02 12:00 A |  | 100% |  |  | start no earlier than 2026-10-02 09:00 | Дедов В | 3h | 3h |
| 2576 | 10.5 | **Собрать редуктор питателя, который разобранный на верстаке** |  | 7.09d | 2026-09-28 09:00 A | 2026-10-06 09:45 A |  | 100% |  |  |  |  | 2.75h | 2.75h |
| 2577 | 10.5.1 | отпраитвь на перемонтку |  | 15min | 2026-09-28 09:00 A | 2026-09-28 09:15 A |  | 100% |  |  | start no earlier than 2026-09-28 09:00 | Зорькин В | 0.25h | 0.25h |
| 2578 | 10.5.2 | контроль |  | 15min | 2026-10-04 09:15 A | 2026-10-04 09:30 A | 2577FS+5d | 100% |  |  | start no earlier than 2026-09-25 08:00 | Зорькин В | 0.25h | 0.25h |
| 2579 | 10.5.3 | орг забрать |  | 15min | 2026-10-06 09:30 A | 2026-10-06 09:45 A | 2578FS+2d | 100% |  |  | start no earlier than 2026-09-25 08:00 | Зорькин В | 0.25h | 0.25h |
| 2580 | 10.5.4 | сборка |  | 2h | 2026-09-29 09:00 A | 2026-09-29 11:00 A | 2579FS+1d | 100% |  |  | start no earlier than 2026-09-25 08:00 | Бундин В | 2h | 2h |
| 2581 | 10.6 | **Дефектовка двигателя от питателя прекондиционера/ прозвонить (возможно подготовить для сдачи на перемотку)** |  | 8.25d | 2026-09-04 09:00 A | 2026-09-13 11:00 A |  | 100% |  |  |  |  | 4h | 4h |
| 2582 | 10.6.1 | разбрка тест |  | 1h | 2026-09-04 09:00 A | 2026-09-04 10:00 A |  | 100% |  |  | start no earlier than 2026-09-04 09:00 | Бобренок В | 1h | 1h |
| 2583 | 10.6.2 | тест 2 с редуктором |  | 1h | 2026-09-08 09:00 A | 2026-09-08 10:00 A |  | 100% |  |  | start no earlier than 2026-09-08 08:00 | Тимофеев В | 1h | 1h |
| 2584 | 10.6.3 | разборка ревизия |  | 2h | 2026-09-13 09:00 A | 2026-09-13 11:00 A |  | 100% |  |  | start no earlier than 2026-09-13 09:00 | Макаревич А | 2h | 2h |
| 2585 | 10.7 | **ремонт редутор печи №?** |  | 26.31d | 2026-09-05 09:00 A | 2026-10-02 11:30 A |  | 100% |  |  |  |  | 5.25h | 5.25h |
| 2586 | 10.7.1 | дефектовка редуктора печи 2 цех, лежит в слесарке |  | 2h | 2026-09-05 09:00 A | 2026-09-05 11:00 A |  | 100% |  |  | start no earlier than 2026-09-05 09:00 | Макаревич А | 2h | 2h |
| 2587 | 10.7.2 | возможно ли установить тавотницу на подшипник червяка? |  | 15min | 2026-09-10 09:00 A | 2026-09-10 09:15 A |  | 100% |  |  | start no earlier than 2026-09-10 09:00 | Тимофеев В | 0.25h | 0.25h |
| 2588 | 10.7.3 | заказ шестерни червя в ЗИП - отправить курьера |  | 15min | 2026-09-09 09:00 A | 2026-09-09 09:15 A | 2586 | 100% |  |  | start no earlier than 2026-09-09 09:00 | Зорькин В | 0.25h | 0.25h |
| 2589 | 10.7.4 | контроль изг шетесиерен |  | 15min | 2026-09-19 09:15 A | 2026-09-19 09:30 A | 2588FS+10d | 100% |  |  | start no earlier than 2026-09-08 08:00 | Зорькин В | 0.25h | 0.25h |
| 2590 | 10.7.5 | заказ шестерни червя в ЗИП - отправить курьера |  | 15min | 2026-09-21 09:00 A | 2026-09-21 09:15 A | 2586 | 100% |  |  | start no earlier than 2026-09-21 09:00 | Зорькин В | 0.25h | 0.25h |
| 2591 | 10.7.6 | контроль изг шетесиерен |  | 15min | 2026-10-01 09:15 A | 2026-10-01 09:30 A | 2590FS+10d | 100% |  |  | start no earlier than 2026-09-08 08:00 | Зорькин В | 0.25h | 0.25h |
| 2592 | 10.7.7 | сборка редутор венец |  | 2h | 2026-10-02 09:30 A | 2026-10-02 11:30 A | 2589FS+1d, 2591FS+1d | 100% |  |  | start no earlier than 2026-09-20 09:00 | Макаревич А | 2h | 2h |
| 2593 | 10.8 | ремонт оборотные сетки-поддоны от печи от 2ц |  | 2h | 2026-09-13 09:00 A | 2026-09-13 11:00 A |  | 100% |  |  | start no earlier than 2026-09-13 09:00 | Макаревич А | 2h | 2h |
| 2594 | 10.9 | подготовить электродную группу для 2 цеха |  | 3h | 2026-08-25 09:00 A | 2026-08-25 12:00 A |  | 100% |  |  | start no earlier than 2026-08-25 08:00 | Бундин В | 3h | 3h |
| 2595 | 10.10 | пепенос трубы нерж с 3ц на синий склад |  | 1h | 2026-08-24 09:00 A | 2026-08-24 10:00 A |  | 100% |  |  | start no earlier than 2026-08-24 09:00 | Некрасов А; Тимофеев В | 2h | 2h |
| 2596 | 10.11 | ремонт электрод парогенертора для 2ц |  | 4h | 2026-08-18 09:00 A | 2026-08-18 13:00 A |  | 100% |  |  | start no earlier than 2026-08-18 09:00 | Бобренок В | 4h | 4h |
| 2597 | 10.12 | перевоз батареи свинец от погрузчика на синий склад |  | 30min | 2026-08-12 09:00 A | 2026-08-12 09:30 A |  | 100% |  |  | start no earlier than 2026-08-12 09:00 | Макаревич А | 0.5h | 0.5h |

| ID | WBS | Task | Type | Duration | Start | Finish | Predecessors | Complete | Actual start | Actual finish | Constraint | Resources | Work | Actual work |
| --- | --- | --- | --- | --- | --- | --- | --- | --- | --- | --- | --- | --- | --- | --- |
| 2598 | 10.13 | **заточка ножей** |  | 6.03d | 2026-08-13 09:00 A | 2026-08-21 09:15 A |  | 100% |  |  |  |  | 0.5h | 0.5h |
| 2599 | 10.13.1 | разместить ЛТ70 курьеру, отметиь журнал |  | 15min | 2026-08-13 09:00 A | 2026-08-13 09:15 A |  | 100% |  |  | start no earlier than 2026-08-13 09:00 | Зорькин В | 0.25h | 0.25h |
| 2600 | 10.13.2 | контроль, орг забрать |  | 15min | 2026-08-21 09:00 A | 2026-08-21 09:15 A |  | 100% |  |  | start no earlier than 2026-08-21 09:00 | Шуранов Ю | 0.25h | 0.25h |
| 2601 | 10.14 | **ножевой узел для 1ц** |  | 0.03d | 2026-08-13 09:00 A | 2026-08-13 09:15 A |  | 100% |  |  |  |  | 0.25h | 0.25h |
| 2602 | 10.14.1 | контроль поставки |  | 15min | 2026-08-13 09:00 A | 2026-08-13 09:15 A |  | 100% |  |  | start no earlier than 2026-08-13 09:00 | Домоводов К | 0.25h | 0.25h |
| 2603 | 10.15 | подготовить электроды для парогенератора цех 1 |  | 4h | 2026-08-05 08:00 A | 2026-08-05 13:00 A |  | 100% |  |  | start no earlier than 2026-08-05 08:00 | Макаревич А | 4h | 4h |
| 2604 | 10.16 | восстановить голову насоса гидрализата (в слесарке) подписать | manual | 2h | 2026-08-01 09:00 A | 2026-08-01 11:00 A |  | 100% |  |  | start no earlier than 2026-08-01 09:00 | Бундин В | 2h | 2h |
| 2605 | 10.17 | **восстановить сетку спечи (она в слесарке)** |  | 1d? | 2026-08-14 09:00 | 2026-08-14 18:00 |  | 100% | 2026-08-03 09:00 | 2026-08-03 18:00 |  |  | 8h | 8h |
| 2606 | 10.17.1 | заказать сверла по нерж. М5 и М6 |  | 1d? | 2026-08-03 09:00 A | 2026-08-03 18:00 A |  | 100% |  |  | start no earlier than 2026-08-03 08:00 | Шуранов Ю | 8h | 8h |
| 2607 | 10.18 | подготовить антиэлектроды по аналогии с нашими (все на складе) | manual | 5h | 2026-08-01 09:00 A | 2026-08-01 15:00 A |  | 100% |  |  | start no earlier than 2026-08-01 09:00 | Бундин В | 5h | 5h |
| 2608 | 10.19 | подготовить электродную группу для парогенератора |  | 3h | 2026-06-12 09:00 A | 2026-06-12 12:00 A |  | 100% |  |  | start no earlier than 2026-06-12 09:00 | Бундин В | 3h | 3h |
| 2609 | 10.20 | собрать 2 стула для ИТР |  | 2h | 2026-06-07 09:00 A | 2026-06-08 11:00 A |  | 100% |  |  | start no earlier than 2026-06-07 09:00 | Бобренок В | 2h | 2h |
| 2610 | 10.21 | **покрасить швейлеры возле слесарки(грунтовка, затем серый цвет)** |  | 0.25d | 2026-06-12 09:00 A | 2026-06-12 11:00 A |  | 100% |  |  |  | Бобренок В | 4h | 4h |
| 2611 | 10.21.1 | болгаркой убрать сварочные сопли и покрасить |  | 2h | 2026-06-12 09:00 A | 2026-06-12 11:00 A |  | 100% |  |  | start no earlier than 2026-06-12 09:00 | Бундин В | 2h | 2h |
| 2612 | 10.22 | подготовить фильтры для кондиционеров, замена фильтр ткани. Находятся в слесарке | manual | 2h | 2026-06-14 09:00 A | 2026-06-14 11:00 A |  | 100% |  |  | start no earlier than 2026-06-14 09:00 | Бундин В | 2h | 2h |
| 2613 | 10.23 | **заявка на фильеры от 02.06 1ц и 2ц** |  | 7.19d | 2026-06-02 09:00 A | 2026-06-11 10:30 A |  | 100% |  |  |  |  | 4.5h | 4.5h |
| 2614 | 10.23.1 | подготовить чертежи по ТЗ |  | 2h | 2026-06-02 09:00 A | 2026-06-02 11:00 A |  | 100% |  |  | start no earlier than 2026-06-02 09:00 | Домоводов К | 2h | 2h |
| 2615 | 10.23.2 | **партия 1** |  | 6.19d | 2026-06-03 09:00 A | 2026-06-11 10:30 A |  | 100% |  |  |  |  | 1.5h | 1.5h |
| 2616 | 10.23.2.1 | разместить токарю заварка фильер + шлифвка |  | 30min | 2026-06-03 09:00 A | 2026-06-03 09:30 A |  | 100% |  |  | start no earlier than 2026-06-03 08:00 | Шуранов Ю | 0.5h | 0.5h |
| 2617 | 10.23.2.2 | забрать заваренные / разместить на изготовление дюз |  | 30min | 2026-06-07 09:30 A | 2026-06-08 09:30 A | 2616FS+4d | 100% |  |  | start no earlier than 2026-06-03 08:00 | Шуранов Ю | 0.5h | 0.5h |
| 2618 | 10.23.2.3 | забрать готовые |  | 30min | 2026-06-11 10:00 A | 2026-06-11 10:30 A | 2617FS+4d | 100% |  |  | start no earlier than 2026-06-03 08:00 | Шуранов Ю | 0.5h | 0.5h |
| 2619 | 10.23.3 | **партия 2** |  | 3.12d | 2026-06-04 09:00 A | 2026-06-09 10:00 A |  | 100% |  |  |  |  | 1h | 1h |
| 2620 | 10.23.3.1 | разместить готовые балванки на прожиг отверстий |  | 30min | 2026-06-04 09:00 A | 2026-06-04 09:30 A |  | 100% |  |  | start no earlier than 2026-06-04 09:00 | Шуранов Ю | 0.5h | 0.5h |
| 2621 | 10.23.3.2 | забрать готовые |  | 30min | 2026-06-09 09:30 A | 2026-06-09 10:00 A | 2620FS+5d | 100% |  |  | start no earlier than 2026-06-03 08:00 | Шуранов Ю | 0.5h | 0.5h |

| ID | WBS | Task | Duration | Start | Finish | Predecessors | Complete | Total slack | Free slack | Constraint | Resources | Work | Actual work |
| --- | --- | --- | --- | --- | --- | --- | --- | --- | --- | --- | --- | --- | --- |
| 2622 | 10.24 | **зип тенов на печь 70 и 85 + шестерни питатель 70** | 30.06d | 2026-05-28 09:00 A | 2026-07-09 09:30 A |  | 100% |  |  |  |  | 0.75h | 0.75h |
| 2623 | 10.24.1 | запрос Настя, получить счет | 15min | 2026-05-28 09:00 A | 2026-05-28 09:15 A |  | 100% |  |  | start no earlier than 2026-05-28 09:00 | Домоводов К | 0.25h | 0.25h |
| 2624 | 10.24.2 | оплата | 15min | 2026-06-04 09:00 A | 2026-06-04 09:15 A | 2623FS+2d | 100% |  |  | start no earlier than 2026-06-04 09:00 | Домоводов К | 0.25h | 0.25h |
| 2625 | 10.24.3 | контроль поставки | 15min | 2026-07-09 09:15 A | 2026-07-09 09:30 A | 2624FS+30d | 100% |  |  | start no earlier than 2026-05-27 08:00 | Зорькин В | 0.25h | 0.25h |
| 2626 | 10.25 | подготовка к инвентаризации | 3h | 2026-05-26 09:00 A | 2026-05-26 12:00 A |  | 100% |  |  | start no earlier than 2026-05-26 09:00 | Бундин В | 3h | 3h |
| 2627 | 10.26 | посчитать и записать какие и какое количество автоматов и контакторов есть в слесарке | 1h | 2026-05-23 09:00 A | 2026-05-25 10:00 A |  | 100% |  |  | start no earlier than 2026-05-23 09:00 | Макаревич А | 1h | 1h |
| 2628 | 10.27 | передать весы (малые в 1 цех, большие в 5 цех) со слесарки | 1h | 2026-05-22 09:00 A | 2026-05-22 10:00 A |  | 100% |  |  | start no earlier than 2026-05-22 09:00 | Макаревич А | 1h | 1h |
| 2629 | 10.28 | проверить работает или нет двигатель с накопительного стола цех 1- Валентин покажет. | 1h | 2026-05-19 08:00 A | 2026-05-19 10:00 A |  | 100% |  |  | start no earlier than 2026-05-19 08:00 | Дедов В | 1h | 1h |
| 2630 | 10.29 | наточить ножи для ц.2 | 1h | 2026-05-19 09:00 A | 2026-05-19 10:00 A |  | 100% |  |  | start no earlier than 2026-05-19 09:00 | Тимофеев В | 1h | 1h |
| 2631 | 10.30 | подготовка к инвентаризации (посчитать какие и метраж кабеля в слесарке и желтом нашей половине) | 2h | 2026-05-24 09:00 A | 2026-05-25 11:00 A |  | 100% |  |  | start no earlier than 2026-05-24 09:00 | Дедов В | 2h | 2h |
| 2632 | 10.31 | подготовить рабочее место в слесарке для работы на кровле Олега | 1h | 2026-05-15 09:00 A | 2026-05-15 10:00 A |  | 100% |  |  | start no earlier than 2026-05-15 09:00 | Некрасов А; Труфанов А; Тимофеев В; Макаревич А | 4h | 4h |
| 2633 | 10.32 | **ремонт инсекютер с 1ц в слесарке. Повесить в цехе, зафиксировать в журнал мастера** | 0.12d | 2026-05-19 09:00 A | 2026-05-19 10:00 A |  | 100% |  |  |  |  | 1h | 1h |
| 2634 | 10.32.1 | взять светильник "антимуха" у Луговских и повесить на входе в корридор между раздевалками | 1h | 2026-05-19 09:00 A | 2026-05-19 10:00 A |  | 100% |  |  | start no earlier than 2026-05-19 09:00 | Дедов В | 1h | 1h |
| 2635 | 10.33 | **орг ремонт мотор с вращаюбщего барабана 1ц** | 0.16d | 2026-09-01 09:00 | 2026-09-01 10:15 |  |  | 149.44d |  |  |  | 1.25h |  |
| 2636 | 10.33.1 | подписать шильдик. На веревочке картонка / пластик | 15min | 2026-09-01 09:00 | 2026-09-01 09:15 |  |  | 149.44d | 0d | start no earlier than 2026-09-01 09:00 | Шуранов Ю | 0.25h |  |
| 2637 | 10.33.2 | орг ремонт | 1h | 2026-09-01 09:15 | 2026-09-01 10:15 | 2636 |  | 149.44d |  | start no earlier than 2026-09-01 09:00 | Шуранов Ю | 1h |  |
| 2638 | 10.34 | получить на складе резинки на двери прекондиционеров и выдать цех 1 и 2 | 1h | 2026-05-11 09:00 A | 2026-05-11 10:00 A |  | 100% |  |  | start no earlier than 2026-05-11 09:00 |  |  |  |
| 2639 | 10.35 | подготовить электродную группу для 1 цеха | 3h | 2026-05-11 09:00 A | 2026-05-11 12:00 A |  | 100% |  |  | start no earlier than 2026-05-11 09:00 | Бундин В | 3h | 3h |
| 2640 | 10.36 | на емкость нерж сделать сгон и поплавок | 4h | 2026-05-09 09:00 A | 2026-05-11 13:00 A |  | 100% |  |  | start no earlier than 2026-05-09 09:00 | Макаревич А | 4h | 4h |
| 2641 | 10.37 | отвезти термоодеяло с слесарки в синий склад | 1h | 2026-05-11 09:00 A | 2026-05-11 10:00 A |  | 100% |  |  | start no earlier than 2026-05-11 09:00 | Бундин В | 1h | 1h |
| 2642 | 10.38 | приехали дроселя для светильников, восстановить не рабочие | 4h | 2026-05-12 09:00 A | 2026-05-12 13:00 A |  | 100% |  |  | start no earlier than 2026-05-12 09:00 | Бундин В | 4h | 4h |
| 2643 | 10.39 | **орг ремонт мотор с конв №2 1 линия 1ц** | 0.25d | 2026-09-01 09:00 | 2026-09-01 11:00 |  |  | 149.34d |  |  |  | 2h |  |
| 2644 | 10.39.1 | подписать шильдик | 60min | 2026-09-01 09:00 | 2026-09-01 10:00 |  |  | 149.34d | 0d | start no earlier than 2026-09-01 09:00 | Шуранов Ю | 1h |  |
| 2645 | 10.39.2 | орг ремонт | 1h | 2026-09-01 10:00 | 2026-09-01 11:00 | 2644 |  | 149.34d |  | start no earlier than 2026-05-14 09:00 | Шуранов Ю | 1h |  |
| 2646 | 10.40 | сборка редуктор с шлюз питателя (фото в чате 14.05) | 3h | 2026-08-31 09:00 A | 2026-08-31 12:00 A |  | 100% |  |  | start no earlier than 2026-09-02 09:00 | Тимофеев В | 3h | 3h |

| ID | WBS | Task | Type | Duration | Start | Finish | Predecessors | Complete | Constraint | Resources | Work | Actual work |
| --- | --- | --- | --- | --- | --- | --- | --- | --- | --- | --- | --- | --- |
| 2647 | 10.41 | **собрать мотор-редуктор прекондиционера в слесарке (сальники на складе в лотках снизу подписаны)** |  | 0.12d | 2026-06-15 09:00 A | 2026-06-15 10:00 A |  | 100% |  | Бундин В | 3h | 3h |
| 2648 | 10.41.1 | транспортировка в синий склад |  | 1h | 2026-06-15 09:00 A | 2026-06-15 10:00 A |  | 100% | start no earlier than 2026-06-15 09:00 | Тимофеев В; Некрасов А | 2h | 2h |
| 2649 | 10.42 | **вскрыть листогиб** |  | 4.5d | 2026-05-09 09:00 A | 2026-05-15 13:00 A |  | 100% |  |  | 11.17h | 11.17h |
| 2650 | 10.42.1 | проверить работу листогиба (попробовать загнуть нерж) |  | 1h | 2026-05-09 09:00 A | 2026-05-11 10:00 A |  | 100% | start no earlier than 2026-05-09 09:00 | Макаревич А | 1h | 1h |
| 2651 | 10.42.2 | как удлинить ручки, предложение |  | 5min | 2026-05-13 09:00 A | 2026-05-13 09:05 A |  | 100% | start no earlier than 2026-05-13 09:00 | Труфанов А | 0.08h | 0.08h |
| 2652 | 10.42.3 | куда крепить стационарно. Синий склад /контейнер. Предложения. |  | 5min | 2026-05-13 09:00 A | 2026-05-13 09:05 A |  | 100% | start no earlier than 2026-05-13 09:00 | Труфанов А | 0.08h | 0.08h |
| 2653 | 10.42.4 | изготовить раму для крепления к полу |  | 4h | 2026-05-15 09:00 A | 2026-05-15 13:00 A |  | 100% | start no earlier than 2026-05-15 09:00 | Тимофеев В; Макаревич А | 8h | 8h |
| 2654 | 10.42.5 | усилить ручки |  | 1h | 2026-05-15 09:00 A | 2026-05-15 10:00 A |  | 100% | start no earlier than 2026-05-15 09:00 | Тимофеев В; Макаревич А | 2h | 2h |
| 2655 | 10.43 | вывезти питатель на синий склад |  | 1h | 2026-05-05 09:00 A | 2026-05-05 10:00 A |  | 100% | start no earlier than 2026-05-05 09:00 | Тимофеев В | 1h | 1h |
| 2656 | 10.44 | транспортировка гильз и шнеков на синий склад (уложить по приходам из китая) |  | 3h | 2026-05-05 09:00 A | 2026-05-05 12:00 A |  | 100% | start no earlier than 2026-05-05 09:00 | Тимофеев В; Бобренок В; Шуранов Ю | 9h | 9h |
| 2657 | 10.45 | найти на синем складе комплектующие для инвентаризации с Алексеем |  | 3h | 2026-05-05 09:00 A | 2026-05-05 12:00 A |  | 100% | start no earlier than 2026-05-05 08:00 | Шуранов Ю | 3h | 3h |
| 2658 | 10.46 | посчитать все валы от транспортеров, занести в таблицу учета |  | 4h | 2026-05-11 09:00 A | 2026-05-11 13:00 A |  | 100% | start no earlier than 2026-05-09 09:00 | Шуранов Ю | 4h | 4h |
| 2659 | 10.47 | посчитать сколько валов для транспортеров Теко в слесарке |  | 1h | 2026-04-30 09:00 A | 2026-04-30 10:00 A |  | 100% | start no earlier than 2026-04-30 09:00 | Шуранов Ю | 1h | 1h |
| 2660 | 10.48 | уборка остатки металл в контейнер |  | 1h | 2026-04-29 09:00 A | 2026-04-29 10:00 A |  | 100% | start no earlier than 2026-04-29 09:00 | Некрасов А; Тимофеев В; Труфанов А; Бундин В | 4h | 4h |
| 2661 | 10.49 | **ЗИП на ПГ антиэлектрод** |  | 33d? | 2026-05-13 09:00 A | 2026-06-26 18:00 A |  | 100% |  |  | 9.5h | 9.5h |
| 2662 | 10.49.1 | поиск в продаже труба нерж ф205 (проверить у Тимофеева диамтр) |  | 1h | 2026-05-13 09:00 A | 2026-05-13 10:00 A |  | 100% | start no earlier than 2026-05-13 09:00 | Зорькин В | 1h | 1h |
| 2663 | 10.49.2 | заявка |  | 15min | 2026-05-13 10:00 A | 2026-05-13 10:15 A | 2662 | 100% | start no earlier than 2026-04-24 08:00 | Зорькин В | 0.25h | 0.25h |
| 2664 | 10.49.3 | контроль доставки. Карабанов размещает у свои |  | 15min | 2026-05-19 09:00 A | 2026-05-19 09:15 A | 2663FS+5d | 100% | start no earlier than 2026-05-19 09:00 | Зорькин В | 0.25h | 0.25h |
| 2665 | 10.49.4 | монтаж |  | 1d? | 2026-06-26 09:00 A | 2026-06-26 18:00 A | 2664FS+2d | 100% | start no earlier than 2026-06-26 09:00 | Тимофеев В | 8h | 8h |
| 2666 | 10.50 | **ремонт шуруповерт макита** |  | 40d | 2026-04-19 09:00 A | 2026-06-14 11:00 A |  | 100% |  |  | 5h | 5h |
| 2667 | 10.50.1 | разобрать шуруповерт макита, выяснить с редуктором проблема или нет | manual | 2h | 2026-04-19 09:00 A | 2026-04-19 11:00 A |  | 100% | start no earlier than 2026-04-19 09:00 | Дедов В | 2h | 2h |
| 2668 | 10.50.2 | отправить фидео запрос о ремонте в сервисн центр |  | 1h | 2026-04-20 09:00 A | 2026-04-20 10:00 A |  | 100% | start no earlier than 2026-04-20 08:00 | Зорькин В | 1h | 1h |
| 2669 | 10.50.3 | конртроль / решение о списании | milestone | 0d | 2026-04-27 09:00 A | 2026-04-27 09:00 A |  | 100% | start no earlier than 2026-04-27 09:00 | Зорькин В |  |  |
| 2670 | 10.50.4 | попробовать собрать шуроповерт, находится в слесарке | manual | 2h | 2026-06-14 09:00 A | 2026-06-14 11:00 A |  | 100% | start no earlier than 2026-06-14 09:00 | Бундин В | 2h | 2h |
| 2671 | 10.51 | взять винты пота м6х25 и перекрутить на сетке для печи | manual | 1h | 2026-04-20 09:00 A | 2026-04-20 10:00 A |  | 100% | start no earlier than 2026-04-20 09:00 | Тимофеев В | 1h | 1h |

| ID | WBS | Task | Type | Duration | Start | Finish | Predecessors | Complete | Remaining | Total slack | Constraint | Resources | Work | Actual work |
| --- | --- | --- | --- | --- | --- | --- | --- | --- | --- | --- | --- | --- | --- | --- |
| 2672 | 10.52 | **шестерня питателя LT85** |  | 7.01d | 2026-04-08 09:00 A | 2026-04-17 09:05 |  | 94% | 0.44d | 246.58d |  |  | 1.33h | 1.25h |
| 2673 | 10.52.1 | **1. заказ с китая** |  | 7.01d | 2026-04-08 09:00 A | 2026-04-17 09:05 |  | 75% | 1.75d | 246.58d |  |  | 0.33h | 0.25h |
| 2674 | 10.52.1.1 | запрос / контроль |  | 15min | 2026-04-08 09:00 A | 2026-04-08 09:15 A |  | 100% |  |  | start no earlier than 2026-04-08 09:00 | Шуранов Ю | 0.25h | 0.25h |
| 2675 | 10.52.1.2 | контроль |  | 5min | 2026-04-17 09:00 | 2026-04-17 09:05 |  |  |  | 246.58d | start no earlier than 2026-04-17 09:00 | Шуранов Ю | 0.08h |  |
| 2676 | 10.52.2 | **2. изготовление по образцу** |  | 5.03d | 2026-04-08 09:00 A | 2026-04-15 09:15 A |  | 100% |  |  |  |  | 1h | 1h |
| 2677 | 10.52.2.1 | выяснить возможносить изготвления |  | 30min | 2026-04-08 09:00 A | 2026-04-08 09:30 A |  | 100% |  |  | start no earlier than 2026-04-08 09:00 | Зорькин В | 0.5h | 0.5h |
| 2678 | 10.52.2.2 | отправить курьера |  | 15min | 2026-04-08 09:30 A | 2026-04-08 09:45 A | 2677 | 100% |  |  | start no earlier than 2026-04-06 09:00 | Зорькин В | 0.25h | 0.25h |
| 2679 | 10.52.2.3 | контроль |  | 15min | 2026-04-15 09:00 A | 2026-04-15 09:15 A | 2678 | 100% |  |  | start no earlier than 2026-04-15 09:00 | Зорькин В | 0.25h | 0.25h |
| 2680 | 10.53 | проверить наличие лент в ЗИП перед утилизаций б/у |  | 2h | 2026-03-31 09:00 A | 2026-03-31 11:00 A |  | 100% |  |  | start no earlier than 2026-03-31 08:00 | Зорькин В | 2h | 2h |
| 2681 | 10.54 | соединители лент траснспортеры линий - проверить остаток |  | 30min | 2026-08-31 09:00 | 2026-08-31 09:30 |  |  |  | 150.53d | start no earlier than 2026-08-31 09:00 | Зорькин В | 0.5h |  |
| 2682 | 10.55 | **освободить место на син склад / перенос в новый контейнер** |  | 1.5d | 2026-03-30 08:00 A | 2026-03-31 13:00 A |  | 100% |  |  |  |  | 38h | 38h |
| 2683 | 10.55.1 | перенести метал, норию в контейнер с синего склада |  | 4h | 2026-03-30 09:00 A | 2026-03-30 13:00 A |  | 100% |  |  | start no earlier than 2026-03-30 09:00 | Бобренок В; Некрасов А; Тимофеев В | 12h | 12h |
| 2684 | 10.55.2 | сборка стеллаж хранения металла |  | 4h | 2026-03-30 08:00 A | 2026-03-30 13:00 A |  | 100% |  |  | start no earlier than 2026-03-30 08:00 | Некрасов А; Труфанов А; Тимофеев В | 10h | 10h |
| 2685 | 10.55.3 | монтаж стеллаж хранения металла |  | 4h | 2026-03-31 09:00 A | 2026-03-31 13:00 A |  | 100% |  |  | start no earlier than 2026-03-31 09:00 | Некрасов А; Труфанов А | 8h | 8h |
| 2686 | 10.55.4 | загрузка мусор в трактор дерево, отход |  | 4h | 2026-03-31 09:00 A | 2026-03-31 13:00 A |  | 100% |  |  | start no earlier than 2026-03-31 08:00 | Некрасов А; Труфанов А | 8h | 8h |
| 2687 | 10.56 | заточка ножей 2ц орг |  | 30min | 2026-03-25 09:00 A | 2026-03-25 09:30 A |  | 100% |  |  | start no earlier than 2026-03-25 08:00 | Зорькин В | 0.5h | 0.5h |
| 2688 | 10.57 | ремонт водонагреватель орг |  | 1h | 2026-03-23 09:00 A | 2026-03-23 10:00 A |  | 100% |  |  | start no earlier than 2026-03-23 09:00 | Шуранов Ю | 1h | 1h |
| 2689 | 10.58 | ремонт парогенератор орг |  | 1h | 2026-03-23 09:00 A | 2026-03-23 10:00 A |  | 100% |  |  | start no earlier than 2026-03-23 09:00 | Шуранов Ю | 1h | 1h |
| 2690 | 10.59 | **стеллаж для организации хранения металла** |  | 11.5d | 2026-03-23 09:00 A | 2026-04-07 13:00 A |  | 100% |  |  |  |  | 84h | 84h |
| 2691 | 10.59.1 | составить эскиз / расчет заявка металл |  | 4h | 2026-03-23 09:00 A | 2026-03-23 13:00 A |  | 100% |  |  | start no earlier than 2026-03-23 09:00 | Зорькин В | 4h | 4h |
| 2692 | 10.59.2 | доставка |  | 10d | 2026-03-23 14:00 A | 2026-04-06 13:00 A | 2691 | 100% |  |  | start no earlier than 2026-03-20 08:00 | Карабанов | 80h | 80h |
| 2693 | 10.59.3 | сборка |  | 2d | 2026-04-03 14:00 A | 2026-04-07 13:00 A | 2692 | 100% |  |  | start no earlier than 2026-03-20 08:00 |  |  |  |
| 2694 | 10.60 | установить крыльчатку мотор-редуктор смесителя / перенос в контейнер |  | 30min | 2026-08-31 09:00 A | 2026-08-31 09:30 A |  | 100% |  |  | start no earlier than 2026-09-02 09:00 | Тимофеев В | 0.5h | 0.5h |
| 2695 | 10.61 | **изготовить ножевой узел для 2ц** |  | 10.02d | 2026-03-17 09:00 A | 2026-03-31 09:10 A |  | 100% |  |  |  |  | 80.33h | 80.33h |
| 2696 | 10.61.1 | получить счет |  | 10min | 2026-03-17 09:00 A | 2026-03-17 09:10 A |  | 100% |  |  | start no earlier than 2026-03-17 08:00 | Домоводов К | 0.17h | 0.17h |
| 2697 | 10.61.2 | изготовление |  | 10d | 2026-03-17 09:10 A | 2026-03-31 09:10 A | 2696 | 100% |  |  | start no earlier than 2026-03-17 08:00 | Фрезер ЧПУ | 80h | 80h |
| 2698 | 10.61.3 | контроль |  | 5min | 2026-03-28 09:10 A | 2026-03-30 09:05 A | 2697FS+1d | 100% |  |  | start no earlier than 2026-03-17 08:00 | Зорькин В | 0.08h | 0.08h |
| 2699 | 10.61.4 | орг доставка |  | 5min | 2026-03-28 09:15 A | 2026-03-30 09:05 A | 2698 | 100% |  |  | start no earlier than 2026-03-17 08:00 | Зорькин В | 0.08h | 0.08h |
| 2700 | 10.62 | сгоревшие двигатели унести в контенер в коробку |  | 1h | 2026-03-15 09:00 A | 2026-03-16 10:00 A |  | 100% |  |  | start no earlier than 2026-03-15 09:00 | Бобренок В | 1h | 1h |
| 2701 | 10.63 | ремонт головы насоса нгш57 гидродлизат 2шт |  | 2h | 2026-03-16 09:00 A | 2026-03-16 11:00 A |  | 100% |  |  | start no earlier than 2026-03-16 09:00 | Труфанов А | 2h | 2h |
| 2702 | 10.64 | изготовить ножевой узел для 2ц | milestone | 0d | 2026-03-16 09:00 A | 2026-03-16 09:00 A |  | 100% |  |  | start no earlier than 2026-03-16 09:00 | Домоводов К |  |  |
| 2703 | 10.65 | по всем цехам обход, проверка обратный клпан бойлеры / настройка температуры . Составить список под замену |  | 2h | 2026-09-01 09:00 | 2026-09-01 11:00 |  |  |  | 149.34d | start no earlier than 2026-09-01 09:00 | Дедов В | 2h |  |

| ID | WBS | Task | Type | Duration | Start | Finish | Predecessors | Complete | Remaining | Total slack | Free slack | Constraint | Resources | Work | Actual work |
| --- | --- | --- | --- | --- | --- | --- | --- | --- | --- | --- | --- | --- | --- | --- | --- |
| 2704 | 10.66 | **ремонт датчик расхода пара с линия 3** |  | 33.04d | 2026-09-01 09:00 A | 2026-10-06 09:20 |  |  | 33.04d | 116.55d |  |  |  | 0.92h |  |
| 2705 | 10.66.1 | заявка взип |  | 15min | 2026-09-01 09:00 | 2026-09-01 09:15 |  |  |  | 124.48d | 0d | start no earlier than 2026-09-01 09:00 | Шуранов Ю | 0.25h |  |
| 2706 | 10.66.2 | орг отправить в ремонт |  | 20min | 2026-09-01 09:15 | 2026-09-01 09:35 | 2705 |  |  | 124.48d | 7.93d | start no earlier than 2026-03-12 08:00 | Шуранов Ю | 0.33h |  |
| 2707 | 10.66.3 | контроль | milestone | 0d | 2026-09-22 09:35 A | 2026-09-22 09:35 A | 2706FS+20d | 100% |  |  |  | start no earlier than 2026-04-17 09:00 | Зорькин В |  |  |
| 2708 | 10.66.4 | контроль | milestone | 0d | 2026-09-30 09:00 | 2026-09-30 09:00 | 2706FS+20d |  |  | 116.55d | 0d | start no earlier than 2026-09-30 09:00 | Зорькин В |  |  |
| 2709 | 10.66.5 | орг забрать сремонта |  | 20min | 2026-10-06 09:00 | 2026-10-06 09:20 | 2707FS+5d, 2708FS+5d |  |  | 116.55d |  | start no earlier than 2026-03-12 08:00 | Шуранов Ю | 0.33h |  |
| 2710 | 10.67 | реставрация вал с охладителя. Полполнить расход ЗИП |  | 1h | 2026-09-01 09:00 | 2026-09-01 10:00 |  |  |  | 149.47d |  | start no earlier than 2026-09-01 09:00 | Шуранов Ю | 1h |  |
| 2711 | 10.68 | ремонт датчик наличия сырья / собрать из 2х один |  | 3h | 2026-09-01 09:00 | 2026-09-01 12:00 |  |  |  | 149.22d |  | start no earlier than 2026-09-01 09:00 | Дедов В | 3h |  |
| 2712 | 10.69 | **ремонт бойлер с 5ц гардероб** |  | 7.04d | 2026-03-13 09:00 A | 2026-03-24 09:20 |  | 57% | 3.02d | 264.55d |  |  |  | 0.58h | 0.33h |
| 2713 | 10.69.1 | орг отправить в ремонт |  | 15min | 2026-03-13 09:00 A | 2026-03-13 09:15 A |  | 100% |  |  |  | start no earlier than 2026-03-13 09:00 | Шуранов Ю | 0.25h | 0.25h |
| 2714 | 10.69.2 | контроль доставка / оплата |  | 5min | 2026-03-23 09:00 A | 2026-03-23 09:05 A | 2713FS+5d | 100% |  |  |  | start no earlier than 2026-03-23 09:00 | Шуранов Ю | 0.08h | 0.08h |
| 2715 | 10.69.3 | орг доставка |  | 15min | 2026-03-24 09:05 | 2026-03-24 09:20 | 2714FS+1d |  |  | 264.55d |  | start no earlier than 2026-03-12 08:00 | Шуранов Ю | 0.25h |  |
| 2716 | 10.70 | диагностика двигателей и редукторов в слесарке. Подробности Шуранов по тлф |  | 2h | 2026-09-01 09:00 A | 2026-09-01 11:00 A |  | 100% |  |  |  | start no earlier than 2026-09-02 09:00 | Бундин В | 2h | 2h |
| 2717 | 10.71 | которые в коробке с них снять крыльчатки |  | 2h | 2026-09-01 09:00 A | 2026-09-01 11:00 A | 2716 | 100% |  |  |  | start no earlier than 2026-03-06 08:00 | Бундин В | 2h | 2h |
| 2718 | 10.72 | ножевой узел 2ц заменаить подшипники. У мастера |  | 1h | 2026-03-04 08:00 A | 2026-03-04 10:00 A |  | 100% |  |  |  | start no earlier than 2026-03-04 08:00 | Дедов В | 1h | 1h |
| 2719 | 10.73 | **ремонт электродов ПГ в ЗИП** |  | 2.75d | 2026-03-08 09:00 A | 2026-03-11 16:00 A |  | 100% |  |  |  |  |  | 12h | 12h |
| 2720 | 10.73.1 | 2шт - шт |  | 6h | 2026-03-08 09:00 A | 2026-03-09 16:00 A |  | 100% |  |  |  | start no earlier than 2026-03-08 09:00 | Макаревич А | 6h | 6h |
| 2721 | 10.73.2 | 1шт = 2ц |  | 6h | 2026-03-11 09:00 A | 2026-03-11 16:00 A |  | 100% |  |  |  | start no earlier than 2026-03-11 09:00 | Макаревич А | 6h | 6h |
| 2722 | 10.74 | промер изношенных шнеков, подготовить таблицу и инструкцию для делегировать |  | 1h | 2026-03-03 09:00 A | 2026-03-03 10:00 A |  | 100% |  |  |  | start no earlier than 2026-03-03 09:00 | Зорькин В | 1h | 1h |
| 2723 | 10.75 | заказ нутромер утерянные детали |  | 30min | 2026-03-06 09:00 A | 2026-03-06 09:30 A |  | 100% |  |  |  | start no earlier than 2026-03-06 09:00 | Зорькин В | 0.5h | 0.5h |
| 2724 | 10.76 | **стопорнное кольцо для валов шнеков** |  | 0.09d | 2026-03-02 09:00 A | 2026-03-02 09:45 A |  | 100% |  |  |  |  |  | 0.75h | 0.75h |
| 2725 | 10.76.1 | заявка снабжение |  | 15min | 2026-03-02 09:00 A | 2026-03-02 09:15 A |  | 100% |  |  |  | start no earlier than 2026-03-02 09:00 | Зорькин В | 0.25h | 0.25h |
| 2726 | 10.76.2 | заявка токарь |  | 15min | 2026-03-02 09:15 A | 2026-03-02 09:30 A | 2725 | 100% |  |  |  | start no earlier than 2026-02-27 08:00 | Зорькин В | 0.25h | 0.25h |
| 2727 | 10.76.3 | заявка кита |  | 15min | 2026-03-02 09:30 A | 2026-03-02 09:45 A | 2726 | 100% |  |  |  | start no earlier than 2026-02-27 08:00 | Зорькин В | 0.25h | 0.25h |

| ID | WBS | Task | Duration | Start | Finish | Predecessors | Complete | Remaining | Total slack | Free slack | Constraint | Resources | Work | Actual work |
| --- | --- | --- | --- | --- | --- | --- | --- | --- | --- | --- | --- | --- | --- | --- |
| 2728 | 10.77 | **быстрая замена шнеков - кондуктор для хранения и перемещения подготвленного ствола** | 3.25d | 2026-11-20 09:00 | 2026-11-25 11:00 |  |  |  | 75.34d |  |  |  | 20h |  |
| 2729 | 10.77.1 | проект кондуктора и траверсы перемещения ствола штабелером | 2h | 2026-11-20 09:00 | 2026-11-20 11:00 |  |  |  | 75.34d | 0d | start no earlier than 2026-11-20 09:00 | Тимофеев В; Бундин В | 4h |  |
| 2730 | 10.77.2 | сборка | 2d | 2026-11-23 11:00 | 2026-11-25 11:00 | 2729FS+1d |  |  | 75.34d |  | start no earlier than 2026-04-16 09:00 | Бобренок В | 16h |  |
| 2731 | 10.78 | **заявка шкив на вал прекондиционер + разрезная вставка + спец шпильки** | 0.12d | 2025-08-04 09:00 | 2025-08-04 10:00 |  |  |  | 430.47d |  |  |  | 1h |  |
| 2732 | 10.78.1 | подбор шкив / заявка | 1h | 2025-08-04 09:00 | 2025-08-04 10:00 |  |  |  | 430.47d |  | start no earlier than 2025-08-04 09:00 | Зорькин В | 1h |  |
| 2733 | 10.79 | **ремонт вал прекондиционер** | 12.02d | 2025-07-31 09:00 A | 2025-08-18 09:10 |  | 86% | 1.72d | 420.57d |  |  |  | 1.17h | 1h |
| 2734 | 10.79.1 | подготовить к отправке очистить | 1h | 2025-07-31 09:00 A | 2025-07-31 10:00 A |  | 100% |  |  |  | start no earlier than 2025-07-31 09:00 | Пинчук А | 1h | 1h |
| 2735 | 10.79.2 | орг курьера / отправить | 5min | 2025-08-04 09:00 | 2025-08-04 09:05 | 2734 |  |  | 420.57d | 0d | start no earlier than 2025-08-04 09:00 | Зорькин В | 0.08h |  |
| 2736 | 10.79.3 | контроль / забрать | 5min | 2025-08-18 09:05 | 2025-08-18 09:10 | 2735FS+10d |  |  | 420.57d |  | start no earlier than 2025-07-31 09:00 | Зорькин В | 0.08h |  |
| 2737 | 10.80 | **ремонт вал в барабана жир 2л** | 152.01d | 2025-08-04 09:00 A | 2026-03-04 09:05 |  | 50% | 76.01d | 278.58d |  |  |  | 0.17h | 0.08h |
| 2738 | 10.80.1 | отправить на ремонт | 5min | 2025-08-04 09:00 | 2025-08-04 09:05 |  |  |  | 430.58d |  | start no earlier than 2025-08-04 09:00 | Зорькин В | 0.08h |  |
| 2739 | 10.80.2 | контроль забрать | 5min | 2026-03-04 09:00 A | 2026-03-04 09:05 A | 2738FS+10d | 100% |  |  |  | start no earlier than 2026-03-04 09:00 | Зорькин В | 0.08h | 0.08h |
| 2740 | 10.81 | **заявка эл мотор шибера в ЗИП** | 0.01d | 2025-02-19 09:00 | 2025-02-19 09:05 |  |  |  | 548.58d |  |  |  | 0.08h |  |
| 2741 | 10.81.1 | контроль | 5min | 2025-02-19 09:00 | 2025-02-19 09:05 |  |  |  | 548.58d |  | start no earlier than 2025-02-19 09:00 | Шуранов Ю | 0.08h |  |
| 2742 | 10.82 | составить таблицу ЗИП наличия редукторов / где используется | 4h | 2025-02-21 09:00 | 2025-02-21 13:00 |  |  |  | 546.09d |  | start no earlier than 2025-02-21 09:00 | Тимофеев В; Шуранов Ю | 8h |  |
| 2743 | 10.83 | составить таблицу соответсвия номеров подшипников - где используется | 4h | 2025-02-21 09:00 | 2025-02-21 13:00 |  |  |  | 546.09d |  | start no earlier than 2025-02-21 09:00 | Тимофеев В; Шуранов Ю | 8h |  |
| 2744 | 10.84 | ремонт болгарки замена кнопки | 1h | 2024-10-21 09:00 A | 2024-10-21 10:00 A |  | 100% |  |  |  | start no earlier than 2024-10-21 09:00 | Зорькин В | 1h | 1h |
| 2745 | 10.85 | сборка редуктор LT70 замена пружинные шайбы | 1d? | 2024-09-29 09:00 A | 2024-09-30 18:00 A |  | 100% |  |  |  | start no earlier than 2024-09-29 09:00 | Макаревич А | 8h | 8h |
| 2746 | 10.86 | **прорверить наличие остатков** | 0.01d | 2024-09-25 08:00 A | 2024-09-25 09:05 A |  | 100% |  |  |  |  |  | 2h | 2h |
| 2747 | 10.86.1 | Манжет (армированная 2,2-75*100*10 ГОСТ 8752-79) | 5min | 2024-09-25 08:00 A | 2024-09-25 09:05 A |  | 100% |  |  |  | start no earlier than 2024-09-25 08:00 | Дедов В | 0.08h | 0.08h |
| 2748 | 10.86.2 | Манжет (армированная 1,2-80*105*10) | 5min | 2024-09-25 08:00 A | 2024-09-25 09:05 A |  | 100% |  |  |  | start no earlier than 2024-09-25 08:00 | Дедов В | 0.08h | 0.08h |
| 2749 | 10.86.3 | Манжет (армированная 2,2-80*105*10 ГОСТ 8752-79) | 5min | 2024-09-25 08:00 A | 2024-09-25 09:05 A |  | 100% |  |  |  | start no earlier than 2024-09-25 08:00 | Дедов В | 0.08h | 0.08h |
| 2750 | 10.86.4 | Манжет (армированная 2,2-55*80*10 ГОСТ 8752-79) | 5min | 2024-09-25 08:00 A | 2024-09-25 09:05 A |  | 100% |  |  |  | start no earlier than 2024-09-25 08:00 | Дедов В | 0.08h | 0.08h |
| 2751 | 10.86.5 | Масло (Для швейных машин) | 0.01d | 2024-09-25 08:00 A | 2024-09-25 09:05 A |  | 100% |  |  |  | start no earlier than 2024-09-25 08:00 | Дедов В | 0.08h | 0.08h |
| 2752 | 10.86.6 | Наконечник (ТМЛ 16-10-6 медный луженый) | 0.01d | 2024-09-25 08:00 A | 2024-09-25 09:05 A |  | 100% |  |  |  | start no earlier than 2024-09-25 08:00 | Дедов В | 0.08h | 0.08h |
| 2753 | 10.86.7 | Наконечник (ТМЛ 10-8-5 медный луженый) | 0.01d | 2024-09-25 08:00 A | 2024-09-25 09:05 A |  | 100% |  |  |  | start no earlier than 2024-09-25 08:00 | Дедов В | 0.08h | 0.08h |
| 2754 | 10.86.8 | Подшипник (56006-2RS (180106)SKF (30*5*10)) | 0.01d | 2024-09-25 08:00 A | 2024-09-25 09:05 A |  | 100% |  |  |  | start no earlier than 2024-09-25 08:00 | Дедов В | 0.08h | 0.08h |
| 2755 | 10.86.9 | Подшипник (51410/ART) | 0.01d | 2024-09-25 08:00 A | 2024-09-25 09:05 A |  | 100% |  |  |  | start no earlier than 2024-09-25 08:00 | Дедов В | 0.08h | 0.08h |
| 2756 | 10.86.10 | Подшипник (UCF 208 (40)) | 0.01d | 2024-09-25 08:00 A | 2024-09-25 09:05 A |  | 100% |  |  |  | start no earlier than 2024-09-25 08:00 | Дедов В | 0.08h | 0.08h |
| 2757 | 10.86.11 | Подшипник (6203.LLU/2ASU1/NTN) | 0.01d | 2024-09-25 08:00 A | 2024-09-25 09:05 A |  | 100% |  |  |  | start no earlier than 2024-09-25 08:00 | Дедов В | 0.08h | 0.08h |
| 2758 | 10.86.12 | Подшипник (22212(53512) SKF (60*110*28)) | 0.01d | 2024-09-25 08:00 A | 2024-09-25 09:05 A |  | 100% |  |  |  | start no earlier than 2024-09-25 08:00 | Дедов В | 0.08h | 0.08h |
| 2759 | 10.86.13 | Подшипник (UC 204 (480204) (20х47х17/31)) | 0.01d | 2024-09-25 08:00 A | 2024-09-25 09:05 A |  | 100% |  |  |  | start no earlier than 2024-09-25 08:00 | Дедов В | 0.08h | 0.08h |
| 2760 | 10.86.14 | Подшипник (6906-2RS (30*47*9)) | 0.01d | 2024-09-25 08:00 A | 2024-09-25 09:05 A |  | 100% |  |  |  | start no earlier than 2024-09-25 08:00 | Дедов В | 0.08h | 0.08h |
| 2761 | 10.86.15 | Подшипник (6003-2RS (180103) (17*35*10)) | 0.01d | 2024-09-25 08:00 A | 2024-09-25 09:05 A |  | 100% |  |  |  | start no earlier than 2024-09-25 08:00 | Дедов В | 0.08h | 0.08h |
| 2762 | 10.86.16 | Подшипник (6203-2RS (180203) (17*40*12)) | 0.01d | 2024-09-25 08:00 A | 2024-09-25 09:05 A |  | 100% |  |  |  | start no earlier than 2024-09-25 08:00 | Дедов В | 0.08h | 0.08h |
| 2763 | 10.86.17 | Подшипник (6002 2RS, SKF (180102, 15*32*9)) | 0.01d | 2024-09-25 08:00 A | 2024-09-25 09:05 A |  | 100% |  |  |  | start no earlier than 2024-09-25 08:00 | Дедов В | 0.08h | 0.08h |
| 2764 | 10.86.18 | Провод ПЩ-4 | 0.01d | 2024-09-25 08:00 A | 2024-09-25 09:05 A |  | 100% |  |  |  | start no earlier than 2024-09-25 08:00 | Дедов В | 0.08h | 0.08h |
| 2765 | 10.86.19 | Ремень клиновый А-1400 | 0.01d | 2024-09-25 08:00 A | 2024-09-25 09:05 A |  | 100% |  |  |  | start no earlier than 2024-09-25 08:00 | Дедов В | 0.08h | 0.08h |
| 2766 | 10.86.20 | Ремень клиновый В (Б)-1320 | 0.01d | 2024-09-25 08:00 A | 2024-09-25 09:05 A |  | 100% |  |  |  | start no earlier than 2024-09-25 08:00 | Дедов В | 0.08h | 0.08h |
| 2767 | 10.86.21 | Реле (тепловое РТИ-3353 23-32А) | 0.01d | 2024-09-25 08:00 A | 2024-09-25 09:05 A |  | 100% |  |  |  | start no earlier than 2024-09-25 08:00 | Дедов В | 0.08h | 0.08h |
| 2768 | 10.86.22 | Шланг (для дозирующих насосов черного цвета 6,4х9,6 мм) | 0.01d | 2024-09-25 08:00 A | 2024-09-25 09:05 A |  | 100% |  |  |  | start no earlier than 2024-09-25 08:00 | Дедов В | 0.08h | 0.08h |
| 2769 | 10.86.23 | Труба гофрированная (ПВХ 25мм с протяжкой легкая серая) | 0.01d | 2024-09-25 08:00 A | 2024-09-25 09:05 A |  | 100% |  |  |  | start no earlier than 2024-09-25 08:00 | Дедов В | 0.08h | 0.08h |
| 2770 | 10.86.24 | Шпонка призматическая (DIN 6885 A 18х11х 90мм) | 0.01d | 2024-09-25 08:00 A | 2024-09-25 09:05 A |  | 100% |  |  |  | start no earlier than 2024-09-25 08:00 | Дедов В | 0.08h | 0.08h |

| ID | WBS | Task | Duration | Start | Finish | Predecessors | Complete | Remaining | Total slack | Free slack | Constraint | Resources | Work | Actual work |
| --- | --- | --- | --- | --- | --- | --- | --- | --- | --- | --- | --- | --- | --- | --- |
| 2771 | 10.87 | **прорверить остатки подшипников** | 0.01d | 2024-09-10 08:00 A | 2024-09-10 09:05 A |  | 100% |  |  |  |  |  | 1.17h | 1.17h |
| 2772 | 10.87.1 | 180101АС17/6 ГПЗ | 5min | 2024-09-10 08:00 A | 2024-09-10 09:05 A |  | 100% |  |  |  | start no earlier than 2024-09-10 08:00 | Дедов В | 0.08h | 0.08h |
| 2773 | 10.87.2 | 180202 (6202 2RS) (15*35*11) SKF | 0.01d | 2024-09-10 08:00 A | 2024-09-10 09:05 A |  | 100% |  |  |  | start no earlier than 2024-09-10 08:00 | Дедов В | 0.08h | 0.08h |
| 2774 | 10.87.3 | 180206 (6206 2RS) (30*62*16) HIKI | 0.01d | 2024-09-10 08:00 A | 2024-09-10 09:05 A |  | 100% |  |  |  | start no earlier than 2024-09-10 08:00 | Дедов В | 0.08h | 0.08h |
| 2775 | 10.87.4 | 22212.EAW33C3 / SNR | 0.01d | 2024-09-10 08:00 A | 2024-09-10 09:05 A |  | 100% |  |  |  | start no earlier than 2024-09-10 08:00 | Дедов В | 0.08h | 0.08h |
| 2776 | 10.87.5 | 51407/NEUTR | 0.01d | 2024-09-10 08:00 A | 2024-09-10 09:05 A |  | 100% |  |  |  | start no earlier than 2024-09-10 08:00 | Дедов В | 0.08h | 0.08h |
| 2777 | 10.87.6 | 6001 ZZ.CM | 0.01d | 2024-09-10 08:00 A | 2024-09-10 09:05 A |  | 100% |  |  |  | start no earlier than 2024-09-10 08:00 | Дедов В | 0.08h | 0.08h |
| 2778 | 10.87.7 | 6201.VVC3/ITJ | 0.01d | 2024-09-10 08:00 A | 2024-09-10 09:05 A |  | 100% |  |  |  | start no earlier than 2024-09-10 08:00 | Дедов В | 0.08h | 0.08h |
| 2779 | 10.87.8 | 6205LLU (NTN) | 0.01d | 2024-09-10 08:00 A | 2024-09-10 09:05 A |  | 100% |  |  |  | start no earlier than 2024-09-10 08:00 | Дедов В | 0.08h | 0.08h |
| 2780 | 10.87.9 | 6206. VVC3/ITJ | 0.01d | 2024-09-10 08:00 A | 2024-09-10 09:05 A |  | 100% |  |  |  | start no earlier than 2024-09-10 08:00 | Дедов В | 0.08h | 0.08h |
| 2781 | 10.87.10 | 686-2RS/ART | 0.01d | 2024-09-10 08:00 A | 2024-09-10 09:05 A |  | 100% |  |  |  | start no earlier than 2024-09-10 08:00 | Дедов В | 0.08h | 0.08h |
| 2782 | 10.87.11 | 7512 (32212)(60*110*24) | 0.01d | 2024-09-10 08:00 A | 2024-09-10 09:05 A |  | 100% |  |  |  | start no earlier than 2024-09-10 08:00 | Дедов В | 0.08h | 0.08h |
| 2783 | 10.87.12 | HK1210/NEUTR | 0.01d | 2024-09-10 08:00 A | 2024-09-10 09:05 A |  | 100% |  |  |  | start no earlier than 2024-09-10 08:00 | Дедов В | 0.08h | 0.08h |
| 2784 | 10.87.13 | UC 205 Neutr | 0.01d | 2024-09-10 08:00 A | 2024-09-10 09:05 A |  | 100% |  |  |  | start no earlier than 2024-09-10 08:00 | Дедов В | 0.08h | 0.08h |
| 2785 | 10.87.14 | UCFC 210 ASAHI | 0.01d | 2024-09-10 08:00 A | 2024-09-10 09:05 A |  | 100% |  |  |  | start no earlier than 2024-09-10 08:00 | Дедов В | 0.08h | 0.08h |
| 2786 | 10.88 | **создать реестр документации на оборудование** | 2d? | 2024-09-10 09:00 | 2024-09-11 18:00 |  |  |  | 662.59d |  |  |  | 8h |  |
| 2787 | 10.88.1 | опись документации в наличии, сортировка | 1d? | 2024-09-10 09:00 | 2024-09-10 18:00 |  |  |  | 662.59d | 0d | start no earlier than 2024-09-10 09:00 | Зорькин В | 8h |  |
| 2788 | 10.88.2 | оформление реестра наличия документации | 1d? | 2024-09-11 09:00 | 2024-09-11 18:00 | 2787 |  |  | 662.59d |  | start no earlier than 2024-09-06 08:00 |  |  |  |
| 2789 | 10.89 | **ремонт двигатель с шлюз питатель** | 0.02d | 2024-08-09 09:00 | 2024-08-09 09:10 |  |  |  | 686.57d |  |  |  | 0.17h |  |
| 2790 | 10.89.1 | контроль / орг курьер - | 10min | 2024-08-09 09:00 | 2024-08-09 09:10 |  |  |  | 686.57d |  | start no earlier than 2024-08-09 09:00 | Шуранов Ю | 0.17h |  |
| 2791 | 10.90 | **организовать хранение зап. частей для производства в одном месте, создать склад и нести полную материальную ответственность** | 18d? | 2024-05-09 09:00 A | 2024-06-03 18:00 |  | 15% | 15.3d? | 734.59d |  |  |  | 272h | 24h |
| 2792 | 10.90.1 | монтаж забор / ворота | 3d | 2024-05-09 09:00 A | 2024-05-13 18:00 A |  | 100% |  |  |  | start no earlier than 2024-05-09 09:00 | Макаревич А | 24h | 24h |
| 2793 | 10.90.2 | монтаж ворота, забор | 1d? | 2024-05-14 09:00 | 2024-05-14 18:00 | 2792 |  |  | 734.59d | 0d | start no earlier than 2024-05-13 09:00 | Некрасов А; Черепанов И | 16h |  |
| 2794 | 10.90.3 | подготови доски для стеллажей на 3 складе | 1d? | 2024-05-20 09:00 | 2024-05-20 18:00 |  |  |  | 744.59d |  | start no earlier than 2024-05-18 09:00 | КИнжекул | 8h |  |
| 2795 | 10.90.4 | переместить стеллажи на 2 этаж ГП + сборка | 1d? | 2024-05-15 09:00 | 2024-05-15 18:00 | 2793 |  |  | 741.59d | 7d | start no earlier than 2024-05-08 08:00 | Некрасов А; Черепанов И | 16h |  |
| 2796 | 10.90.5 | составить список всех позиций за забором для учета | 2d | 2024-05-15 09:00 | 2024-05-16 18:00 | 2793 |  |  | 734.59d | 0d | start no earlier than 2024-05-14 09:00 | Шуранов Ю | 16h |  |
| 2797 | 10.90.6 | состаить список ЗИП склад 3 цех | 2d | 2024-05-17 09:00 | 2024-05-20 18:00 | 2796 |  |  | 734.59d | 0d | start no earlier than 2024-05-08 09:00 | Шуранов Ю | 16h |  |
| 2798 | 10.90.7 | состаить список ЗИП склад слесарное помещение | 2d | 2024-05-21 09:00 | 2024-05-22 18:00 | 2797 |  |  | 734.59d | 0d | start no earlier than 2024-05-14 09:00 | Шуранов Ю | 16h |  |
| 2799 | 10.90.8 | составить список ЗИП Контейнер | 2d | 2024-05-23 09:00 | 2024-05-24 18:00 | 2798 |  |  | 734.59d | 0d | start no earlier than 2024-05-14 09:00 | Шуранов Ю | 16h |  |
| 2800 | 10.90.9 | перемещение ЗИП с 3 цеха на 2 этаж ГП | 2d | 2024-05-27 09:00 | 2024-05-28 18:00 | 2795, 2799 |  |  | 734.59d | 0d | start no earlier than 2024-05-14 09:00 | Шуранов Ю; Некрасов А; Черепанов И | 48h |  |
| 2801 | 10.90.10 | перемещение ЗИП с контейнера на 2 этаж ГП | 2d | 2024-05-29 09:00 | 2024-05-30 18:00 | 2800 |  |  | 734.59d | 0d | start no earlier than 2024-05-14 09:00 | Шуранов Ю; Некрасов А; Черепанов И | 48h |  |
| 2802 | 10.90.11 | перемещение ЗИП с слесарного помещения на 2 этаж ГП | 2d | 2024-05-31 09:00 | 2024-06-03 18:00 | 2801 |  |  | 734.59d |  | start no earlier than 2024-05-14 09:00 | Шуранов Ю; Некрасов А; Черепанов И | 48h |  |

| ID | WBS | Task | Type | Duration | Start | Finish | Predecessors | Complete | Remaining | Actual start | Total slack | Free slack | Constraint | Resources | Work | Actual work |
| --- | --- | --- | --- | --- | --- | --- | --- | --- | --- | --- | --- | --- | --- | --- | --- | --- |
| 2803 | 10.91 | **клапан эл магнитный для парогенератора на подачу воды** |  | 0.06d | 2025-01-16 09:00 | 2025-01-16 09:30 |  |  |  |  | 572.53d |  |  |  | 0.5h |  |
| 2804 | 10.91.1 | контролль остатков, заявка на катушку |  | 30min | 2025-01-16 09:00 | 2025-01-16 09:30 |  |  |  |  | 572.53d |  | start no earlier than 2025-01-16 09:00 | Шуранов Ю | 0.5h |  |
| 2805 | 10.92 | **вал с конвейера №1 разместить на ремонт** |  | 15.06d | 2024-05-14 09:00 | 2024-06-04 09:30 |  |  |  |  | 734.53d |  |  |  | 120.5h |  |
| 2806 | 10.92.1 | орг курьера |  | 15min | 2024-05-14 09:00 | 2024-05-14 09:15 |  |  |  |  | 734.53d | 0d | start no earlier than 2024-05-14 09:00 | Шуранов Ю | 0.25h |  |
| 2807 | 10.92.2 | ремонт |  | 15d | 2024-05-14 09:15 | 2024-06-04 09:15 | 2806 |  |  |  | 734.53d | 0d | start no earlier than 2024-05-08 08:00 | Подрядчик | 120h |  |
| 2808 | 10.92.3 | контроль, орг курьера забрать |  | 15min | 2024-06-04 09:15 | 2024-06-04 09:30 | 2807 |  |  |  | 734.53d |  | start no earlier than 2024-05-14 09:00 | Шуранов Ю | 0.25h |  |
| 2809 | 10.93 | подшипник LMK20.UU/FBJ или NEUTR - 4шт ТЕКО после замены |  | 10min | 2024-05-14 09:00 | 2024-05-14 09:10 |  |  |  |  | 749.57d |  | start no earlier than 2024-05-14 09:00 | Шуранов Ю | 0.17h |  |
| 2810 | 10.94 | UC204 подшипники |  | 10min | 2024-05-14 09:00 | 2024-05-14 09:10 |  |  |  |  | 749.57d |  | start no earlier than 2024-05-14 09:00 | Шуранов Ю | 0.17h |  |
| 2811 | 10.95 | сетка на дробилку 37квт 5 цех 0,5мм и 0,7 мм - заявка ЕВРОМЕД |  | 1h | 2024-05-14 09:00 | 2024-05-14 10:00 |  |  |  |  | 749.47d |  | start no earlier than 2024-05-14 09:00 | Шуранов Ю | 1h |  |
| 2812 | 11 | **ЗИП заказ (заявки)** |  | 49.06d | 2026-09-04 09:00 A | 2026-10-30 09:30 |  | 25% | 36.8d |  | 97.53d |  |  |  | 1.67h | 0.42h |
| 2813 | 11.1 | шкив для привода печи LT85 |  | 30min | 2026-10-30 09:00 | 2026-10-30 09:30 |  |  |  |  | 97.53d |  | start no earlier than 2026-10-30 08:00 | Зорькин В | 0.5h |  |
| 2814 | 11.2 | ножевой узел LT85 |  | 20min | 2026-10-22 09:00 | 2026-10-22 09:20 |  |  |  |  | 103.55d |  | start no earlier than 2026-10-22 09:00 | Зорькин В | 0.33h |  |
| 2815 | 11.3 | втулка на шланг РВД для датчика давления |  | 15min | 2026-10-20 09:00 | 2026-10-20 09:15 |  |  |  |  | 105.56d |  | start no earlier than 2026-10-20 09:00 | Зорькин В | 0.25h |  |
| 2816 | 11.4 | контактор для тельфера 5ц 24 переменка |  | 15min | 2026-09-04 09:00 A | 2026-09-04 09:15 A |  | 100% |  |  |  |  | start no earlier than 2026-09-04 09:00 | Зорькин В | 0.25h | 0.25h |
| 2817 | 11.5 | Наконечники штырьевые для сборки схем (получить инфу у Тимофеева) |  | 10min | 2026-09-09 09:00 | 2026-09-09 09:10 |  |  |  |  | 142.57d |  | start no earlier than 2026-09-09 09:00 | Зорькин В | 0.17h |  |
| 2818 | 11.6 | Газ в слесарку, закончился |  | 10min | 2026-09-07 09:00 A | 2026-09-07 09:10 A |  | 100% |  |  |  |  | start no earlier than 2026-09-07 09:00 | Зорькин В | 0.17h | 0.17h |
| 2819 | 12 | **ТО** |  | 772.25d? | 2023-12-28 09:00 A | 2026-11-25 11:00 |  | 45% | 425.9d? |  | 75.34d |  |  |  | 26996.7h | 16649.5h |
| 2820 | 12.1 | Замена валов линия 1 гильзы вход и выход |  | 3h | 2026-10-14 09:00 A | 2026-10-14 12:00 A |  | 100% |  |  |  |  | start no earlier than 2026-10-14 09:00 | Макаревич А; Труфанов А | 6h | 6h |
| 2821 | 12.2 | Замена валов линия 2 гильзы вход и выход |  | 3h | 2026-10-14 09:00 A | 2026-10-14 12:00 A |  | 100% |  |  |  |  | start no earlier than 2026-10-14 09:00 | Макаревич А; Труфанов А | 6h | 6h |
| 2822 | 12.3 | **1 цех** |  | 134.25d? | 2024-04-04 09:00 | 2024-10-09 11:00 |  | 80% | 27.21d? | 2024-05-07 09:00 |  |  |  |  | 117.83h | 90.5h |
| 2823 | 12.3.1 | **Разобрать улитки с охладителя 2 линия, 4 улитки на печах и улитки циклонов - замена подшипников, каких нет сообщить** |  | 16.25d | 2026-09-07 09:00 A | 2026-09-23 11:00 |  | 95% | 0.79d |  | 128.34d |  |  |  | 22.5h | 21.5h |
| 2824 | 12.3.1.1 | очистка моторов шлюз питателей циклонов от пыли |  | 30min | 2026-09-11 09:00 A | 2026-09-11 09:30 A |  | 100% |  |  |  |  | start no earlier than 2026-09-11 08:00 | Бобренок В | 0.5h | 0.5h |
| 2825 | 12.3.1.2 | очистка центрального вала от налипей грязи через смотровое окно |  | 1h | 2026-09-11 09:00 A | 2026-09-11 10:00 A |  | 100% |  |  |  |  | start no earlier than 2026-09-11 08:00 | Бобренок В | 1h | 1h |
| 2826 | 12.3.1.3 | монтаж шильдиков на которые починил |  | 1h | 2026-09-15 09:00 | 2026-09-15 10:00 |  |  |  |  | 136.47d |  | start no earlier than 2026-09-15 09:00 | Бундин В | 1h |  |
| 2827 | 12.3.1.4 | вентилятор охладителя | manual | 4h | 2026-09-07 09:00 A | 2026-09-07 13:00 A |  | 100% |  |  |  |  |  | Бундин В | 4h | 4h |
| 2828 | 12.3.1.5 | линия 1 вентилятор печи 1 |  | 4h | 2026-09-08 09:00 A | 2026-09-08 13:00 A |  | 100% |  |  |  |  | start no earlier than 2026-09-08 09:00 | Бундин В | 4h | 4h |
| 2829 | 12.3.1.6 | линия 1 вентилятор печи 2 | manual | 4h | 2026-09-09 09:00 A | 2026-09-09 13:00 A |  | 100% |  |  |  |  |  | Бундин В | 4h | 4h |
| 2830 | 12.3.1.7 | линия 2 вентилятор циклона 1 | manual | 4h | 2026-09-09 14:00 A | 2026-09-09 18:00 A | 2829 | 100% |  |  |  |  |  | Бундин В | 4h | 4h |
| 2831 | 12.3.1.8 | линия 2 вентилятор циклона 2 | manual | 2h | 2026-09-23 09:00 A | 2026-09-23 11:00 A | 2830 | 100% |  |  |  |  |  | Бундин В; Некрасов А | 4h | 4h |
| 2832 | 12.3.2 | ТО ШУ печи №1 (замена кабеля, наконечников…) |  | 1h | 2026-08-27 09:00 A | 2026-08-27 10:00 A |  | 100% |  |  |  |  | start no earlier than 2026-08-27 09:00 | Тимофеев В | 1h | 1h |
| 2833 | 12.3.3 | очистка моторов шлюз питателей циклонов от пыли |  | 30min | 2026-10-29 09:00 | 2026-10-29 09:30 |  |  |  |  | 98.53d |  | start no earlier than 2026-10-29 08:00 | Макаревич А; Николаев | 1h |  |

| ID | WBS | Task | Duration | Start | Finish | Complete | Remaining | Total slack | Constraint | Resources | Work | Actual work |
| --- | --- | --- | --- | --- | --- | --- | --- | --- | --- | --- | --- | --- |
| 2834 | 12.3.4 | **приточная вентиляция** | 168.12d | 2026-03-04 09:00 A | 2026-10-14 10:00 | 75% | 42.03d | 110.47d |  |  | 4h | 3h |
| 2835 | 12.3.4.1 | замена оба фильтра | 1h | 2026-03-04 09:00 A | 2026-03-04 10:00 A | 100% |  |  | start no earlier than 2026-03-04 08:00 | Труфанов А | 1h | 1h |
| 2836 | 12.3.4.2 | замена фильтра | 1h | 2026-04-15 09:00 A | 2026-04-15 10:00 A | 100% |  |  | start no earlier than 2026-04-15 09:00 | Труфанов А | 1h | 1h |
| 2837 | 12.3.4.3 | Замена фильтра | 1h | 2026-07-29 09:00 A | 2026-07-29 10:00 A | 100% |  |  | start no earlier than 2026-07-29 08:00 | Бундин В | 1h | 1h |
| 2838 | 12.3.4.4 | Проверка фильтра, по необходимости замена | 1h | 2026-10-14 09:00 | 2026-10-14 10:00 |  |  | 110.47d | start no earlier than 2026-10-14 09:00 | Дедов В | 1h |  |
| 2839 | 12.3.5 | **техническая вода** | 169.02d | 2026-03-11 09:00 A | 2026-10-21 09:10 | 80% | 33.8d | 104.57d |  |  | 1.83h | 1.33h |
| 2840 | 12.3.5.1 | проверка гидроаккумулятора | 10min | 2026-03-11 09:00 A | 2026-03-11 09:10 A | 100% |  |  | start no earlier than 2026-03-11 09:00 | Некрасов А | 0.17h | 0.17h |
| 2841 | 12.3.5.2 | замена фильтров | 10min | 2026-03-11 09:00 A | 2026-03-11 09:10 A | 100% |  |  | start no earlier than 2026-03-11 09:00 | Некрасов А | 0.17h | 0.17h |
| 2842 | 12.3.5.3 | замена фильтров | 30min | 2026-05-27 09:00 A | 2026-05-27 09:30 A | 100% |  |  | start no earlier than 2026-03-11 09:00 | Бундин В | 0.5h | 0.5h |
| 2843 | 12.3.5.4 | замена фильтров | 30min | 2026-03-12 09:00 A | 2026-03-12 09:30 A | 100% |  |  | start no earlier than 2026-03-12 09:00 | Бобренок В | 0.5h | 0.5h |
| 2844 | 12.3.5.5 | проверка гидроаккумулятора | 10min | 2026-10-07 09:00 | 2026-10-07 09:10 |  |  | 115.57d | start no earlier than 2026-10-07 09:00 | Тимофеев В | 0.17h |  |
| 2845 | 12.3.5.6 | проверка гидроаккумулятора | 10min | 2026-10-21 09:00 | 2026-10-21 09:10 |  |  | 104.57d | start no earlier than 2026-10-21 09:00 | Тимофеев В; Николаев | 0.33h |  |
| 2846 | 12.3.6 | **линия 1** | 181.12d? | 2026-03-18 09:00 A | 2026-11-11 10:00 | 84% | 29.49d? | 87.47d |  |  | 38.75h | 30h |
| 2847 | 12.3.6.1 | **шнек подачи в питатель экструдера** | 0.12d | 2026-11-11 09:00 | 2026-11-11 10:00 |  |  | 87.47d |  |  | 1h |  |
| 2848 | 12.3.6.1.1 | Замена подшипников | 1h | 2026-11-11 09:00 | 2026-11-11 10:00 |  |  | 87.47d | start no earlier than 2026-11-11 09:00 | Тимофеев В | 1h |  |
| 2849 | 12.3.6.2 | **питатель экструдера** | 181.06d? | 2026-03-18 09:00 A | 2026-11-11 09:30 | 88% | 21.73d? | 87.53d |  |  | 13.5h | 11h |
| 2850 | 12.3.6.2.1 | замена подшипники | 1d? | 2026-04-08 09:00 A | 2026-04-08 18:00 A | 100% |  |  | start no earlier than 2026-04-08 09:00 | Тимофеев В | 8h | 8h |
| 2851 | 12.3.6.2.2 | контроль палстик втулки | 1h | 2026-05-13 09:00 A | 2026-05-13 10:00 A | 100% |  |  | start no earlier than 2026-05-13 09:00 | Бобренок В | 1h | 1h |
| 2852 | 12.3.6.2.3 | контроль шестерен привода, редуктора | 10min | 2026-03-18 09:00 A | 2026-03-18 09:10 A | 100% |  |  | start no earlier than 2026-03-18 09:00 | Труфанов А | 0.17h | 0.17h |
| 2853 | 12.3.6.2.4 | контроль состояние пластик втулки | 30min | 2026-06-02 09:00 A | 2026-06-02 09:30 A | 100% |  |  | start no earlier than 2026-06-02 09:00 | Некрасов А | 0.5h | 0.5h |
| 2854 | 12.3.6.2.5 | Ревизия питателя | 20min | 2026-07-29 09:00 A | 2026-07-29 09:20 A | 100% |  |  | start no earlier than 2026-07-29 08:00 | Бундин В | 0.33h | 0.33h |
| 2855 | 12.3.6.2.6 | Ревизия питателя, контроль состояния подшипников/втулки/шестерен | 30min | 2026-09-23 09:00 A | 2026-09-23 09:30 A | 100% |  |  | start no earlier than 2026-09-23 09:00 | Некрасов А | 0.5h | 0.5h |
| 2856 | 12.3.6.2.7 | Ревизия питателя, контроль состояния подшипников/втулки/шестерен/втулки | 30min | 2026-09-30 09:00 A | 2026-09-30 09:30 A | 100% |  |  | start no earlier than 2026-09-30 09:00 | Тимофеев В | 0.5h | 0.5h |
| 2857 | 12.3.6.2.8 | Ревизия питателя, контроль состояния подшипников/втулки/шестерен/втулки | 30min | 2026-10-21 09:00 | 2026-10-21 09:30 |  |  | 104.53d | start no earlier than 2026-10-21 09:00 | Тимофеев В; Николаев | 1h |  |
| 2858 | 12.3.6.2.9 | Ревизия питателя, контроль состояния подшипников/втулки/шестерен/втулки | 30min | 2026-10-29 09:00 | 2026-10-29 09:30 |  |  | 98.53d | start no earlier than 2026-10-29 08:00 | Макаревич А; Николаев | 1h |  |
| 2859 | 12.3.6.2.10 | Ревизия питателя, контроль состояния подшипников/втулки/шестерен/втулки | 30min | 2026-11-11 09:00 | 2026-11-11 09:30 |  |  | 87.53d | start no earlier than 2026-11-11 09:00 | Тимофеев В | 0.5h |  |

| ID | WBS | Task | Duration | Start | Finish | Complete | Remaining | Total slack | Constraint | Resources | Work | Actual work |
| --- | --- | --- | --- | --- | --- | --- | --- | --- | --- | --- | --- | --- |
| 2860 | 12.3.6.3 | **прекондицинер экструдера** | 141.03d | 2026-05-13 09:00 A | 2026-11-11 09:15 | 57% | 60.44d | 87.56d |  |  | 2.25h | 1h |
| 2861 | 12.3.6.3.1 | контроль привода, подшипников | 15min | 2026-05-13 09:00 A | 2026-05-13 09:15 A | 100% |  |  | start no earlier than 2026-05-13 09:00 | Бобренок В | 0.25h | 0.25h |
| 2862 | 12.3.6.3.2 | контроль привода, подшипников | 15min | 2026-07-29 09:00 A | 2026-07-29 09:15 A | 100% |  |  | start no earlier than 2026-07-29 08:00 | Труфанов А | 0.25h | 0.25h |
| 2863 | 12.3.6.3.3 | контроль привода, подшипников | 15min | 2026-09-23 09:00 A | 2026-09-23 09:15 A | 100% |  |  | start no earlier than 2026-09-23 09:00 | Некрасов А | 0.25h | 0.25h |
| 2864 | 12.3.6.3.4 | контроль привода, подшипников/при необходимости замена | 15min | 2026-09-30 09:00 A | 2026-09-30 09:15 A | 100% |  |  | start no earlier than 2026-09-30 09:00 | Тимофеев В | 0.25h | 0.25h |
| 2865 | 12.3.6.3.5 | контроль привода, подшипников/при необходимости замена | 15min | 2026-10-21 09:00 | 2026-10-21 09:15 |  |  | 104.56d | start no earlier than 2026-10-21 09:00 | Николаев; Тимофеев В | 0.5h |  |
| 2866 | 12.3.6.3.6 | контроль привода, подшипников/при необходимости замена | 15min | 2026-10-29 09:00 | 2026-10-29 09:15 |  |  | 98.56d | start no earlier than 2026-10-29 08:00 | Макаревич А; Николаев | 0.5h |  |
| 2867 | 12.3.6.3.7 | контроль привода, подшипников/при необходимости замена | 15min | 2026-11-11 09:00 | 2026-11-11 09:15 |  |  | 87.56d | start no earlier than 2026-11-11 09:00 | Тимофеев В | 0.25h |  |
| 2868 | 12.3.6.4 | **парогенератор** | 165.12d | 2026-04-08 09:00 A | 2026-11-10 10:00 | 88% | 19.43d | 88.47d |  |  | 22h | 18h |
| 2869 | 12.3.6.4.1 | вскрытие электородов, чистка | 1h | 2026-05-13 09:00 A | 2026-05-13 10:00 A | 100% |  |  | start no earlier than 2026-05-13 09:00 | Бобренок В | 1h | 1h |
| 2870 | 12.3.6.4.2 | замена реле вкл насоса. (не вкл) | 2h | 2026-05-13 09:00 A | 2026-05-13 11:00 A | 100% |  |  | start no earlier than 2026-05-13 09:00 | Бобренок В | 2h | 2h |
| 2871 | 12.3.6.4.3 | замена гофротрубы / закрепить жестко | 2h | 2026-04-08 09:00 A | 2026-04-08 11:00 A | 100% |  |  | start no earlier than 2026-04-08 09:00 | Бобренок В | 2h | 2h |
| 2872 | 12.3.6.4.4 | чистка парогенератора, если нужно замена электродов | 2h | 2026-06-10 09:00 A | 2026-06-10 11:00 A | 100% |  |  | start no earlier than 2026-06-10 09:00 | Дедов В | 2h | 2h |
| 2873 | 12.3.6.4.5 | читска парогенератора, если нужно замена электродов | 2h | 2026-05-20 09:00 A | 2026-05-20 11:00 A | 100% |  |  | start no earlier than 2026-05-20 09:00 | Некрасов А | 2h | 2h |
| 2874 | 12.3.6.4.6 | читска парогенератора, если нужно замена электродов | 1h | 2026-06-02 09:00 A | 2026-06-02 10:00 A | 100% |  |  | start no earlier than 2026-06-02 09:00 | Тимофеев В | 1h | 1h |
| 2875 | 12.3.6.4.7 | вскрытие электородов, чистка | 1h | 2026-08-12 09:00 A | 2026-08-12 10:00 A | 100% |  |  | start no earlier than 2026-08-12 09:00 | Некрасов А | 1h | 1h |
| 2876 | 12.3.6.4.8 | вскрытие электородов, чистка (при остановке линии на мойку, если не остановилась, передать по смене Бундину) | 1h | 2026-09-22 09:00 A | 2026-09-22 10:00 A | 100% |  |  | start no earlier than 2026-09-22 09:00 | Макаревич А; Бундин В | 2h | 2h |
| 2877 | 12.3.6.4.9 | вскрытие электородов, чистка (при остановке линии на мойку, если не остановилась, передать по смене Тимофееву) | 1h | 2026-09-29 09:00 A | 2026-09-29 10:00 A | 100% |  |  | start no earlier than 2026-09-29 09:00 | Бундин В; Тимофеев В | 2h | 2h |
| 2878 | 12.3.6.4.10 | Чистка парогенератора после остановки | 1h | 2026-10-13 09:00 A | 2026-10-13 10:00 A | 100% |  |  | start no earlier than 2026-10-13 08:00 | Бобренок В | 1h | 1h |
| 2879 | 12.3.6.4.11 | Чистка парогенератора | 1h | 2026-10-21 09:00 | 2026-10-21 10:00 |  |  | 104.47d | start no earlier than 2026-10-21 09:00 | Тимофеев В; Николаев | 2h |  |
| 2880 | 12.3.6.4.12 | Чистка парогенератора | 1h | 2026-10-29 09:00 | 2026-10-29 10:00 |  |  | 98.47d | start no earlier than 2026-10-29 08:00 | Макаревич А; Николаев | 2h |  |
| 2881 | 12.3.6.4.13 | Чистка парогенератора (начать как встанут) | 1h | 2026-11-10 09:00 A | 2026-11-10 10:00 A | 100% |  |  | start no earlier than 2026-11-10 08:00 | Дедов В; Тимофеев В | 2h | 2h |
| 2882 | 12.3.7 | **редуктор экструдера и маслянная станция** | 463.04d | 2025-02-17 09:00 A | 2026-11-11 09:20 | 54% | 212.32d | 87.55d |  |  | 19.75h | 10.92h |
| 2883 | 12.3.7.1 | чистка фильтра | 30min | 2026-06-02 09:00 A | 2026-06-02 09:30 A | 100% |  |  | start no earlier than 2026-06-02 09:00 | Тимофеев В | 0.5h | 0.5h |
| 2884 | 12.3.7.2 | муфта редутор-мотор | 15min | 2026-03-11 09:00 A | 2026-03-11 09:15 A | 100% |  |  | start no earlier than 2026-03-11 09:00 | Тимофеев В | 0.25h | 0.25h |
| 2885 | 12.3.7.3 | чистка фильтра | 30min | 2026-07-16 09:00 A | 2026-07-16 09:30 A | 100% |  |  | start no earlier than 2026-07-16 09:00 | Бобренок В | 0.5h | 0.5h |
| 2886 | 12.3.7.4 | тэны и термпары шнеков- прортяжка | 30min | 2025-02-25 09:00 | 2025-02-25 09:30 |  |  | 544.53d | start no earlier than 2025-02-25 09:00 | Дедов В | 0.5h |  |
| 2887 | 12.3.7.5 | Чистка фильтра | 30min | 2026-07-29 08:00 A | 2026-07-29 09:30 A | 100% |  |  | start no earlier than 2026-07-29 08:00 | Тимофеев В | 0.5h | 0.5h |
| 2888 | 12.3.7.6 | тэны и термпоры шнеков- прортяжка | 30min | 2026-09-23 09:00 A | 2026-09-23 09:30 A | 100% |  |  | start no earlier than 2026-09-23 09:00 | Некрасов А | 0.5h | 0.5h |
| 2889 | 12.3.7.7 | Чистка фильтра | 30min | 2026-09-23 09:00 A | 2026-09-23 09:30 A | 100% |  |  | start no earlier than 2026-09-23 09:00 | Бундин В | 0.5h | 0.5h |
| 2890 | 12.3.7.8 | Чистка фильтра/тэны и термопары шнеков - протяжка | 30min | 2026-09-30 09:00 A | 2026-09-30 09:30 A | 100% |  |  | start no earlier than 2026-09-30 09:00 | Тимофеев В | 0.5h | 0.5h |
| 2891 | 12.3.7.9 | Чистка фильтра | 30min | 2026-10-14 09:00 | 2026-10-14 09:30 |  |  | 110.53d | start no earlier than 2026-10-14 09:00 | Макаревич А | 0.5h |  |
| 2892 | 12.3.7.10 | Чистка фильтра/тэны и термопары шнеков - протяжка | 30min | 2026-10-21 09:00 | 2026-10-21 09:30 |  |  | 104.53d | start no earlier than 2026-10-21 09:00 | Тимофеев В; Николаев | 1h |  |
| 2893 | 12.3.7.11 | Чистка фильтра | 30min | 2026-10-29 09:00 | 2026-10-29 09:30 |  |  | 98.53d | start no earlier than 2026-10-29 08:00 | Макаревич А; Николаев | 1h |  |
| 2894 | 12.3.7.12 | Чистка фильтра | 15min | 2026-11-11 09:00 | 2026-11-11 09:15 |  |  | 87.56d | start no earlier than 2026-11-11 09:00 | Тимофеев В | 0.25h |  |

| ID | WBS | Task | Duration | Start | Finish | Complete | Remaining | Total slack | Constraint | Resources | Work | Actual work |
| --- | --- | --- | --- | --- | --- | --- | --- | --- | --- | --- | --- | --- |
| 2895 | 12.3.7.13 | **шкаф управления экструдером** | 172.03d | 2026-03-31 09:00 A | 2026-11-11 09:15 | 90% | 17.2d | 87.56d |  |  | 3h | 2.75h |
| 2896 | 12.3.7.13.1 | протяжка контактов | 30min | 2026-03-31 09:00 A | 2026-03-31 09:30 A | 100% |  |  | start no earlier than 2026-03-11 09:00 | Некрасов А | 0.5h | 0.5h |
| 2897 | 12.3.7.13.2 | частотные привода экструдера, ножей, питателя - продувка | 30min | 2026-05-27 09:00 A | 2026-05-27 09:30 A | 100% |  |  | start no earlier than 2026-05-27 09:00 | Бундин В | 0.5h | 0.5h |
| 2898 | 12.3.7.13.3 | частотные привода экструдера, ножей, питателя - продувка | 15min | 2026-07-29 09:00 A | 2026-07-29 09:15 A | 100% |  |  | start no earlier than 2026-07-29 08:00 | Труфанов А | 0.25h | 0.25h |
| 2899 | 12.3.7.13.4 | частотные привода экструдера, ножей, питателя - продувка | 15min | 2026-09-23 09:00 A | 2026-09-23 09:15 A | 100% |  |  | start no earlier than 2026-09-23 09:00 | Некрасов А | 0.25h | 0.25h |
| 2900 | 12.3.7.13.5 | частотные привода экструдера, ножей, питателя - продувка | 15min | 2026-10-07 09:00 A | 2026-10-07 09:15 A | 100% |  |  | start no earlier than 2026-10-07 09:00 | Тимофеев В | 0.25h | 0.25h |
| 2901 | 12.3.7.13.6 | частотные привода экструдера, ножей, питателя - продувка | 15min | 2026-10-21 09:00 A | 2026-10-21 09:15 A | 100% |  |  | start no earlier than 2026-10-21 09:00 | Тимофеев В; Николаев | 0.5h | 0.5h |
| 2902 | 12.3.7.13.7 | частотные привода экструдера, ножей, питателя - продувка | 15min | 2026-10-29 09:00 A | 2026-10-29 09:15 A | 100% |  |  | start no earlier than 2026-10-29 08:00 | Макаревич А; Николаев | 0.5h | 0.5h |
| 2903 | 12.3.7.13.8 | частотные привода экструдера, ножей, питателя - продувка | 15min | 2026-11-11 09:00 | 2026-11-11 09:15 |  |  | 87.56d | start no earlier than 2026-11-11 09:00 | Тимофеев В | 0.25h |  |
| 2904 | 12.3.7.14 | **блок тэнов сушки** | 136.03d | 2026-05-20 09:00 A | 2026-11-11 09:15 | 90% | 13.6d | 87.56d |  |  | 3h | 2.75h |
| 2905 | 12.3.7.14.1 | ревизия, замена отгоревших жил, проверка токов | 1h | 2026-05-20 09:00 A | 2026-05-20 10:00 A | 100% |  |  | start no earlier than 2026-05-20 09:00 | Некрасов А | 1h | 1h |
| 2906 | 12.3.7.14.2 | ревизия/ проверка токов | 15min | 2026-08-26 09:00 A | 2026-08-26 09:15 A | 100% |  |  | start no earlier than 2026-08-26 09:00 | Некрасов А | 0.25h | 0.25h |
| 2907 | 12.3.7.14.3 | ревизия/ проверка токов | 15min | 2026-09-23 09:00 A | 2026-09-23 09:15 A | 100% |  |  | start no earlier than 2026-09-23 09:00 | Труфанов А | 0.25h | 0.25h |
| 2908 | 12.3.7.14.4 | ревизия/ проверка токов | 15min | 2026-10-07 09:00 A | 2026-10-07 09:15 A | 100% |  |  | start no earlier than 2026-10-07 09:00 | Тимофеев В | 0.25h | 0.25h |
| 2909 | 12.3.7.14.5 | ревизия/ проверка токов | 15min | 2026-10-21 09:00 A | 2026-10-21 09:15 A | 100% |  |  | start no earlier than 2026-10-21 09:00 | Тимофеев В; Николаев | 0.5h | 0.5h |
| 2910 | 12.3.7.14.6 | ревизия/ проверка токов | 15min | 2026-10-29 09:00 A | 2026-10-29 09:15 A | 100% |  |  | start no earlier than 2026-10-29 08:00 | Макаревич А; Николаев | 0.5h | 0.5h |
| 2911 | 12.3.7.14.7 | ревизия/ проверка токов | 15min | 2026-11-11 09:00 | 2026-11-11 09:15 |  |  | 87.56d | start no earlier than 2026-11-11 09:00 | Тимофеев В | 0.25h |  |
| 2912 | 12.3.7.15 | **шкаф управления тэнами сушки** | 68.5d | 2026-06-10 09:00 A | 2026-09-11 13:00 | 11% | 61.29d | 140.09d |  |  | 4.75h | 0.5h |
| 2913 | 12.3.7.15.1 | протяжка контактов | 15min | 2026-06-10 09:00 | 2026-06-10 09:15 |  |  | 208.56d | start no earlier than 2026-06-10 09:00 | Дедов В | 0.25h |  |
| 2914 | 12.3.7.15.2 | замена неисправных жил | 4h | 2026-09-11 09:00 | 2026-09-11 13:00 |  |  | 140.09d | start no earlier than 2026-09-11 09:00 | Тимофеев В | 4h |  |
| 2915 | 12.3.7.15.3 | частотные привода экструдера, ножей, питателя - продувка | 30min | 2026-07-16 09:00 A | 2026-07-16 09:30 A | 100% |  |  | start no earlier than 2026-07-16 09:00 | Бобренок В | 0.5h | 0.5h |
| 2916 | 12.3.7.16 | конвейер №1 с печи в дрожировщик прорверка подшипники, реуктор | 30min | 2025-02-17 09:00 | 2025-02-17 09:30 |  |  | 550.53d | start no earlier than 2025-02-15 09:00 | Дедов В | 0.5h |  |
| 2917 | 12.3.7.17 | Осмотр, продувка, протяжка контактов | 20min | 2026-09-23 09:00 A | 2026-09-23 09:20 A | 100% |  |  | start no earlier than 2026-09-23 09:00 | Труфанов А | 0.33h | 0.33h |
| 2918 | 12.3.7.18 | Осмотр, продувка, протяжка контактов | 20min | 2026-10-21 09:00 A | 2026-10-21 09:20 A | 100% |  |  | start no earlier than 2026-10-21 09:00 | Тимофеев В; Николаев | 0.67h | 0.67h |
| 2919 | 12.3.7.19 | Осмотр, продувка, протяжка контактов | 20min | 2026-10-29 09:00 A | 2026-10-29 09:20 A | 100% |  |  | start no earlier than 2026-10-29 08:00 | Макаревич А; Николаев | 0.67h | 0.67h |
| 2920 | 12.3.7.20 | Осмотр, продувка, протяжка контактов | 20min | 2026-11-11 09:00 | 2026-11-11 09:20 |  |  | 87.55d | start no earlier than 2026-11-11 09:00 | Тимофеев В | 0.33h |  |

| ID | WBS | Task | Duration | Start | Finish | Complete | Remaining | Total slack | Constraint | Resources | Work | Actual work |
| --- | --- | --- | --- | --- | --- | --- | --- | --- | --- | --- | --- | --- |
| 2921 | 12.3.8 | **барабан смесительный дрожировка - прорверка подшипнки , реуктор** | 191.03d | 2026-03-04 08:00 A | 2026-11-11 09:15 | 93% | 13.64d | 87.56d |  |  | 4h | 3.75h |
| 2922 | 12.3.8.1 | замена вал № 4 час | 2h | 2026-03-04 08:00 A | 2026-03-04 11:00 A | 100% |  |  | start no earlier than 2026-03-04 08:00 | Тимофеев В | 2h | 2h |
| 2923 | 12.3.8.2 | Дефектовка - проверить подачу, вибрации, посторонние шумы. | 15min | 2026-07-29 08:00 A | 2026-07-29 09:15 A | 100% |  |  | start no earlier than 2026-07-29 08:00 | Тимофеев В | 0.25h | 0.25h |
| 2924 | 12.3.8.3 | Дефектовка - проверить подачу, вибрации, посторонние шумы. | 15min | 2026-09-23 09:00 A | 2026-09-23 09:15 A | 100% |  |  | start no earlier than 2026-09-23 09:00 | Некрасов А | 0.25h | 0.25h |
| 2925 | 12.3.8.4 | Дефектовка - проверить подачу, вибрации, посторонние шумы/проверка фильтров/насосов/фитингов | 15min | 2026-09-30 09:00 A | 2026-09-30 09:15 A | 100% |  |  | start no earlier than 2026-09-30 09:00 | Тимофеев В | 0.25h | 0.25h |
| 2926 | 12.3.8.5 | Дефектовка - проверить подачу, вибрации, посторонние шумы/проверка фильтров/насосов/фитингов | 15min | 2026-10-21 09:00 A | 2026-10-21 09:15 A | 100% |  |  | start no earlier than 2026-10-21 09:00 | Тимофеев В; Николаев | 0.5h | 0.5h |
| 2927 | 12.3.8.6 | Дефектовка - проверить подачу, вибрации, посторонние шумы/проверка фильтров/насосов/фитингов | 15min | 2026-10-29 09:00 A | 2026-10-29 09:15 A | 100% |  |  | start no earlier than 2026-10-29 08:00 | Макаревич А; Николаев | 0.5h | 0.5h |
| 2928 | 12.3.8.7 | Дефектовка - проверить подачу, вибрации, посторонние шумы/проверка фильтров/насосов/фитингов | 15min | 2026-11-11 09:00 | 2026-11-11 09:15 |  |  | 87.56d | start no earlier than 2026-11-11 09:00 | Тимофеев В | 0.25h |  |
| 2929 | 12.3.9 | **печь** | 667.12d | 2024-05-07 09:00 A | 2026-11-11 10:00 | 79% | 140.45d | 87.47d |  |  | 25h | 19h |
| 2930 | 12.3.9.1 | проверка состояния сетки, ремонт шплинтов | 2h | 2026-07-16 09:00 A | 2026-07-16 11:00 A | 100% |  |  | start no earlier than 2026-07-16 09:00 | Бобренок В; Некрасов А; Труфанов А | 6h | 6h |
| 2931 | 12.3.9.2 | укоротить звено привода | 1h | 2026-07-16 09:00 A | 2026-07-16 10:00 A | 100% |  |  | start no earlier than 2026-07-16 09:00 | Некрасов А | 1h | 1h |
| 2932 | 12.3.9.3 | вентиляторы обдува сушки | 2h | 2024-06-14 09:00 A | 2024-06-14 11:00 A | 100% |  |  | start no earlier than 2024-06-14 09:00 | ТО_2 | 2h | 2h |
| 2933 | 12.3.9.4 | пневотранспорт вентилятор | 2h | 2024-05-07 09:00 A | 2024-05-07 11:00 A | 100% |  |  | start no earlier than 2024-05-07 09:00 | ТО_1 | 2h | 2h |
| 2934 | 12.3.9.5 | пневотранспорт роторный питатель - проверка масла | 30min | 2025-02-17 09:00 A | 2025-02-17 09:30 A | 100% |  |  | start no earlier than 2025-02-16 09:00 | Черепанов И | 0.5h | 0.5h |
| 2935 | 12.3.9.6 | пневотранспорт роторный питатель - проверка масла | 30min | 2026-07-29 09:00 A | 2026-07-29 09:30 A | 100% |  |  | start no earlier than 2026-07-29 08:00 | Труфанов А | 0.5h | 0.5h |
| 2936 | 12.3.9.7 | привод сетки ПЕЧИ сушки - прорверка масла | 30min | 2025-02-17 09:00 A | 2025-02-17 09:30 A | 100% |  |  | start no earlier than 2025-02-16 09:00 | Черепанов И | 0.5h | 0.5h |
| 2937 | 12.3.9.8 | привод сетки ПЕЧИ сушки - прорверка масла | 30min | 2026-07-29 09:00 A | 2026-07-29 09:30 A | 100% |  |  | start no earlier than 2026-07-29 08:00 | Труфанов А | 0.5h | 0.5h |
| 2938 | 12.3.9.9 | дозатор сухой гидролизат - разборка, чистка, замена подшипников | 2h | 2026-08-18 09:00 A | 2026-08-18 11:00 A | 100% |  |  | start no earlier than 2026-08-18 09:00 | Бундин В | 2h | 2h |
| 2939 | 12.3.9.10 | Осмотр цепи и сетки | 1h | 2026-07-29 09:00 A | 2026-07-29 10:00 A | 100% |  |  | start no earlier than 2026-07-29 08:00 | Труфанов А | 1h | 1h |
| 2940 | 12.3.9.11 | Контроль состояния сетки/цепи | 30min | 2026-09-23 09:00 A | 2026-09-23 09:30 A | 100% |  |  | start no earlier than 2026-09-23 09:00 | Некрасов А | 0.5h | 0.5h |
| 2941 | 12.3.9.12 | Смазка цепи (при наличии на складе) | 1h | 2026-09-23 09:00 A | 2026-09-23 10:00 A | 100% |  |  | start no earlier than 2026-09-23 09:00 | Некрасов А | 1h | 1h |
| 2942 | 12.3.9.13 | Контроль состояния сетки/цепи | 1h | 2026-10-07 09:00 A | 2026-10-07 10:00 A | 100% |  |  | start no earlier than 2026-10-07 09:00 | Тимофеев В | 1h | 1h |
| 2943 | 12.3.9.14 | Проверка масла на приводе/осмотр | 30min | 2026-10-07 09:00 A | 2026-10-07 09:30 A | 100% |  |  | start no earlier than 2026-10-07 09:00 | Тимофеев В | 0.5h | 0.5h |
| 2944 | 12.3.9.15 | Контроль состояния сетки/цепи | 1h | 2026-10-14 09:00 | 2026-10-14 10:00 |  |  | 110.47d | start no earlier than 2026-10-14 09:00 | Макаревич А | 1h |  |
| 2945 | 12.3.9.16 | Контроль состояния сетки/цепи | 1h | 2026-10-21 09:00 | 2026-10-21 10:00 |  |  | 104.47d | start no earlier than 2026-10-21 09:00 | Тимофеев В; Николаев | 2h |  |
| 2946 | 12.3.9.17 | Контроль состояния сетки/цепи | 1h | 2026-10-29 09:00 | 2026-10-29 10:00 |  |  | 98.47d | start no earlier than 2026-10-29 08:00 | Макаревич А; Николаев | 2h |  |
| 2947 | 12.3.9.18 | Контроль состояния сетки/цепи | 1h | 2026-11-11 09:00 | 2026-11-11 10:00 |  |  | 87.47d | start no earlier than 2026-11-11 09:00 | Тимофеев В | 1h |  |

| ID | WBS | Task | Duration | Start | Finish | Complete | Remaining | Total slack | Constraint | Resources | Work | Actual work |
| --- | --- | --- | --- | --- | --- | --- | --- | --- | --- | --- | --- | --- |
| 2948 | 12.4 | **линия 2** | 0.25d? | 2023-12-29 09:00 A | 2023-12-29 11:00 | 39% | 0.15d? |  |  |  | 905.67h | 171.48h |
| 2949 | 12.4.1 | **шнек подачи в питатель экструдера** | 0.12d | 2026-11-11 09:00 | 2026-11-11 10:00 |  |  | 87.47d |  |  | 1h |  |
| 2950 | 12.4.1.1 | Замена подшипников | 1h | 2026-11-11 09:00 | 2026-11-11 10:00 |  |  | 87.47d | start no earlier than 2026-11-11 09:00 | Бундин В | 1h |  |
| 2951 | 12.4.2 | **питатель экструдера** | 181.06d | 2026-03-18 09:00 A | 2026-11-11 09:30 | 71% | 51.73d | 87.53d |  |  | 6.5h | 4h |
| 2952 | 12.4.2.1 | контроль состояние пластик втулки | 30min | 2026-06-02 09:00 A | 2026-06-02 09:30 A | 100% |  |  | start no earlier than 2026-06-02 09:00 | Некрасов А | 0.5h | 0.5h |
| 2953 | 12.4.2.2 | замена подшипники | 1h | 2026-04-08 09:00 A | 2026-04-08 10:00 A | 100% |  |  | start no earlier than 2026-04-08 09:00 |  |  |  |
| 2954 | 12.4.2.3 | замена шестеренок -взять у Веры на складе | 2h | 2026-05-20 09:00 A | 2026-05-20 11:00 A | 100% |  |  | start no earlier than 2026-05-20 09:00 | Бобренок В | 2h | 2h |
| 2955 | 12.4.2.4 | контроль пластик втулки | 30min | 2026-05-13 09:00 A | 2026-05-13 09:30 A | 100% |  |  | start no earlier than 2026-05-13 09:00 | Бобренок В | 0.5h | 0.5h |
| 2956 | 12.4.2.5 | контроль шестерен привода, редуктора | 10min | 2026-03-18 09:00 A | 2026-03-18 09:10 A | 100% |  |  | start no earlier than 2026-03-18 09:00 | Труфанов А | 0.17h | 0.17h |
| 2957 | 12.4.2.6 | Ревизия питателя | 20min | 2026-07-29 09:00 A | 2026-07-29 09:20 A | 100% |  |  | start no earlier than 2026-07-29 08:00 | Бундин В | 0.33h | 0.33h |
| 2958 | 12.4.2.7 | Ревизия питателя, контроль состояния подшипников/втулки/шестерен | 30min | 2026-09-23 09:00 A | 2026-09-23 09:30 A | 100% |  |  | start no earlier than 2026-09-23 09:00 | Бундин В | 0.5h | 0.5h |
| 2959 | 12.4.2.8 | Ревизия питателя, контроль состояния подшипников/втулки/шестерен | 30min | 2026-10-14 09:00 | 2026-10-14 09:30 |  |  | 110.53d | start no earlier than 2026-10-14 09:00 | Дедов В | 0.5h |  |
| 2960 | 12.4.2.9 | Ревизия питателя, контроль состояния подшипников/втулки/шестерен | 30min | 2026-10-21 09:00 | 2026-10-21 09:30 |  |  | 104.53d | start no earlier than 2026-10-21 09:00 | Макаревич А | 0.5h |  |
| 2961 | 12.4.2.10 | Ревизия питателя, контроль состояния подшипников/втулки/шестерен | 30min | 2026-10-29 09:00 | 2026-10-29 09:30 |  |  | 98.53d | start no earlier than 2026-10-29 08:00 | Труфанов А; Некрасов А | 1h |  |
| 2962 | 12.4.2.11 | Ревизия питателя, контроль состояния подшипников/втулки/шестерен | 30min | 2026-11-11 09:00 | 2026-11-11 09:30 |  |  | 87.53d | start no earlier than 2026-11-11 09:00 | Бундин В | 0.5h |  |
| 2963 | 12.4.3 | **прекондицинер экструдера** | 141.03d | 2026-05-13 09:00 A | 2026-11-11 09:15 | 43% | 80.59d | 87.56d |  |  | 2h | 0.75h |
| 2964 | 12.4.3.1 | контроль привода, подшипников | 15min | 2026-05-13 09:00 A | 2026-05-13 09:15 A | 100% |  |  | start no earlier than 2026-05-13 09:00 | Бобренок В | 0.25h | 0.25h |
| 2965 | 12.4.3.2 | контроль привода, подшипников | 15min | 2026-07-29 09:00 A | 2026-07-29 09:15 A | 100% |  |  | start no earlier than 2026-07-29 08:00 | Труфанов А | 0.25h | 0.25h |
| 2966 | 12.4.3.3 | контроль привода, подшипников | 15min | 2026-09-23 09:00 A | 2026-09-23 09:15 A | 100% |  |  | start no earlier than 2026-09-23 09:00 | Бундин В | 0.25h | 0.25h |
| 2967 | 12.4.3.4 | контроль привода, подшипников | 15min | 2026-10-14 09:00 | 2026-10-14 09:15 |  |  | 110.56d | start no earlier than 2026-10-14 09:00 | Дедов В | 0.25h |  |
| 2968 | 12.4.3.5 | контроль привода, подшипников | 15min | 2026-10-21 09:00 | 2026-10-21 09:15 |  |  | 104.56d | start no earlier than 2026-10-21 09:00 | Макаревич А | 0.25h |  |
| 2969 | 12.4.3.6 | контроль привода, подшипников | 15min | 2026-10-29 09:00 | 2026-10-29 09:15 |  |  | 98.56d | start no earlier than 2026-10-29 08:00 | Труфанов А; Некрасов А | 0.5h |  |
| 2970 | 12.4.3.7 | контроль привода, подшипников | 15min | 2026-11-11 09:00 | 2026-11-11 09:15 |  |  | 87.56d | start no earlier than 2026-11-11 09:00 | Бундин В | 0.25h |  |
| 2971 | 12.4.4 | **парогенератор** | 686.12d | 2024-04-10 09:00 A | 2026-11-11 10:00 | 63% | 252.78d | 87.47d |  |  | 11.5h | 7h |
| 2972 | 12.4.4.1 | вскрытие электородов, чистка | 1h | 2026-05-13 09:00 A | 2026-05-13 10:00 A | 100% |  |  | start no earlier than 2026-05-13 09:00 | Бобренок В | 1h | 1h |
| 2973 | 12.4.4.2 | вскрытие электородов, чистка | 1h | 2026-08-12 09:00 A | 2026-08-12 10:00 A | 100% |  |  | start no earlier than 2026-08-12 09:00 | Некрасов А | 1h | 1h |
| 2974 | 12.4.4.3 | тэны и термпоры шнеков- прортяжка | 30min | 2024-04-10 09:00 | 2024-04-10 09:30 |  |  | 773.53d | start no earlier than 2024-04-10 09:00 | Черепанов И | 0.5h |  |
| 2975 | 12.4.4.4 | Чистка парогенератора | 1h | 2026-07-29 09:00 A | 2026-07-29 10:00 A | 100% |  |  | start no earlier than 2026-07-29 08:00 | Бундин В | 1h | 1h |
| 2976 | 12.4.4.5 | вскрытие электородов, чистка (при остановке линии на мойку, если не остановилась, передать по смене Бундину) | 1h | 2026-09-23 09:00 A | 2026-09-23 10:00 A | 100% |  |  | start no earlier than 2026-09-23 09:00 | Некрасов А | 1h | 1h |
| 2977 | 12.4.4.6 | вскрытие электородов, чистка (при остановке линии на мойку, если не остановилась, передать по смене Дедову) | 1h | 2026-09-29 09:00 A | 2026-09-29 10:00 A | 100% |  |  | start no earlier than 2026-09-29 08:00 | Бундин В; Дедов В | 2h | 2h |
| 2978 | 12.4.4.7 | Чистка парогенератора после остановки | 1h | 2026-10-13 09:00 A | 2026-10-13 10:00 A | 100% |  |  | start no earlier than 2026-10-13 08:00 | Бобренок В | 1h | 1h |
| 2979 | 12.4.4.8 | Чистка парогенератора после остановки | 1h | 2026-10-21 09:00 | 2026-10-21 10:00 |  |  | 104.47d | start no earlier than 2026-10-21 09:00 | Макаревич А | 1h |  |
| 2980 | 12.4.4.9 | Чистка парогенератора | 1h | 2026-10-29 09:00 | 2026-10-29 10:00 |  |  | 98.47d | start no earlier than 2026-10-29 08:00 | Макаревич А; Николаев | 2h |  |
| 2981 | 12.4.4.10 | Чистка парогенератора | 1h | 2026-11-11 09:00 | 2026-11-11 10:00 |  |  | 87.47d | start no earlier than 2026-11-11 09:00 | Бундин В | 1h |  |

| ID | WBS | Task | Duration | Start | Finish | Complete | Remaining | Total slack | Constraint | Resources | Work | Actual work |
| --- | --- | --- | --- | --- | --- | --- | --- | --- | --- | --- | --- | --- |
| 2982 | 12.4.5 | **шкаф управления экструдером** | 186.03d | 2026-03-11 09:00 A | 2026-11-11 09:15 | 64% | 67.65d | 87.56d |  |  | 3h | 1.75h |
| 2983 | 12.4.5.1 | протяжка контактов | 30min | 2026-03-11 09:00 A | 2026-03-11 09:30 A | 100% |  |  | start no earlier than 2026-03-11 09:00 | Некрасов А | 0.5h | 0.5h |
| 2984 | 12.4.5.2 | частотные привода экструдера, ножей, питателя - продувка | 30min | 2026-05-27 09:00 A | 2026-05-27 09:30 A | 100% |  |  | start no earlier than 2026-05-27 09:00 | Бундин В | 0.5h | 0.5h |
| 2985 | 12.4.5.3 | частотные привода экструдера, ножей, питателя - продувка | 15min | 2026-07-16 09:00 A | 2026-07-16 09:15 A | 100% |  |  | start no earlier than 2026-07-16 09:00 | Бобренок В | 0.25h | 0.25h |
| 2986 | 12.4.5.4 | частотные привода экструдера, ножей, питателя - продувка | 15min | 2026-07-29 09:00 A | 2026-07-29 09:15 A | 100% |  |  | start no earlier than 2026-07-29 08:00 | Труфанов А | 0.25h | 0.25h |
| 2987 | 12.4.5.5 | частотные привода экструдера, ножей, питателя - продувка | 15min | 2026-09-23 09:00 A | 2026-09-23 09:15 A | 100% |  |  | start no earlier than 2026-09-23 09:00 | Труфанов А | 0.25h | 0.25h |
| 2988 | 12.4.5.6 | частотные привода экструдера, ножей, питателя - продувка | 15min | 2026-10-14 09:00 | 2026-10-14 09:15 |  |  | 110.56d | start no earlier than 2026-10-14 09:00 | Дедов В | 0.25h |  |
| 2989 | 12.4.5.7 | частотные привода экструдера, ножей, питателя - продувка | 15min | 2026-10-21 09:00 | 2026-10-21 09:15 |  |  | 104.56d | start no earlier than 2026-10-21 09:00 | Макаревич А | 0.25h |  |
| 2990 | 12.4.5.8 | частотные привода экструдера, ножей, питателя - продувка | 15min | 2026-10-29 09:00 | 2026-10-29 09:15 |  |  | 98.56d | start no earlier than 2026-10-29 08:00 | Труфанов А; Некрасов А | 0.5h |  |
| 2991 | 12.4.5.9 | частотные привода экструдера, ножей, питателя - продувка | 15min | 2026-11-11 09:00 | 2026-11-11 09:15 |  |  | 87.56d | start no earlier than 2026-11-11 09:00 | Бундин В | 0.25h |  |
| 2992 | 12.4.6 | **редуктор экструдера и маслянная станция** | 136.06d | 2026-05-20 09:00 A | 2026-11-11 09:30 | 58% | 56.69d | 87.53d |  |  | 7.5h | 4.5h |
| 2993 | 12.4.6.1 | чистка фильтра | 30min | 2026-06-02 09:00 A | 2026-06-02 09:30 A | 100% |  |  | start no earlier than 2026-06-02 09:00 | Тимофеев В | 0.5h | 0.5h |
| 2994 | 12.4.6.2 | чистка фильтра | 30min | 2026-05-20 09:00 A | 2026-05-20 09:30 A | 100% |  |  | start no earlier than 2026-05-20 09:00 | Тимофеев В | 0.5h | 0.5h |
| 2995 | 12.4.6.3 | муфта редутор-мотор проверка состояния | 30min | 2026-05-27 09:00 A | 2026-05-27 09:30 A | 100% |  |  | start no earlier than 2026-05-27 09:00 | Тимофеев В | 0.5h | 0.5h |
| 2996 | 12.4.6.4 | чистка фильтра | 30min | 2026-07-16 09:00 A | 2026-07-16 09:30 A | 100% |  |  | start no earlier than 2026-07-16 09:00 | Бобренок В | 0.5h | 0.5h |
| 2997 | 12.4.6.5 | Чистка фильтра | 30min | 2026-07-29 08:00 A | 2026-07-29 09:30 A | 100% |  |  | start no earlier than 2026-07-29 08:00 | Тимофеев В | 0.5h | 0.5h |
| 2998 | 12.4.6.6 | Осмотр редуктор-двигатель, нехороший шум, проверить втулки МУВП/заменить | 1h | 2026-09-23 09:00 A | 2026-09-23 10:00 A | 100% |  |  | start no earlier than 2026-09-23 09:00 | Бундин В; Некрасов А | 2h | 2h |
| 2999 | 12.4.6.7 | Чистка фильтра/тэны и термопары шнеков - протяжка | 30min | 2026-10-14 09:00 | 2026-10-14 09:30 |  |  | 110.53d | start no earlier than 2026-10-14 09:00 | Дедов В | 0.5h |  |
| 3000 | 12.4.6.8 | Чистка фильтра/тэны и термопары шнеков - протяжка | 30min | 2026-10-14 09:00 | 2026-10-14 09:30 |  |  | 110.53d | start no earlier than 2026-10-14 09:00 | Труфанов А | 0.5h |  |
| 3001 | 12.4.6.9 | Чистка фильтра/тэны и термопары шнеков - протяжка/ проверка масла | 30min | 2026-10-21 09:00 | 2026-10-21 09:30 |  |  | 104.53d | start no earlier than 2026-10-21 09:00 | Макаревич А | 0.5h |  |
| 3002 | 12.4.6.10 | Чистка фильтра/тэны и термопары шнеков - протяжка/ проверка масла | 30min | 2026-10-29 09:00 | 2026-10-29 09:30 |  |  | 98.53d | start no earlier than 2026-10-29 08:00 | Труфанов А; Некрасов А | 1h |  |
| 3003 | 12.4.6.11 | Чистка фильтра/тэны и термопары шнеков - протяжка/ проверка масла | 30min | 2026-11-11 09:00 | 2026-11-11 09:30 |  |  | 87.53d | start no earlier than 2026-11-11 09:00 | Бундин В | 0.5h |  |
| 3004 | 12.4.7 | **блок тэнов сушки - протяжка** | 136.04d? | 2026-05-20 09:00 A | 2026-11-11 09:20 | 63% | 51.02d? | 87.55d |  |  | 13.67h | 8.33h |
| 3005 | 12.4.7.1 | ревизия, замена отгоревших жил, проверка токов | 3h | 2026-05-20 09:00 A | 2026-05-20 12:00 A | 100% |  |  | start no earlier than 2026-05-20 09:00 | Бобренок В | 3h | 3h |
| 3006 | 12.4.7.2 | ревизия, замена отгоревших жил, проверка токов | 4h? | 2026-09-11 09:00 | 2026-09-11 13:00 |  |  | 140.09d | start no earlier than 2026-09-11 09:00 | Тимофеев В | 4h |  |
| 3007 | 12.4.7.3 | Полное ТО шкафа управления, замена всех отгоревших жил/клемм, протяжка контактов | 5h | 2026-09-23 09:00 A | 2026-09-23 15:00 A | 100% |  |  | start no earlier than 2026-09-23 09:00 | Труфанов А | 5h | 5h |
| 3008 | 12.4.7.4 | Ревизия, проверка жил, проверка токов | 20min | 2026-10-14 09:00 A | 2026-10-14 09:20 A | 100% |  |  | start no earlier than 2026-10-14 09:00 | Дедов В | 0.33h | 0.33h |
| 3009 | 12.4.7.5 | Ревизия, проверка жил, проверка токов | 20min | 2026-10-21 09:00 | 2026-10-21 09:20 |  |  | 104.55d | start no earlier than 2026-10-21 09:00 | Макаревич А | 0.33h |  |
| 3010 | 12.4.7.6 | Ревизия, проверка жил, проверка токов | 20min | 2026-10-29 09:00 | 2026-10-29 09:20 |  |  | 98.55d | start no earlier than 2026-10-29 08:00 | Труфанов А; Некрасов А | 0.67h |  |
| 3011 | 12.4.7.7 | Ревизия, проверка жил, проверка токов | 20min | 2026-11-11 09:00 | 2026-11-11 09:20 |  |  | 87.55d | start no earlier than 2026-11-11 09:00 | Бундин В | 0.33h |  |

| ID | WBS | Task | Duration | Start | Finish | Complete | Remaining | Total slack | Constraint | Resources | Work | Actual work |
| --- | --- | --- | --- | --- | --- | --- | --- | --- | --- | --- | --- | --- |
| 3012 | 12.4.8 | **шкаф управления тэнами сушки** | 639.03d | 2024-06-14 09:00 A | 2026-11-11 09:15 | 86% | 88.75d | 87.56d |  |  | 10.25h | 8.75h |
| 3013 | 12.4.8.1 | протяжка контактов | 15min | 2026-05-20 09:00 A | 2026-05-20 09:15 A | 100% |  |  | start no earlier than 2026-05-20 09:00 | Бобренок В | 0.25h | 0.25h |
| 3014 | 12.4.8.2 | замена неисправных жил | 1h | 2026-05-20 09:00 A | 2026-05-20 10:00 A | 100% |  |  | start no earlier than 2026-05-20 09:00 | Бобренок В | 1h | 1h |
| 3015 | 12.4.8.3 | ревизия/ проверка токов | 15min | 2026-08-19 09:00 | 2026-08-19 09:15 |  |  | 158.56d | start no earlier than 2026-08-19 09:00 | Некрасов А | 0.25h |  |
| 3016 | 12.4.8.4 | конвейер №1 с печи в дрожировщик прорверка подшипники, реуктор | 30min | 2024-10-04 09:00 A | 2024-10-04 09:30 A | 100% |  |  | start no earlier than 2024-10-04 09:00 | Тимофеев В | 0.5h | 0.5h |
| 3017 | 12.4.8.5 | барабан смесительный дрожировка - прорверка подшипнки , реуктор | 30min | 2024-10-04 09:00 A | 2024-10-04 09:30 A | 100% |  |  | start no earlier than 2024-10-04 09:00 | Тимофеев В | 0.5h | 0.5h |
| 3018 | 12.4.8.6 | конвейер №2 с дрожировки в охладитель - проверка подшипники , редуктор | 30min | 2024-10-04 09:00 A | 2024-10-04 09:30 A | 100% |  |  | start no earlier than 2024-10-04 09:00 | Тимофеев В | 0.5h | 0.5h |
| 3019 | 12.4.8.7 | охладитель сеточный - смазка, натяжка цепи. Проверка редуктор | 1h | 2026-09-23 09:00 A | 2026-09-23 10:00 A | 100% |  |  | start no earlier than 2026-09-23 09:00 | Бундин В; Некрасов А | 2h | 2h |
| 3020 | 12.4.8.8 | вентиляторы обдува сушки | 2h | 2024-06-14 09:00 A | 2024-06-14 11:00 A | 100% |  |  | start no earlier than 2024-06-14 09:00 | ТО_2 | 2h | 2h |
| 3021 | 12.4.8.9 | дозатор сухой гидролизат - разборка, чистка, замена подшипников | 2h | 2026-08-20 09:00 A | 2026-08-20 11:00 A | 100% |  |  | start no earlier than 2026-08-20 09:00 | Макаревич А | 2h | 2h |
| 3022 | 12.4.8.10 | ревизия/ проверка токов/протяжка контактов | 15min | 2026-10-14 09:00 | 2026-10-14 09:15 |  |  | 110.56d | start no earlier than 2026-10-14 09:00 | Дедов В | 0.25h |  |
| 3023 | 12.4.8.11 | ревизия/ проверка токов/протяжка контактов | 15min | 2026-10-21 09:00 | 2026-10-21 09:15 |  |  | 104.56d | start no earlier than 2026-10-21 09:00 | Макаревич А | 0.25h |  |
| 3024 | 12.4.8.12 | ревизия/ проверка токов/протяжка контактов | 15min | 2026-10-29 09:00 | 2026-10-29 09:15 |  |  | 98.56d | start no earlier than 2026-10-29 08:00 | Труфанов А; Некрасов А | 0.5h |  |
| 3025 | 12.4.8.13 | ревизия/ проверка токов/протяжка контактов | 15min | 2026-11-11 09:00 | 2026-11-11 09:15 |  |  | 87.56d | start no earlier than 2026-11-11 09:00 | Бундин В | 0.25h |  |
| 3026 | 12.4.9 | **Насос гидролизата** | 171.06d | 2026-04-01 09:00 A | 2026-11-11 09:30 | 67% | 57.02d | 87.53d |  |  | 1.5h | 1h |
| 3027 | 12.4.9.1 | Дефектовка - проверить подачу, вибрации, посторонние шумы. | 30min | 2026-04-01 09:00 A | 2026-04-01 09:30 A | 100% |  |  | start no earlier than 2026-04-01 09:00 | Тимофеев В | 0.5h | 0.5h |
| 3028 | 12.4.9.2 | Дефектовка - проверить подачу, вибрации, посторонние шумы. | 30min | 2026-07-29 08:00 A | 2026-07-29 09:30 A | 100% |  |  | start no earlier than 2026-07-29 08:00 | Тимофеев В | 0.5h | 0.5h |
| 3029 | 12.4.9.3 | Дефектовка - проверить подачу, вибрации, посторонние шумы. | 30min | 2026-11-11 09:00 | 2026-11-11 09:30 |  |  | 87.53d | start no earlier than 2026-11-11 09:00 | Бундин В | 0.5h |  |
| 3030 | 12.4.10 | **Квадропак** | 156.12d | 2026-04-22 09:00 A | 2026-11-11 10:00 | 93% | 10.96d | 87.47d |  |  | 17.25h | 16.25h |
| 3031 | 12.4.10.1 | Установить дополнительные пружины на дозатор | 1h | 2026-09-30 09:00 A | 2026-09-30 10:00 A | 100% |  |  | start no earlier than 2026-09-30 09:00 | Труфанов А; Некрасов А | 2h | 2h |
| 3032 | 12.4.10.2 | проверить резьбу крепления встряхивателя №1, закрепить | 1h | 2026-06-02 09:00 A | 2026-06-02 10:00 A | 100% |  |  | start no earlier than 2026-06-02 09:00 | Макаревич А | 1h | 1h |
| 3033 | 12.4.10.3 | Замена резинки на воздушном редукторе находящемся под мультиголовой (весы) | 1h | 2026-04-22 09:00 A | 2026-04-22 10:00 A | 100% |  |  | start no earlier than 2026-04-22 09:00 | Бундин В | 1h | 1h |
| 3034 | 12.4.10.4 | ТО узла пайки. Чистка тен/ревизия термоизолятора пневморедуктора | 1h | 2026-05-27 09:00 A | 2026-05-27 10:00 A | 100% |  |  | start no earlier than 2026-05-27 09:00 | Тимофеев В | 1h | 1h |
| 3035 | 12.4.10.5 | ревизия привод встряхивателя | 30min | 2026-05-27 09:00 A | 2026-05-27 09:30 A | 100% |  |  | start no earlier than 2026-05-27 09:00 | Тимофеев В | 0.5h | 0.5h |
| 3036 | 12.4.10.6 | ревизия протяжки кинематики низ / верх | 30min | 2026-05-27 09:00 A | 2026-05-27 09:30 A | 100% |  |  | start no earlier than 2026-05-27 09:00 | Тимофеев В | 0.5h | 0.5h |
| 3037 | 12.4.10.7 | ревизия вакуумный насос | 15min | 2026-05-27 09:00 A | 2026-05-27 09:15 A | 100% |  |  | start no earlier than 2026-05-27 09:00 | Тимофеев В | 0.25h | 0.25h |
| 3038 | 12.4.10.8 | замена вал выход | 4h | 2026-06-15 09:00 A | 2026-06-15 13:00 A | 100% |  |  | start no earlier than 2026-06-15 09:00 | Тимофеев В | 4h | 4h |
| 3039 | 12.4.10.9 | проверить пневмоцилиндр на встряхивателе, если нужно заменить | 1h | 2026-05-20 09:00 A | 2026-05-20 10:00 A | 100% |  |  | start no earlier than 2026-05-20 09:00 | Некрасов А | 1h | 1h |
| 3040 | 12.4.10.10 | Закрепить, подровнять, слесарные работы которые требуются | 1h | 2026-09-30 09:00 A | 2026-09-30 10:00 A | 100% |  |  | start no earlier than 2026-09-30 09:00 | Труфанов А; Некрасов А | 2h | 2h |
| 3041 | 12.4.10.11 | Осмотр, дефектовка, устранение неисправностей ,смазка по необходимости, протяжка болтов | 1h | 2026-10-21 09:00 A | 2026-10-21 10:00 A | 100% |  |  | start no earlier than 2026-10-21 09:00 | Макаревич А | 1h | 1h |
| 3042 | 12.4.10.12 | Осмотр, дефектовка, устранение неисправностей ,смазка по необходимости, протяжка болтов | 1h | 2026-10-29 09:00 A | 2026-10-29 10:00 A | 100% |  |  | start no earlier than 2026-10-29 08:00 | Труфанов А; Некрасов А | 2h | 2h |
| 3043 | 12.4.10.13 | Осмотр, дефектовка, устранение неисправностей ,смазка по необходимости, протяжка болтов | 1h | 2026-11-11 09:00 | 2026-11-11 10:00 |  |  | 87.47d | start no earlier than 2026-11-11 09:00 | Бундин В | 1h |  |

| ID | WBS | Task | Duration | Start | Finish | Complete | Remaining | Total slack | Constraint | Resources | Work | Actual work |
| --- | --- | --- | --- | --- | --- | --- | --- | --- | --- | --- | --- | --- |
| 3044 | 12.4.11 | **Дражжировка** | 37.03d | 2026-08-27 09:00 | 2026-10-07 09:15 |  |  |  |  |  | 7.67h |  |
| 3045 | 12.4.11.1 | Проверка подшипников на барабанах | 15min | 2026-08-27 09:00 | 2026-08-27 09:15 |  |  | 152.56d | start no earlier than 2026-08-27 09:00 | Тимофеев В | 0.25h |  |
| 3046 | 12.4.11.2 | Проверка фильтров | 10min | 2026-08-27 09:00 | 2026-08-27 09:10 |  |  | 152.57d | start no earlier than 2026-08-27 09:00 | Тимофеев В | 0.17h |  |
| 3047 | 12.4.11.3 | Ревизия насоса гидролизата | 2h | 2026-08-27 09:00 | 2026-08-27 11:00 |  |  | 152.34d | start no earlier than 2026-08-27 09:00 | Тимофеев В | 2h |  |
| 3048 | 12.4.11.4 | Дефектовка - проверить подачу, вибрации, посторонние шумы/проверка фильтров/насосов/фитингов | 15min | 2026-10-14 09:00 | 2026-10-14 09:15 |  |  | 110.56d | start no earlier than 2026-10-14 09:00 | Дедов В | 0.25h |  |
| 3049 | 12.4.11.5 | Дефектовка - проверить подачу, вибрации, посторонние шумы/проверка фильтров/насосов/фитингов | 15min | 2026-10-21 09:00 | 2026-10-21 09:15 |  |  | 104.56d | start no earlier than 2026-10-21 09:00 | Макаревич А | 0.25h |  |
| 3050 | 12.4.11.6 | Ремон конвейера изготовление и установка полосы, чтоб не сыпало | 2h | 2026-10-21 09:00 | 2026-10-21 11:00 |  |  | 104.34d | start no earlier than 2026-10-21 09:00 | Тимофеев В; Николаев | 4h |  |
| 3051 | 12.4.11.7 | Дефектовка - проверить подачу, вибрации, посторонние шумы/проверка фильтров/насосов/фитингов | 15min | 2026-10-29 09:00 | 2026-10-29 09:15 |  |  | 98.56d | start no earlier than 2026-10-29 08:00 | Труфанов А; Некрасов А | 0.5h |  |
| 3052 | 12.4.11.8 | Дефектовка - проверить подачу, вибрации, посторонние шумы/проверка фильтров/насосов/фитингов | 15min | 2026-11-11 09:00 | 2026-11-11 09:15 |  |  | 87.56d | start no earlier than 2026-11-11 09:00 | Бундин В | 0.25h |  |
| 3053 | 12.4.12 | **жиротопка и насос перекачки жира** | 686.03d | 2024-04-10 09:00 A | 2026-11-11 09:15 | 14% | 588.03d | 87.56d |  |  | 2h | 0.25h |
| 3054 | 12.4.12.1 | блок тэнов -протяжка | 30min | 2024-04-10 09:00 | 2024-04-10 09:30 |  |  | 773.53d | start no earlier than 2024-04-10 08:00 | Тимофеев В | 0.5h |  |
| 3055 | 12.4.12.2 | насос, фильтр - осмотр, чистка | 15min | 2024-04-25 09:00 | 2024-04-25 09:15 |  |  | 762.56d | start no earlier than 2024-04-25 09:00 | Тимофеев В | 0.25h |  |
| 3056 | 12.4.12.3 | насос, фильтр - осмотр, чистка | 15min | 2026-07-29 09:00 A | 2026-07-29 09:15 A | 100% |  |  | start no earlier than 2026-07-29 08:00 | Труфанов А | 0.25h | 0.25h |
| 3057 | 12.4.12.4 | насос, фильтр - осмотр, чистка | 15min | 2026-10-21 09:00 | 2026-10-21 09:15 |  |  | 104.56d | start no earlier than 2026-10-21 09:00 | Макаревич А | 0.25h |  |
| 3058 | 12.4.12.5 | насос, фильтр - осмотр, чистка | 15min | 2026-10-29 09:00 | 2026-10-29 09:15 |  |  | 98.56d | start no earlier than 2026-10-29 08:00 | Макаревич А; Николаев | 0.5h |  |
| 3059 | 12.4.12.6 | насос, фильтр - осмотр, чистка | 15min | 2026-11-11 09:00 | 2026-11-11 09:15 |  |  | 87.56d | start no earlier than 2026-11-11 09:00 | Бундин В | 0.25h |  |
| 3060 | 12.4.13 | **упаковщкики** | 464.12d | 2025-02-14 09:00 A | 2026-11-11 10:00 | 13% | 406.11d | 87.47d |  |  | 36h | 4h |
| 3061 | 12.4.13.1 | упаковщик ТЕКО 0,4кг | 2h | 2025-02-16 09:00 A | 2025-02-17 11:00 A | 100% |  |  | start no earlier than 2025-02-16 09:00 | Дедов В | 2h | 2h |
| 3062 | 12.4.13.2 | упаковщик ТЕКО 0,4кг | 2h | 2026-08-26 09:00 | 2026-08-26 11:00 |  |  | 153.34d | start no earlier than 2026-08-26 09:00 | Тимофеев В | 2h |  |
| 3063 | 12.4.13.3 | упаковщик НОТИС | 2h | 2025-02-17 09:00 | 2025-02-17 11:00 |  |  | 550.34d | start no earlier than 2025-02-16 09:00 | Дедов В | 2h |  |
| 3064 | 12.4.13.4 | упаковщик ТЕКО 1.5кг | 2h | 2025-02-17 09:00 | 2025-02-17 11:00 |  |  | 550.34d | start no earlier than 2025-02-16 09:00 | Дедов В | 2h |  |
| 3065 | 12.4.13.5 | упаковщик КВАДРОПАК | 2h | 2025-02-17 09:00 | 2025-02-17 11:00 |  |  | 550.34d | start no earlier than 2025-02-16 09:00 | Дедов В | 2h |  |
| 3066 | 12.4.13.6 | нория и вибробункер КВАДРОПАК | 2h | 2025-02-17 09:00 | 2025-02-17 11:00 |  |  | 550.34d | start no earlier than 2025-02-16 09:00 | Дедов В | 2h |  |
| 3067 | 12.4.13.7 | запайщик 1 | 2h | 2025-02-17 09:00 | 2025-02-17 11:00 |  |  | 550.34d | start no earlier than 2025-02-17 09:00 | Дедов В | 2h |  |
| 3068 | 12.4.13.8 | запайщик 2 | 2h | 2025-02-17 09:00 | 2025-02-17 11:00 |  |  | 550.34d | start no earlier than 2025-02-17 09:00 | Дедов В | 2h |  |
| 3069 | 12.4.13.9 | конвейер гп ТЕКО 1,5 | 2h | 2025-02-14 09:00 | 2025-02-14 11:00 |  |  | 551.34d | start no earlier than 2025-02-14 09:00 | Макаревич А | 2h |  |
| 3070 | 12.4.13.10 | конвейер гп ТЕКО 0,4 | 2h | 2025-02-14 09:00 | 2025-02-14 11:00 |  |  | 551.34d | start no earlier than 2025-02-14 09:00 | Макаревич А | 2h |  |
| 3071 | 12.4.13.11 | накопительный стол 1,5 | 2h | 2025-02-17 09:00 | 2025-02-17 11:00 |  |  | 550.34d | start no earlier than 2025-02-15 09:00 | Макаревич А | 2h |  |
| 3072 | 12.4.13.12 | накопительный стол 0,4 | 2h | 2025-02-17 09:00 | 2025-02-17 11:00 |  |  | 550.34d | start no earlier than 2025-02-15 09:00 | Макаревич А | 2h |  |
| 3073 | 12.4.13.13 | Осмотр всех упаковщиков/транспортеров/накопительных столов/ всех щитков оборудования | 2h | 2026-07-29 09:00 A | 2026-07-29 11:00 A | 100% |  |  | start no earlier than 2026-07-29 08:00 | Бундин В | 2h | 2h |
| 3074 | 12.4.13.14 | Осмотр всех упаковщиков/транспортеров/накопительных столов/ всех щитков оборудования | 2h | 2026-10-14 09:00 | 2026-10-14 11:00 |  |  | 110.34d | start no earlier than 2026-10-14 09:00 | Тимофеев В; Дедов В | 4h |  |
| 3075 | 12.4.13.15 | Осмотр всех упаковщиков/транспортеров/накопительных столов/ всех щитков оборудования/редукторов | 2h | 2026-10-21 09:00 | 2026-10-21 11:00 |  |  | 104.34d | start no earlier than 2026-10-21 09:00 | Макаревич А | 2h |  |
| 3076 | 12.4.13.16 | Осмотр всех упаковщиков/транспортеров/накопительных столов/ всех щитков оборудования/редукторов | 1h | 2026-10-29 09:00 | 2026-10-29 10:00 |  |  | 98.47d | start no earlier than 2026-10-29 08:00 | Макаревич А; Николаев | 2h |  |
| 3077 | 12.4.13.17 | Осмотр всех упаковщиков/транспортеров/накопительных столов/ всех щитков оборудования/редукторов | 1h | 2026-11-11 09:00 | 2026-11-11 10:00 |  |  | 87.47d | start no earlier than 2026-11-11 09:00 | Бундин В; Тимофеев В | 2h |  |

| ID | WBS | Task | Duration | Start | Finish | Complete | Remaining | Total slack | Free slack | Constraint | Resources | Work | Actual work |
| --- | --- | --- | --- | --- | --- | --- | --- | --- | --- | --- | --- | --- | --- |
| 3078 | 12.4.14 | **электрооборудование** | 0.12d | 2026-05-20 09:00 | 2026-05-20 10:00 |  |  | 0d | 223.47d |  | ТО | 5.5h | 1h |
| 3079 | 12.4.14.1 | ВРУ1 | 15min | 2026-05-20 09:00 | 2026-05-20 09:15 |  |  | 223.56d |  | start no earlier than 2026-05-20 09:00 | ТО; Тимофеев В | 0.5h |  |
| 3080 | 12.4.14.2 | ВРУ2 | 15min | 2026-05-20 09:00 | 2026-05-20 09:15 |  |  | 223.56d |  | start no earlier than 2026-05-20 09:00 | ТО; Тимофеев В | 0.5h |  |
| 3081 | 12.4.14.3 | ЩР1 экструдер | 15min | 2026-05-20 09:00 | 2026-05-20 09:15 |  |  | 223.56d |  | start no earlier than 2026-05-20 09:00 | ТО; Тимофеев В | 0.5h |  |
| 3082 | 12.4.14.4 | ЩР2 упаковка №1 | 15min | 2026-05-20 09:00 | 2026-05-20 09:15 |  |  | 223.56d |  | start no earlier than 2026-05-20 09:00 | ТО; Тимофеев В | 0.5h |  |
| 3083 | 12.4.14.5 | ЩР3 упаковка №2 | 15min | 2026-05-20 09:00 | 2026-05-20 09:15 |  |  | 223.56d |  | start no earlier than 2026-05-20 09:00 | ТО; Тимофеев В | 0.5h |  |
| 3084 | 12.4.14.6 | ЩР жиротопка и зона жиров | 1h | 2026-05-20 09:00 | 2026-05-20 10:00 |  |  | 223.47d |  | start no earlier than 2026-05-20 09:00 | ТО; Некрасов А | 2h |  |
| 3085 | 12.4.15 | **Компрессор 1 цех** | 748.12d? | 2023-12-29 09:00 A | 2026-10-29 10:00 | 10% | 670.73d? | 98.47d |  |  | ТО | 779.33h | 113.9h |
| 3086 | 12.4.15.1 | продувка радиаторов осушителя и компрессора, слив конденсата | 1h | 2026-06-07 09:00 A | 2026-06-08 10:00 A | 100% |  |  |  | start no earlier than 2026-06-07 09:00 | Дедов В | 1h | 1h |
| 3087 | 12.4.15.2 | продувка радиаторов осушителя и компрессора, слив конденсата | 1h | 2026-10-14 09:00 | 2026-10-14 10:00 |  |  | 110.47d |  | start no earlier than 2026-10-14 09:00 | Дедов В | 1h |  |
| 3088 | 12.4.15.3 | продувка радиаторов осушителя и компрессора, слив конденсата | 1h | 2026-08-29 09:00 A | 2026-08-31 10:00 A | 100% |  |  |  | start no earlier than 2026-08-29 09:00 | Дедов В | 1h | 1h |
| 3089 | 12.4.15.4 | <Новая задача> | 1d? | 2026-08-28 09:00 | 2026-08-28 18:00 |  |  | 150.59d |  | start no earlier than 2026-08-28 08:00 |  |  |  |
| 3090 | 12.4.15.5 | осушитель 1 цех | 2h | 2023-12-29 09:00 | 2023-12-29 11:00 |  |  | 846.34d |  | start no earlier than 2023-12-28 09:00 | ТО | 2h |  |
| 3091 | 12.4.15.6 | осушитель 1 цех/слить конденсат | 30min | 2026-07-29 09:00 | 2026-07-29 09:30 |  |  | 173.53d |  | start no earlier than 2026-07-29 08:00 | Бундин В | 0.5h |  |
| 3092 | 12.4.15.7 | осушитель 1 цех/слить конденсат | 20min | 2026-10-14 09:00 | 2026-10-14 09:20 |  |  | 110.55d |  | start no earlier than 2026-10-14 09:00 | Дедов В | 0.33h |  |
| 3093 | 12.4.15.8 | бойлер 1 1 цех раковина | 2h | 2023-12-29 09:00 | 2023-12-29 11:00 |  |  | 846.34d |  | start no earlier than 2023-12-28 09:00 | ТО | 2h |  |
| 3094 | 12.4.15.9 | бойлер 2 1 цех раковина | 2h | 2023-12-29 09:00 | 2023-12-29 11:00 |  |  | 846.34d |  | start no earlier than 2023-12-28 09:00 | ТО | 2h |  |
| 3095 | 12.4.15.10 | бойлер 3 1 цех душ | 2h | 2023-12-29 09:00 | 2023-12-29 11:00 |  |  | 846.34d |  | start no earlier than 2023-12-28 09:00 | ТО | 2h |  |
| 3096 | 12.4.15.11 | насосная станция 1 цех | 2h | 2023-12-29 09:00 | 2023-12-29 11:00 |  |  | 846.34d |  | start no earlier than 2023-12-28 09:00 | ТО | 2h |  |
| 3097 | 12.4.15.12 | фильтр приточной вентиляции | 2h | 2023-12-29 09:00 | 2023-12-29 11:00 |  |  | 846.34d |  |  |  |  |  |
| 3098 | 12.4.15.13 | пульт управления вентиляцией, частототные приводы | 2h | 2023-12-29 09:00 | 2023-12-29 11:00 |  |  | 846.34d |  | start no earlier than 2023-12-28 09:00 | ТО | 2h |  |
| 3099 | 12.4.15.14 | кондиционер 1 продувка фильтров внутр / очистка наруж блок | 30min | 2026-06-02 09:00 A | 2026-06-02 09:30 A | 100% |  |  |  | start no earlier than 2026-06-02 09:00 | Некрасов А | 0.5h | 0.5h |
| 3100 | 12.4.15.15 | кондиционер 2 продувка фильтров внутр / очистка наруж блок | 30min | 2026-06-02 09:00 A | 2026-06-02 09:30 A | 100% |  |  |  | start no earlier than 2026-06-02 09:00 | Некрасов А | 0.5h | 0.5h |
| 3101 | 12.4.15.16 | кондиционер 3 продувка фильтров внутр / очистка наруж блок | 30min | 2026-06-02 09:00 A | 2026-06-02 09:30 A | 100% |  |  |  | start no earlier than 2026-06-02 09:00 | Некрасов А | 0.5h | 0.5h |
| 3102 | 12.4.15.17 | кондиционер 1 продувка фильтров внутр / очистка наруж блок (керхер взять у Мейхера) | 30min | 2026-06-10 09:00 | 2026-06-10 09:30 |  |  | 208.53d |  | start no earlier than 2026-06-10 09:00 | Некрасов А; Дедов В | 1h |  |
| 3103 | 12.4.15.18 | кондиционер 2 продувка фильтров внутр / очистка наруж блок (керхер взять у Мейхера) | 30min | 2026-06-10 09:00 | 2026-06-10 09:30 |  |  | 208.53d |  | start no earlier than 2026-06-10 09:00 | Некрасов А; Дедов В | 1h |  |
| 3104 | 12.4.15.19 | кондиционер 3 продувка фильтров внутр / очистка наруж блок (керхер взять у Мейхера) | 30min | 2026-06-10 09:00 | 2026-06-10 09:30 |  |  | 208.53d |  | start no earlier than 2026-06-10 09:00 | Некрасов А; Дедов В | 1h |  |
| 3105 | 12.4.15.20 | электроштабелер упаковка | 2h | 2023-12-29 09:00 | 2023-12-29 11:00 |  |  | 846.34d |  | start no earlier than 2023-12-28 09:00 | ТО | 2h |  |
| 3106 | 12.4.15.21 | электроштабелер навески | 2h | 2023-12-29 09:00 | 2023-12-29 11:00 |  |  | 846.34d |  | start no earlier than 2023-12-28 09:00 | ТО | 2h |  |
| 3107 | 12.4.15.22 | продувка радиаторов осушителя и компрессора, слив конденсата | 1h | 2026-10-29 09:00 | 2026-10-29 10:00 |  |  | 98.47d |  | start no earlier than 2026-10-29 08:00 | Макаревич А; Николаев | 2h |  |

| ID | WBS | Task | Duration | Start | Finish | Complete | Remaining | Total slack | Constraint | Resources | Work | Actual work |
| --- | --- | --- | --- | --- | --- | --- | --- | --- | --- | --- | --- | --- |
| 3108 | 12.4.16 | **Квадропак** | 0.12d | 2026-10-07 09:00 | 2026-10-07 10:00 |  |  | 115.47d |  |  | 1h |  |
| 3109 | 12.4.16.1 | Смазка качающихся шарниров подачи пакета и сброса | 1h | 2026-10-07 09:00 | 2026-10-07 10:00 |  |  | 115.47d | start no earlier than 2026-10-07 09:00 | Тимофеев В | 1h |  |
| 3110 | 12.5 | **2 цех** | 772.25d? | 2023-12-28 09:00 A | 2026-11-25 11:00 | 65% | 270.75d? | 75.34d |  |  | 18674.5h | 15468.9h |
| 3111 | 12.5.1 | обдув пыли с вентиляции и балки кровли зона жир + экструдер + упаковка | 3h | 2026-08-20 09:00 A | 2026-08-20 12:00 A | 100% |  |  | start no earlier than 2026-08-20 09:00 | Некрасов А; Тимофеев В | 6h | 6h |
| 3112 | 12.5.2 | **прекондицинер экструдера** | 670.5d? | 2024-04-18 09:00 A | 2026-10-30 13:00 | 82% | 121.91d? | 97.09d |  |  | 31.75h | 22.5h |
| 3113 | 12.5.2.1 | замена заднего подшипника ведомый вал | 8h | 2026-05-26 09:00 A | 2026-05-26 18:00 A | 100% |  |  | start no earlier than 2026-05-26 09:00 | Тимофеев В | 8h | 8h |
| 3114 | 12.5.2.2 | замена подшипников | 1h | 2024-04-18 09:00 A | 2024-04-18 10:00 A | 100% |  |  | start no earlier than 2024-04-18 08:00 | Тимофеев В | 1h | 1h |
| 3115 | 12.5.2.3 | Ревизия масла редуктора | 30min | 2024-04-18 09:00 A | 2024-04-18 09:30 A | 100% |  |  | start no earlier than 2024-04-18 08:00 | Тимофеев В | 0.5h | 0.5h |
| 3116 | 12.5.2.4 | контроль крепления лопаток | 30min | 2026-05-21 09:00 A | 2026-05-21 09:30 A | 100% |  |  | start no earlier than 2026-03-05 09:00 | Тимофеев В | 0.5h | 0.5h |
| 3117 | 12.5.2.5 | шприцевание подшипников | 1h | 2026-05-21 08:00 A | 2026-05-21 10:00 A | 100% |  |  | start no earlier than 2026-05-21 08:00 | Тимофеев В | 1h | 1h |
| 3118 | 12.5.2.6 | Ревизия масла редуктора | 15min | 2026-07-21 09:00 A | 2026-07-21 09:15 A | 100% |  |  | start no earlier than 2026-07-21 09:00 | Труфанов А | 0.25h | 0.25h |
| 3119 | 12.5.2.7 | шприцевание подшипников | 30min | 2026-07-21 09:00 A | 2026-07-21 09:30 A | 100% |  |  | start no earlier than 2026-07-21 09:00 | Труфанов А | 0.5h | 0.5h |
| 3120 | 12.5.2.8 | Осмотр подшипников | 15min | 2026-07-30 09:00 A | 2026-07-30 09:15 A | 100% |  |  | start no earlier than 2026-07-30 09:00 | Тимофеев В | 0.25h | 0.25h |
| 3121 | 12.5.2.9 | Осмотр подшипников | 1d? | 2026-08-06 09:00 A | 2026-08-06 18:00 A | 100% |  |  | start no earlier than 2026-08-06 09:00 | Бундин В | 8h | 8h |
| 3122 | 12.5.2.10 | Осмотр подшипников / смазка / по необходимости замена | 1h | 2026-08-13 09:00 A | 2026-08-13 10:00 A | 100% |  |  | start no earlier than 2026-08-13 09:00 | Некрасов А | 1h | 1h |
| 3123 | 12.5.2.11 | Осмотр подшипников / смазка | 15min | 2026-08-20 09:00 A | 2026-08-20 09:15 A | 100% |  |  | start no earlier than 2026-08-20 09:00 | Некрасов А | 0.25h | 0.25h |
| 3124 | 12.5.2.12 | Замена водяного фильтра на прекондиционере/парогенератор | 15min | 2026-09-03 09:00 A | 2026-09-03 09:15 A | 100% |  |  | start no earlier than 2026-09-03 09:00 | Труфанов А | 0.25h | 0.25h |
| 3125 | 12.5.2.13 | Осмотр подшипников / смазка | 15min | 2026-09-17 09:00 A | 2026-09-17 09:15 A | 100% |  |  | start no earlier than 2026-09-17 09:00 | Некрасов А | 0.25h | 0.25h |
| 3126 | 12.5.2.14 | Осмотр подшипников / смазка | 15min | 2026-09-24 09:00 A | 2026-09-24 09:15 A | 100% |  |  | start no earlier than 2026-09-24 09:00 | Некрасов А | 0.25h | 0.25h |
| 3127 | 12.5.2.15 | Ревизия масла редуктора | 15min | 2026-09-24 09:00 A | 2026-09-24 09:15 A | 100% |  |  | start no earlier than 2026-09-24 09:00 | Некрасов А | 0.25h | 0.25h |
| 3128 | 12.5.2.16 | Ревизия масла редуктора/осмотр подшипников/ смазка при необходимости | 15min | 2026-09-29 09:00 A | 2026-09-29 09:15 A | 100% |  |  | start no earlier than 2026-09-29 08:00 | Бундин В | 0.25h | 0.25h |
| 3129 | 12.5.2.17 | Замена редуктора прекондиционера | 4h | 2026-10-30 09:00 | 2026-10-30 13:00 |  |  | 97.09d | start no earlier than 2026-10-30 09:00 | Труфанов А; Некрасов А | 8h |  |
| 3130 | 12.5.2.18 | Ревизия масла редуктора/осмотр подшипников/ смазка при необходимости | 15min | 2026-10-15 09:00 | 2026-10-15 09:15 |  |  | 109.56d | start no earlier than 2026-10-15 09:00 | Труфанов А | 0.25h |  |
| 3131 | 12.5.2.19 | Контроль крепления лопаток | 30min | 2026-10-15 09:00 | 2026-10-15 09:30 |  |  | 109.53d | start no earlier than 2026-10-15 09:00 | Труфанов А | 0.5h |  |
| 3132 | 12.5.2.20 | Осмотр подшипников | 15min | 2026-10-30 09:00 | 2026-10-30 09:15 |  |  | 97.56d | start no earlier than 2026-10-30 09:00 | Труфанов А; Некрасов А | 0.5h |  |

| ID | WBS | Task | Duration | Start | Finish | Complete | Remaining | Total slack | Constraint | Resources | Work | Actual work |
| --- | --- | --- | --- | --- | --- | --- | --- | --- | --- | --- | --- | --- |
| 3133 | 12.5.3 | **парогенератор** | 674d | 2024-04-18 10:00 A | 2026-11-05 10:00 | 90% | 65.23d | 93.47d |  |  | 26.75h | 23.5h |
| 3134 | 12.5.3.1 | читска | 1h | 2024-04-18 10:00 A | 2024-04-18 11:00 A | 100% |  |  | start no earlier than 2024-04-18 08:00 | Тимофеев В | 1h | 1h |
| 3135 | 12.5.3.2 | замена гильзы | 1h | 2024-04-18 10:00 A | 2024-04-18 11:00 A | 100% |  |  | start no earlier than 2024-04-18 08:00 | Тимофеев В | 1h | 1h |
| 3136 | 12.5.3.3 | чистка | 2h | 2026-03-05 09:30 A | 2026-03-05 11:30 A | 100% |  |  | start no earlier than 2026-03-04 09:00 | Бундин В | 2h | 2h |
| 3137 | 12.5.3.4 | прорвеп срабатывания защитного клапана | 10min | 2026-03-05 09:30 A | 2026-03-05 09:40 A | 100% |  |  | start no earlier than 2024-10-03 09:00 | Бундин В | 0.17h | 0.17h |
| 3138 | 12.5.3.5 | читска | 1h | 2026-03-19 09:00 A | 2026-03-19 10:00 A | 100% |  |  | start no earlier than 2026-03-19 09:00 | Тимофеев В | 1h | 1h |
| 3139 | 12.5.3.6 | чистка | 1h | 2026-03-12 09:00 A | 2026-03-12 10:00 A | 100% |  |  | start no earlier than 2026-03-12 09:00 | Бундин В; Тимофеев В | 2h | 2h |
| 3140 | 12.5.3.7 | чистка | 1h | 2026-05-14 09:00 A | 2026-05-14 10:00 A | 100% |  |  | start no earlier than 2026-05-14 09:00 | Некрасов А | 1h | 1h |
| 3141 | 12.5.3.8 | чистка | 2h | 2026-07-14 09:00 A | 2026-07-14 11:00 A | 100% |  |  | start no earlier than 2026-07-14 09:00 | Некрасов А | 2h | 2h |
| 3142 | 12.5.3.9 | Чистка | 1h | 2026-07-30 09:00 A | 2026-07-30 10:00 A | 100% |  |  | start no earlier than 2026-07-30 09:00 | Бундин В | 1h | 1h |
| 3143 | 12.5.3.10 | Чистка | 1h | 2026-08-06 09:00 A | 2026-08-06 10:00 A | 100% |  |  | start no earlier than 2026-08-06 09:00 | Тимофеев В | 1h | 1h |
| 3144 | 12.5.3.11 | Чистка | 1h | 2026-08-13 09:00 A | 2026-08-13 10:00 A | 100% |  |  | start no earlier than 2026-08-13 09:00 | Некрасов А | 1h | 1h |
| 3145 | 12.5.3.12 | Чистка | 1h | 2026-08-19 09:00 A | 2026-08-19 10:00 A | 100% |  |  | start no earlier than 2026-08-19 09:00 | Некрасов А | 1h | 1h |
| 3146 | 12.5.3.13 | Чистка | 1h | 2026-09-02 08:00 A | 2026-09-02 10:00 A | 100% |  |  | start no earlier than 2026-09-02 08:00 | Бобренок В | 1h | 1h |
| 3147 | 12.5.3.14 | Убрать грязь с парогенератора, привести в порядок внешний вид, где что отлеплено, прилепить | 20min | 2026-09-03 09:00 A | 2026-09-03 09:20 A | 100% |  |  | start no earlier than 2026-09-03 09:00 | Тимофеев В | 0.33h | 0.33h |
| 3148 | 12.5.3.15 | Чистка | 1h | 2026-09-09 09:00 A | 2026-09-09 10:00 A | 100% |  |  | start no earlier than 2026-09-09 08:00 | Тимофеев В | 1h | 1h |
| 3149 | 12.5.3.16 | Чистка | 1h | 2026-09-17 09:00 A | 2026-09-17 10:00 A | 100% |  |  | start no earlier than 2026-09-17 09:00 | Тимофеев В | 1h | 1h |
| 3150 | 12.5.3.17 | Чистка | 1h | 2026-09-23 09:00 A | 2026-09-23 10:00 A | 100% |  |  | start no earlier than 2026-09-23 09:00 | Дедов В | 1h | 1h |
| 3151 | 12.5.3.18 | Чистка | 1h | 2026-09-29 09:00 A | 2026-09-29 10:00 A | 100% |  |  | start no earlier than 2026-09-29 08:00 |  |  |  |
| 3152 | 12.5.3.19 | Чистка как остановятся, если не получится, передать по смене труфанову | 1h | 2026-10-14 09:00 | 2026-10-14 10:00 |  |  | 110.47d | start no earlier than 2026-10-14 09:00 | Бобренок В | 1h |  |
| 3153 | 12.5.3.20 | Устранить травление пара между сбросником (клапан) и краном | 30min | 2026-10-08 09:00 A | 2026-10-08 09:30 A | 100% |  |  | start no earlier than 2026-10-08 09:00 | Труфанов А; Некрасов А | 1h | 1h |
| 3154 | 12.5.3.21 | Проверить гофротрубу на травление под площадкой, где стоит система из кранов/устранить/заменить | 1h | 2026-10-08 09:00 A | 2026-10-08 10:00 A | 100% |  |  | start no earlier than 2026-10-08 09:00 | Труфанов А; Некрасов А | 2h | 2h |
| 3155 | 12.5.3.22 | Чистка | 1h | 2026-11-05 09:00 | 2026-11-05 10:00 |  |  | 93.47d | start no earlier than 2026-11-05 09:00 | Николаев; Макаревич А | 2h |  |
| 3156 | 12.5.3.23 | Смонтировать переключатель на сирену парогенератора вкл, выкл | 1h | 2026-10-30 09:00 A | 2026-10-30 10:00 A | 100% |  |  | start no earlier than 2026-10-30 09:00 | Макаревич А; Николаев | 2h | 2h |
| 3157 | 12.5.3.24 | подписать сирена вкл/выкл | 15min | 2026-10-30 09:00 | 2026-10-30 09:15 |  |  | 97.56d | start no earlier than 2026-10-30 08:00 | Зорькин В | 0.25h |  |

| ID | WBS | Task | Duration | Start | Finish | Predecessors | Complete | Remaining | Total slack | Constraint | Resources | Work | Actual work |
| --- | --- | --- | --- | --- | --- | --- | --- | --- | --- | --- | --- | --- | --- |
| 3158 | 12.5.4 | **привод сетки ПЕЧИ сушки** | 692.25d | 2024-04-18 08:00 A | 2026-11-25 11:00 |  | 68% | 224.51d | 75.34d |  |  | 15.33h | 8.33h |
| 3159 | 12.5.4.1 | прорверка масла редуктор / натяжка цепи/ ремень | 30min | 2024-04-18 08:00 A | 2024-04-18 09:30 A |  | 100% |  |  | start no earlier than 2024-04-18 08:00 | Тимофеев В | 0.5h | 0.5h |
| 3160 | 12.5.4.2 | прорверка масла редуктор / натяжка цепи/ ремень | 30min | 2026-03-05 09:00 A | 2026-03-05 09:30 A |  | 100% |  |  | start no earlier than 2026-03-05 09:00 | Тимофеев В | 0.5h | 0.5h |
| 3161 | 12.5.4.3 | прорверка масла редуктор / натяжка цепи/ ремень | 30min | 2026-03-19 09:00 A | 2026-03-19 09:30 A |  | 100% |  |  | start no earlier than 2026-03-19 09:00 | Тимофеев В | 0.5h | 0.5h |
| 3162 | 12.5.4.4 | прорверка масла редуктор / натяжка цепи/ ремень/осмотр сетки | 30min | 2026-07-14 09:00 A | 2026-07-14 09:30 A |  | 100% |  |  | start no earlier than 2026-07-14 09:00 | Труфанов А | 0.5h | 0.5h |
| 3163 | 12.5.4.5 | прорверка масла редуктор / натяжка цепи/ ремень/осмотр сетки | 30min | 2026-07-30 09:00 A | 2026-07-30 09:30 A |  | 100% |  |  | start no earlier than 2026-07-30 09:00 | Труфанов А | 0.5h | 0.5h |
| 3164 | 12.5.4.6 | прорверка масла редуктор / натяжка цепи/ ремень/осмотр сетки | 20min | 2026-08-13 09:00 A | 2026-08-13 09:20 A |  | 100% |  |  | start no earlier than 2026-08-13 09:00 | Некрасов А | 0.33h | 0.33h |
| 3165 | 12.5.4.7 | прорверка масла редуктор / натяжка цепи/ ремень/осмотр сетки | 20min | 2026-08-20 09:00 A | 2026-08-20 09:20 A |  | 100% |  |  | start no earlier than 2026-08-20 09:00 | Некрасов А | 0.33h | 0.33h |
| 3166 | 12.5.4.8 | прорверка масла редуктор / натяжка цепи/ ремень/осмотр сетки | 20min | 2026-08-20 09:00 A | 2026-08-20 09:20 A |  | 100% |  |  | start no earlier than 2026-08-20 09:00 | Некрасов А | 0.33h | 0.33h |
| 3167 | 12.5.4.9 | прорверка масла редуктор / натяжка цепи/ ремень/осмотр сетки | 20min | 2026-09-09 09:00 A | 2026-09-09 09:20 A |  | 100% |  |  | start no earlier than 2026-09-09 08:00 | Бобренок В | 0.33h | 0.33h |
| 3168 | 12.5.4.10 | ремонт шестерни привода - наварить | 1h | 2026-09-16 09:00 A | 2026-09-16 10:00 A |  | 100% |  |  | start no earlier than 2026-09-16 09:00 | Бундин В | 1h | 1h |
| 3169 | 12.5.4.11 | смазка цепей пищ смазкой | 1h | 2026-09-16 09:00 A | 2026-09-16 10:00 A |  | 100% |  |  | start no earlier than 2026-09-16 09:00 | Бобренок В | 1h | 1h |
| 3170 | 12.5.4.12 | Снятие шестерен привода (отнести домоводову) | 2h | 2026-09-17 09:00 A | 2026-09-17 11:00 A |  | 100% |  |  | start no earlier than 2026-09-17 09:00 | Труфанов А | 2h | 2h |
| 3171 | 12.5.4.13 | смазка цепей пищ смазкой по графику 3 мес | 1h | 2026-11-25 10:00 | 2026-11-25 11:00 | 3169FS+3mo |  |  | 75.34d | start no earlier than 2026-09-16 09:00 | Бобренок В | 1h |  |
| 3172 | 12.5.4.14 | прорверка масла редуктор / натяжка цепи/ ремень/осмотр сетки | 30min | 2026-10-08 09:00 A | 2026-10-08 09:30 A |  | 100% |  |  | start no earlier than 2026-10-08 09:00 | Дедов В | 0.5h | 0.5h |
| 3173 | 12.5.4.15 | Замена шестерен привода | 2h | 2026-10-15 09:00 | 2026-10-15 11:00 |  |  |  | 109.34d | start no earlier than 2026-10-15 09:00 | Труфанов А; Некрасов А | 4h |  |
| 3174 | 12.5.4.16 | Замена шкива на моторе привода печи (шкив на складе) | 1h | 2026-10-30 09:00 | 2026-10-30 10:00 |  |  |  | 97.47d | start no earlier than 2026-10-30 09:00 | Макаревич А; Николаев | 2h |  |
| 3175 | 12.5.5 | **блок тэнов сушки** | 670.12d | 2024-04-18 08:00 A | 2026-10-30 10:00 |  | 80% | 134.03d | 97.47d |  |  | 15h | 12h |
| 3176 | 12.5.5.1 | вскрыть все блоки | 1h | 2024-04-18 08:00 A | 2024-04-18 10:00 A |  | 100% |  |  | start no earlier than 2024-04-18 08:00 | Тимофеев В | 1h | 1h |
| 3177 | 12.5.5.2 | ревизия / замена критичных | 4h | 2024-04-18 09:00 A | 2024-04-18 13:00 A |  | 100% |  |  | start no earlier than 2024-04-18 08:00 | Некрасов А; Черепанов И | 8h | 8h |
| 3178 | 12.5.5.3 | ревизия | 1h | 2026-03-19 09:00 A | 2026-03-19 10:00 A |  | 100% |  |  | start no earlier than 2026-03-19 09:00 | Бундин В | 1h | 1h |
| 3179 | 12.5.5.4 | ревизия | 1h | 2026-05-14 09:00 A | 2026-05-14 10:00 A |  | 100% |  |  | start no earlier than 2026-05-14 09:00 | Труфанов А | 1h | 1h |
| 3180 | 12.5.5.5 | ревизия перемычек | 1h | 2026-08-13 09:00 A | 2026-08-13 10:00 A |  | 100% |  |  | start no earlier than 2026-08-13 09:00 | Некрасов А | 1h | 1h |
| 3181 | 12.5.5.6 | ревизия перемычек | 1h | 2026-10-15 09:00 | 2026-10-15 10:00 |  |  |  | 109.47d | start no earlier than 2026-10-15 09:00 | Дедов В | 1h |  |
| 3182 | 12.5.5.7 | ревизия / замена критичных | 1h | 2026-10-30 09:00 | 2026-10-30 10:00 |  |  |  | 97.47d | start no earlier than 2026-10-30 09:00 | Николаев; Макаревич А | 2h |  |

| ID | WBS | Task | Duration | Start | Finish | Complete | Remaining | Total slack | Constraint | Resources | Work | Actual work |
| --- | --- | --- | --- | --- | --- | --- | --- | --- | --- | --- | --- | --- |
| 3183 | 12.5.6 | **смеситель СМ-1500** | 180.02d | 2026-03-05 09:00 A | 2026-10-30 09:10 | 98% | 4d | 97.57d |  |  | 7.67h | 7.33h |
| 3184 | 12.5.6.1 | контроль масла | 15min | 2026-03-05 09:00 A | 2026-03-05 09:15 A | 100% |  |  | start no earlier than 2026-03-05 09:00 | Тимофеев В | 0.25h | 0.25h |
| 3185 | 12.5.6.2 | контроль масла | 15min | 2026-03-05 09:00 A | 2026-03-05 09:15 A | 100% |  |  | start no earlier than 2026-03-05 09:00 | Некрасов А | 0.25h | 0.25h |
| 3186 | 12.5.6.3 | замена сальника | 4h | 2026-04-16 09:00 A | 2026-04-16 13:00 A | 100% |  |  | start no earlier than 2026-04-16 09:00 | Тимофеев В | 4h | 4h |
| 3187 | 12.5.6.4 | контроль масла | 15min | 2026-07-30 09:00 A | 2026-07-30 09:15 A | 100% |  |  | start no earlier than 2026-07-30 09:00 | Тимофеев В | 0.25h | 0.25h |
| 3188 | 12.5.6.5 | ревизия подшипникой красного смесителя, просыпается мука со стороны редуктора | 1h | 2026-08-13 09:00 A | 2026-08-13 10:00 A | 100% |  |  | start no earlier than 2026-08-13 09:00 | Тимофеев В | 1h | 1h |
| 3189 | 12.5.6.6 | ревизия подшипникой красного смесителя, просыпается мука со стороны редуктора | 1h | 2026-08-27 09:00 A | 2026-08-27 10:00 A | 100% |  |  | start no earlier than 2026-08-27 09:00 | Тимофеев В | 1h | 1h |
| 3190 | 12.5.6.7 | контроль масла | 15min | 2026-09-03 09:00 A | 2026-09-03 09:15 A | 100% |  |  | start no earlier than 2026-09-03 09:00 | Тимофеев В | 0.25h | 0.25h |
| 3191 | 12.5.6.8 | контроль масла | 10min | 2026-09-09 09:00 A | 2026-09-09 09:10 A | 100% |  |  | start no earlier than 2026-09-09 08:00 | Бобренок В | 0.17h | 0.17h |
| 3192 | 12.5.6.9 | Осмотр подшипников/контроль масла | 10min | 2026-09-29 09:00 A | 2026-09-29 09:10 A | 100% |  |  | start no earlier than 2026-09-29 09:00 | Бундин В | 0.17h | 0.17h |
| 3193 | 12.5.6.10 | Осмотр подшипников/контроль масла | 10min | 2026-10-30 09:00 | 2026-10-30 09:10 |  |  | 97.57d | start no earlier than 2026-10-30 09:00 | Макаревич А; Николаев | 0.33h |  |
| 3194 | 12.5.7 | **нория 2 выгрузки смесителя** | 180.06d | 2026-03-05 09:00 A | 2026-10-30 09:30 | 92% | 13.76d | 97.53d |  | ТО | 71.58h | 65.61h |
| 3195 | 12.5.7.1 | смазка подшипников | 30min | 2026-03-05 09:00 A | 2026-03-05 09:30 A | 100% |  |  | start no earlier than 2026-03-05 09:00 | Бундин В | 0.5h | 0.5h |
| 3196 | 12.5.7.2 | Осмотр подшипников/смазка по необходимости | 30min | 2026-07-30 09:00 A | 2026-07-30 09:30 A | 100% |  |  | start no earlier than 2026-07-30 09:00 | Бундин В | 0.5h | 0.5h |
| 3197 | 12.5.7.3 | ревизия крепления редуктора | 15min | 2026-03-05 09:00 A | 2026-03-05 09:15 A | 100% |  |  | start no earlier than 2026-03-05 09:00 | Бундин В | 0.25h | 0.25h |
| 3198 | 12.5.7.4 | ревизия ленты, обрезать нитки | 4h | 2026-03-26 09:00 A | 2026-03-26 13:00 A | 100% |  |  | start no earlier than 2026-03-26 09:00 | Тимофеев В | 4h | 4h |
| 3199 | 12.5.7.5 | вскрыть для чистки | 10min | 2026-05-19 09:00 A | 2026-05-19 09:10 A | 100% |  |  | start no earlier than 2026-05-21 09:00 | Труфанов А | 0.17h | 0.17h |
| 3200 | 12.5.7.6 | Вскрыть, осмотреть ленту (держится на одном ковше, закрепили на доп болты) | 30min | 2026-09-03 09:00 A | 2026-09-03 09:30 A | 100% |  |  | start no earlier than 2026-09-03 09:00 | Тимофеев В | 0.5h | 0.5h |
| 3201 | 12.5.7.7 | вскрыть для чистки, осмотреть ленту, закрыить после чистки | 10min | 2026-08-13 09:00 A | 2026-08-13 09:10 A | 100% |  |  | start no earlier than 2026-08-13 09:00 | Труфанов А | 0.17h | 0.17h |
| 3202 | 12.5.7.8 | Ревизия ленты, контроль соединения | 30min | 2026-09-17 09:00 A | 2026-09-17 09:30 A | 100% |  |  | start no earlier than 2026-09-17 09:00 | Тимофеев В | 0.5h | 0.5h |
| 3203 | 12.5.7.9 | ремонт стыка ленты - ревитзия, ремонт продлить | 4h | 2026-09-24 09:00 A | 2026-09-24 13:00 A | 100% |  |  | start no earlier than 2026-09-24 09:00 | Тимофеев В; Бундин В | 8h | 8h |
| 3204 | 12.5.7.10 | Ревизия ленты, контроль соединения | 30min | 2026-10-08 09:00 A | 2026-10-08 09:30 A | 100% |  |  | start no earlier than 2026-10-08 09:00 | Труфанов А; Некрасов А | 1h | 1h |
| 3205 | 12.5.7.11 | Проверка мотор редуктора на верху, почему трясет/устранить | 1h | 2026-10-08 09:00 A | 2026-10-08 10:00 A | 100% |  |  | start no earlier than 2026-10-08 09:00 | Труфанов А; Некрасов А | 2h | 2h |
| 3206 | 12.5.7.12 | Ревизия ленты, контроль соединения | 30min | 2026-10-15 09:00 | 2026-10-15 09:30 |  |  | 109.53d | start no earlier than 2026-10-15 09:00 | Труфанов А; Некрасов А | 1h |  |
| 3207 | 12.5.7.13 | Ревизия ленты, контроль соединения | 30min | 2026-10-30 09:00 | 2026-10-30 09:30 |  |  | 97.53d | start no earlier than 2026-10-30 09:00 | Макаревич А; Николаев | 1h |  |

| ID | WBS | Task | Duration | Start | Finish | Complete | Remaining | Total slack | Constraint | Resources | Work | Actual work |
| --- | --- | --- | --- | --- | --- | --- | --- | --- | --- | --- | --- | --- |
| 3208 | 12.5.8 | **бункер-накопитель с шнековой разкгрузкой синий** | 130.01d | 2026-05-14 09:00 A | 2026-10-30 09:05 | 98% | 3.12d | 97.58d |  |  | 10.5h | 10.17h |
| 3209 | 12.5.8.1 | смазка подшипников, ревизия редуктора (нужно разбирать все для смазки). Задний | 4h | 2026-05-14 09:00 A | 2026-05-14 13:00 A | 100% |  |  | start no earlier than 2026-05-14 09:00 | Тимофеев В | 4h | 4h |
| 3210 | 12.5.8.2 | смазка подшипников, ревизия редуктора (нужно разбирать все для смазки). Передний | 4h | 2026-05-28 09:00 A | 2026-05-28 13:00 A | 100% |  |  | start no earlier than 2026-05-28 09:00 | Бундин В | 4h | 4h |
| 3211 | 12.5.8.3 | Осмотр редуктора со стороны мойки, скрипит | 1h | 2026-08-13 09:00 A | 2026-08-13 10:00 A | 100% |  |  | start no earlier than 2026-08-13 09:00 | Тимофеев В | 1h | 1h |
| 3212 | 12.5.8.4 | Осмотр | 5min | 2026-09-03 09:00 A | 2026-09-03 09:05 A | 100% |  |  | start no earlier than 2026-09-03 09:00 | Тимофеев В | 0.08h | 0.08h |
| 3213 | 12.5.8.5 | перенос датчика / доработать лопатки - что бы останавливался раньше, без спресовывания шнеком | 1h | 2026-09-24 09:00 A | 2026-09-24 10:00 A | 100% |  |  | start no earlier than 2026-09-24 09:00 | Труфанов А | 1h | 1h |
| 3214 | 12.5.8.6 | Осмотр | 5min | 2026-09-24 09:00 A | 2026-09-24 09:05 A | 100% |  |  | start no earlier than 2026-09-24 09:00 | Труфанов А | 0.08h | 0.08h |
| 3215 | 12.5.8.7 | Осмотр | 5min | 2026-10-08 09:00 | 2026-10-08 09:05 |  |  | 114.58d | start no earlier than 2026-10-08 09:00 | Дедов В | 0.08h |  |
| 3216 | 12.5.8.8 | Осмотр | 5min | 2026-10-15 09:00 | 2026-10-15 09:05 |  |  | 109.58d | start no earlier than 2026-10-15 09:00 | Труфанов А | 0.08h |  |
| 3217 | 12.5.8.9 | Осмотр | 5min | 2026-10-30 09:00 | 2026-10-30 09:05 |  |  | 97.58d | start no earlier than 2026-10-30 09:00 | Макаревич А; Николаев | 0.17h |  |
| 3218 | 12.5.9 | **питатель экструдера** | 165.12d | 2026-03-26 09:00 A | 2026-10-30 10:00 | 90% | 16.51d | 97.47d |  |  | 25h | 22h |
| 3219 | 12.5.9.1 | замена сальников питателя, сыпит муку | 4h | 2026-07-22 09:00 A | 2026-07-22 13:00 A | 100% |  |  | start no earlier than 2026-07-22 09:00 | Труфанов А | 4h | 4h |
| 3220 | 12.5.9.2 | ревизия подшипников, редутора, привода. Разборка/сборка (нужно разбирать) | 1h | 2026-03-26 09:00 A | 2026-03-26 10:00 A | 100% |  |  | start no earlier than 2026-03-26 09:00 | Тимофеев В | 1h | 1h |
| 3221 | 12.5.9.3 | ревизия подшипников, редутора, привода. Разборка/сборка (нужно разбирать) | 1h | 2026-08-19 09:00 A | 2026-08-19 10:00 A | 100% |  |  | start no earlier than 2026-08-19 09:00 | Тимофеев В | 1h | 1h |
| 3222 | 12.5.9.4 | замена шетсерен и подшипников узла. Поставили новый комплект | 4h | 2026-04-03 08:00 A | 2026-04-03 13:00 A | 100% |  |  | start no earlier than 2026-04-03 08:00 | Тимофеев В | 4h | 4h |
| 3223 | 12.5.9.5 | ревизия шестерни мал редуктора | 1h | 2026-04-16 09:00 A | 2026-04-16 10:00 A | 100% |  |  | start no earlier than 2026-04-16 09:00 | Тимофеев В | 1h | 1h |
| 3224 | 12.5.9.6 | ревизия шестерни мал редуктора | 2h | 2026-08-13 09:00 A | 2026-08-13 11:00 A | 100% |  |  | start no earlier than 2026-08-13 09:00 | Некрасов А; Зорькин В | 4h | 4h |
| 3225 | 12.5.9.7 | ревизия шестерни мал редуктора | 2h | 2026-08-27 09:00 A | 2026-08-27 11:00 A | 100% |  |  | start no earlier than 2026-08-27 09:00 | Некрасов А; Зорькин В | 4h | 4h |
| 3226 | 12.5.9.8 | ревизия шестерен питателя | 1h | 2026-09-03 09:00 A | 2026-09-03 10:00 A | 100% |  |  | start no earlier than 2026-09-03 09:00 | Некрасов А | 1h | 1h |
| 3227 | 12.5.9.9 | Ревизия шестерен и подшипников | 1h | 2026-09-17 09:00 A | 2026-09-17 10:00 A | 100% |  |  | start no earlier than 2026-09-17 09:00 | Тимофеев В | 1h | 1h |
| 3228 | 12.5.9.10 | Ревизия шестерен и подшипников | 1h | 2026-09-29 09:00 A | 2026-09-29 10:00 A | 100% |  |  | start no earlier than 2026-09-29 09:00 | Бундин В | 1h | 1h |
| 3229 | 12.5.9.11 | Ревизия шестерен и подшипников | 1h | 2026-10-15 09:00 | 2026-10-15 10:00 |  |  | 109.47d | start no earlier than 2026-10-15 09:00 | Труфанов А | 1h |  |
| 3230 | 12.5.9.12 | Ревизия шестерен и подшипников | 1h | 2026-10-30 09:00 | 2026-10-30 10:00 |  |  | 97.47d | start no earlier than 2026-10-30 09:00 | Труфанов А; Некрасов А | 2h |  |
| 3231 | 12.5.10 | **привод прекондиционера** | 180.02d | 2026-03-05 09:00 A | 2026-10-30 09:10 | 93% | 13.5d | 97.57d |  |  | 11.17h | 10.5h |
| 3232 | 12.5.10.1 | проверка масла | 5min | 2026-03-05 09:00 A | 2026-03-05 09:05 A | 100% |  |  | start no earlier than 2026-03-05 09:00 | Тимофеев В | 0.08h | 0.08h |
| 3233 | 12.5.10.2 | контроль крепления шестерен | 5min | 2026-03-05 09:00 A | 2026-03-05 09:05 A | 100% |  |  | start no earlier than 2026-03-05 09:00 | Тимофеев В | 0.08h | 0.08h |
| 3234 | 12.5.10.3 | ревизия подшипников и стопорных винтов | 30min | 2026-03-05 09:00 A | 2026-03-05 09:30 A | 100% |  |  | start no earlier than 2026-03-05 09:00 | Бундин В | 0.5h | 0.5h |
| 3235 | 12.5.10.4 | Осмотр шестерён(стоит звон), подшипников, сальников | 30min | 2026-09-03 09:00 A | 2026-09-03 09:30 A | 100% |  |  | start no earlier than 2026-09-03 09:00 | Тимофеев В | 0.5h | 0.5h |
| 3236 | 12.5.10.5 | Замена подшипников кореных и передних | 4h | 2026-09-09 09:00 A | 2026-09-09 13:00 A | 100% |  |  | start no earlier than 2026-09-09 08:00 | Труфанов А; Некрасов А | 8h | 8h |
| 3237 | 12.5.10.6 | Осмотр подшипников, муфты, шестерен | 20min | 2026-09-17 09:00 A | 2026-09-17 09:20 A | 100% |  |  | start no earlier than 2026-09-17 09:00 | Некрасов А | 0.33h | 0.33h |
| 3238 | 12.5.10.7 | Осмотр подшипников, муфты, шестерен | 20min | 2026-09-29 09:00 A | 2026-09-29 09:20 A | 100% |  |  | start no earlier than 2026-09-29 08:00 | Бундин В | 0.33h | 0.33h |
| 3239 | 12.5.10.8 | Осмотр подшипников, муфты, шестерен | 10min | 2026-10-08 09:00 A | 2026-10-08 09:10 A | 100% |  |  | start no earlier than 2026-10-08 09:00 | Труфанов А; Некрасов А | 0.33h | 0.33h |
| 3240 | 12.5.10.9 | Поставить защитный кожух | 10min | 2026-10-08 09:00 A | 2026-10-08 09:10 A | 100% |  |  | start no earlier than 2026-10-08 09:00 | Труфанов А; Некрасов А | 0.33h | 0.33h |
| 3241 | 12.5.10.10 | Осмотр подшипников, муфты, шестерен | 20min | 2026-10-15 09:00 | 2026-10-15 09:20 |  |  | 109.55d | start no earlier than 2026-10-15 09:00 | Труфанов А | 0.33h |  |
| 3242 | 12.5.10.11 | Осмотр подшипников, муфты, шестерен | 10min | 2026-10-30 09:00 | 2026-10-30 09:10 |  |  | 97.57d | start no earlier than 2026-10-30 09:00 | Труфанов А; Некрасов А | 0.33h |  |

| ID | WBS | Task | Duration | Start | Finish | Predecessors | Complete | Remaining | Total slack | Constraint | Resources | Work | Actual work |
| --- | --- | --- | --- | --- | --- | --- | --- | --- | --- | --- | --- | --- | --- |
| 3243 | 12.5.11 | **мотор-редуктор привод шнеков** | 60.02d | 2026-08-20 09:00 A | 2026-10-30 09:10 |  | 41% | 35.47d | 97.57d |  |  | 4.33h | 2h |
| 3244 | 12.5.11.1 | замена масла | 2h | 2026-08-20 09:00 | 2026-08-20 11:00 |  |  |  | 157.34d | start no earlier than 2026-08-20 09:00 | Тимофеев В | 2h |  |
| 3245 | 12.5.11.2 | Проверка масла (долил уровень) | 10min | 2026-09-03 09:00 A | 2026-09-03 09:10 A |  | 100% |  |  | start no earlier than 2026-09-03 09:00 | Труфанов А | 0.17h | 0.17h |
| 3246 | 12.5.11.3 | Проверка масла | 10min | 2026-09-09 09:00 A | 2026-09-09 09:10 A |  | 100% |  |  | start no earlier than 2026-09-09 08:00 | Бобренок В | 0.17h | 0.17h |
| 3247 | 12.5.11.4 | Проверка масла | 10min | 2026-09-17 09:00 A | 2026-09-17 09:10 A |  | 100% |  |  | start no earlier than 2026-09-17 09:00 | Некрасов А | 0.17h | 0.17h |
| 3248 | 12.5.11.5 | Проверка масла | 10min | 2026-09-24 09:00 A | 2026-09-24 09:10 A |  | 100% |  |  | start no earlier than 2026-09-24 09:00 | Некрасов А | 0.17h | 0.17h |
| 3249 | 12.5.11.6 | Проверка масла | 10min | 2026-09-29 09:00 A | 2026-09-29 09:10 A |  | 100% |  |  | start no earlier than 2026-09-29 08:00 | Бундин В | 0.17h | 0.17h |
| 3250 | 12.5.11.7 | Проверка муфту соединенной цепью, есть сильный люфт, при выявлении откланений сообщить/устранить | 30min | 2026-10-08 09:00 A | 2026-10-08 09:30 A |  | 100% |  |  | start no earlier than 2026-10-08 09:00 | Труфанов А; Некрасов А | 1h | 1h |
| 3251 | 12.5.11.8 | Проверка масла | 10min | 2026-10-08 09:00 A | 2026-10-08 09:10 A |  | 100% |  |  | start no earlier than 2026-10-08 09:00 | Дедов В | 0.17h | 0.17h |
| 3252 | 12.5.11.9 | Проверка масла | 10min | 2026-10-30 09:00 | 2026-10-30 09:10 |  |  |  | 97.57d | start no earlier than 2026-10-30 09:00 | Макаревич А; Николаев | 0.33h |  |
| 3253 | 12.5.12 | **редуктор шнеков экструдера - проверка масла** | 453.03d | 2025-02-17 09:00 A | 2026-10-30 09:15 |  | 96% | 17.88d | 97.56d |  |  | 6.58h | 6.08h |
| 3254 | 12.5.12.1 | чистка фильтра редуктора | 15min | 2026-03-05 09:00 A | 2026-03-05 09:15 A |  | 100% |  |  | start no earlier than 2026-03-05 09:00 | Тимофеев В | 0.25h | 0.25h |
| 3255 | 12.5.12.2 | контоль цепи муфты привода | 5min | 2026-03-05 09:15 A | 2026-03-05 09:20 A | 3254, 3256, 3257, 3259, 3263, 3264 | 100% |  |  | start no earlier than 2026-03-04 08:00 | Тимофеев В | 0.08h | 0.08h |
| 3256 | 12.5.12.3 | чистка фильтра редуктора | 15min | 2026-03-19 09:00 A | 2026-03-19 09:15 A |  | 100% |  |  | start no earlier than 2026-03-19 09:00 | Тимофеев В | 0.25h | 0.25h |
| 3257 | 12.5.12.4 | чистка фильтра редуктора | 15min | 2026-06-18 09:00 A | 2026-06-18 09:15 A |  | 100% |  |  | start no earlier than 2026-06-18 09:00 | Тимофеев В | 0.25h | 0.25h |
| 3258 | 12.5.12.5 | чистка фильтра редуктора | 30min | 2026-08-06 08:00 A | 2026-08-06 09:30 A |  | 100% |  |  | start no earlier than 2026-08-06 08:00 | Тимофеев В | 0.5h | 0.5h |
| 3259 | 12.5.12.6 | чистка фильтра редуктора | 15min | 2026-07-14 09:00 A | 2026-07-14 09:15 A |  | 100% |  |  | start no earlier than 2026-07-14 09:00 | Бундин В | 0.25h | 0.25h |
| 3260 | 12.5.12.7 | тэны и термпоры шнеков | 2h | 2025-02-17 09:00 A | 2025-02-17 11:00 A |  | 100% |  |  | start no earlier than 2025-02-17 09:00 | Дедов В | 2h | 2h |
| 3261 | 12.5.12.8 | проверка масла | 5min | 2026-08-06 09:00 A | 2026-08-06 09:05 A |  | 100% |  |  | start no earlier than 2026-08-06 09:00 | Тимофеев В | 0.08h | 0.08h |
| 3262 | 12.5.12.9 | Проверка масла | 10min | 2026-07-30 09:00 A | 2026-07-30 09:10 A |  | 100% |  |  | start no earlier than 2026-07-30 09:00 | Бундин В | 0.17h | 0.17h |
| 3263 | 12.5.12.10 | чистка фильтра редуктора | 15min | 2026-08-13 09:00 A | 2026-08-13 09:15 A |  | 100% |  |  | start no earlier than 2026-08-13 09:00 | Тимофеев В | 0.25h | 0.25h |
| 3264 | 12.5.12.11 | чистка фильтра редуктора | 15min | 2026-08-20 09:00 A | 2026-08-20 09:15 A |  | 100% |  |  | start no earlier than 2026-08-20 09:00 | Тимофеев В | 0.25h | 0.25h |
| 3265 | 12.5.12.12 | Чистка фильтра | 15min | 2026-09-03 09:00 A | 2026-09-03 09:15 A |  | 100% |  |  | start no earlier than 2026-09-03 09:00 | Труфанов А | 0.25h | 0.25h |
| 3266 | 12.5.12.13 | Чистка фильтра | 15min | 2026-09-09 09:00 A | 2026-09-09 09:15 A |  | 100% |  |  | start no earlier than 2026-09-09 08:00 | Бобренок В | 0.25h | 0.25h |
| 3267 | 12.5.12.14 | Проверка масла | 5min | 2026-09-09 09:00 A | 2026-09-09 09:05 A |  | 100% |  |  | start no earlier than 2026-09-09 08:00 | Бобренок В | 0.08h | 0.08h |
| 3268 | 12.5.12.15 | Проверка масла/чистка фильтра | 15min | 2026-09-17 09:00 A | 2026-09-17 09:15 A |  | 100% |  |  | start no earlier than 2026-09-17 09:00 | Некрасов А | 0.25h | 0.25h |
| 3269 | 12.5.12.16 | Чистка фильтра | 15min | 2026-09-24 09:00 A | 2026-09-24 09:15 A |  | 100% |  |  | start no earlier than 2026-09-24 09:00 | Некрасов А | 0.25h | 0.25h |
| 3270 | 12.5.12.17 | Чистка фильтра | 15min | 2026-09-29 09:00 A | 2026-09-29 09:15 A |  | 100% |  |  | start no earlier than 2026-09-29 08:00 | Бундин В | 0.25h | 0.25h |
| 3271 | 12.5.12.18 | Проверка масла | 10min | 2026-10-08 09:00 A | 2026-10-08 09:10 A |  | 100% |  |  | start no earlier than 2026-10-08 09:00 | Дедов В | 0.17h | 0.17h |
| 3272 | 12.5.12.19 | Чистка фильтра | 15min | 2026-10-08 09:00 A | 2026-10-08 09:15 A |  | 100% |  |  | start no earlier than 2026-10-08 09:00 | Дедов В | 0.25h | 0.25h |
| 3273 | 12.5.12.20 | Проверка масла, чистка фильтра | 15min | 2026-10-30 09:00 | 2026-10-30 09:15 |  |  |  | 97.56d | start no earlier than 2026-10-30 09:00 | Макаревич А; Николаев | 0.5h |  |

| ID | WBS | Task | Duration | Start | Finish | Predecessors | Complete | Remaining | Total slack | Constraint | Resources | Work | Actual work |
| --- | --- | --- | --- | --- | --- | --- | --- | --- | --- | --- | --- | --- | --- |
| 3274 | 12.5.13 | **шкаф управления экструдером** | 180.02d | 2026-03-05 09:00 A | 2026-10-30 09:10 |  | 85% | 27.7d | 97.57d |  |  | 2.33h | 1.83h |
| 3275 | 12.5.13.1 | продувка частотного привода | 10min | 2026-03-05 09:00 A | 2026-03-05 09:10 A |  | 100% |  |  | start no earlier than 2026-03-05 09:00 | Труфанов А | 0.17h | 0.17h |
| 3276 | 12.5.13.2 | продувка частотного привода | 10min | 2026-08-06 09:00 A | 2026-08-06 09:10 A |  | 100% |  |  | start no earlier than 2026-08-06 09:00 | Бундин В | 0.17h | 0.17h |
| 3277 | 12.5.13.3 | уложить и закрепить провода | 5min | 2026-03-05 09:10 A | 2026-03-05 09:15 A | 3275, 3276, 3279, 3280, 3281, 3282 | 100% |  |  | start no earlier than 2026-03-04 08:00 | Труфанов А | 0.08h | 0.08h |
| 3278 | 12.5.13.4 | протяжка контактов | 5min | 2026-03-05 09:15 A | 2026-03-05 09:20 A | 3277 | 100% |  |  | start no earlier than 2026-03-04 08:00 | Труфанов А | 0.08h | 0.08h |
| 3279 | 12.5.13.5 | продувка частотного привода | 10min | 2026-03-19 09:00 A | 2026-03-19 09:10 A |  | 100% |  |  | start no earlier than 2026-03-19 09:00 | Дедов В | 0.17h | 0.17h |
| 3280 | 12.5.13.6 | продувка частотного привода | 10min | 2026-05-14 09:00 A | 2026-05-14 09:10 A |  | 100% |  |  | start no earlier than 2026-05-14 09:00 | Макаревич А | 0.17h | 0.17h |
| 3281 | 12.5.13.7 | продувка частотного привода | 10min | 2026-08-13 09:00 A | 2026-08-13 09:10 A |  | 100% |  |  | start no earlier than 2026-08-13 09:00 | Некрасов А | 0.17h | 0.17h |
| 3282 | 12.5.13.8 | продувка частотного привода | 10min | 2026-08-20 09:00 A | 2026-08-20 09:10 A |  | 100% |  |  | start no earlier than 2026-08-20 09:00 | Дедов В | 0.17h | 0.17h |
| 3283 | 12.5.13.9 | продувка частотного привода | 10min | 2026-09-03 09:00 A | 2026-09-03 09:10 A |  | 100% |  |  | start no earlier than 2026-09-03 09:00 | Труфанов А | 0.17h | 0.17h |
| 3284 | 12.5.13.10 | продувка частотного привода | 10min | 2026-09-17 09:00 A | 2026-09-17 09:10 A |  | 100% |  |  | start no earlier than 2026-09-17 09:00 | Некрасов А | 0.17h | 0.17h |
| 3285 | 12.5.13.11 | продувка частотного привода | 10min | 2026-09-29 09:00 A | 2026-09-29 09:10 A |  | 100% |  |  | start no earlier than 2026-09-29 09:00 | Бундин В | 0.17h | 0.17h |
| 3286 | 12.5.13.12 | продувка частотного привода | 10min | 2026-10-08 09:00 A | 2026-10-08 09:10 A |  | 100% |  |  | start no earlier than 2026-10-08 09:00 | Дедов В | 0.17h | 0.17h |
| 3287 | 12.5.13.13 | продувка частотного привода | 10min | 2026-10-15 09:00 | 2026-10-15 09:10 |  |  |  | 109.57d | start no earlier than 2026-10-15 09:00 | Дедов В | 0.17h |  |
| 3288 | 12.5.13.14 | продувка частотного привода | 10min | 2026-10-30 09:00 | 2026-10-30 09:10 |  |  |  | 97.57d | start no earlier than 2026-10-30 09:00 | Макаревич А; Николаев | 0.33h |  |
| 3289 | 12.5.14 | **пневотранспорт роторный питатель** | 170.02d | 2026-03-19 09:00 A | 2026-10-30 09:10 |  | 46% | 91.08d | 97.57d |  |  | 6.83h | 2.17h |
| 3290 | 12.5.14.1 | замена на ЗИП / вывод на ремонт промывку | 2h | 2026-06-25 09:00 | 2026-06-25 11:00 |  |  |  | 197.34d | start no earlier than 2026-06-25 09:00 | Труфанов А; Некрасов А | 4h |  |
| 3291 | 12.5.14.2 | проверка масла - высок температурная смазка | 1h | 2026-03-19 09:00 A | 2026-03-19 10:00 A |  | 100% |  |  | start no earlier than 2026-03-19 09:00 | Труфанов А | 1h | 1h |
| 3292 | 12.5.14.3 | Ревизия узлов/масла | 30min | 2026-07-30 09:00 A | 2026-07-30 09:30 A |  | 100% |  |  | start no earlier than 2026-07-30 09:00 | Труфанов А | 0.5h | 0.5h |
| 3293 | 12.5.14.4 | Ревизия узлов/масла (смазку свежую набил) | 20min | 2026-09-03 09:00 A | 2026-09-03 09:20 A |  | 100% |  |  | start no earlier than 2026-09-03 09:00 | Труфанов А | 0.33h | 0.33h |
| 3294 | 12.5.14.5 | Ревизия узлов/масла. Очистка мотора от пыли | 20min | 2026-09-24 09:00 A | 2026-09-24 09:20 A |  | 100% |  |  | start no earlier than 2026-09-24 09:00 | Бундин В | 0.33h | 0.33h |
| 3295 | 12.5.14.6 | Ревизия узлов/масла. Очистка мотора от пыли | 20min | 2026-10-15 09:00 | 2026-10-15 09:20 |  |  |  | 109.55d | start no earlier than 2026-10-15 09:00 | Труфанов А | 0.33h |  |
| 3296 | 12.5.14.7 | Ревизия узлов/масла. Очистка мотора от пыли | 10min | 2026-10-30 09:00 | 2026-10-30 09:10 |  |  |  | 97.57d | start no earlier than 2026-10-30 09:00 | Макаревич А; Николаев | 0.33h |  |
| 3297 | 12.5.15 | **печь - валы этажей, подшипники, цепи** | 158.12d | 2026-03-19 09:00 A | 2026-10-15 10:00 A |  | 100% |  |  |  |  | 7.42h | 7.42h |
| 3298 | 12.5.15.1 | осмотр смазка | 30min | 2026-03-19 09:00 A | 2026-03-19 09:30 A |  | 100% |  |  | start no earlier than 2026-03-19 09:00 | Тимофеев В | 0.5h | 0.5h |
| 3299 | 12.5.15.2 | осмотр смазка сетки | 2h | 2026-05-14 09:00 A | 2026-05-14 11:00 A |  | 100% |  |  | start no earlier than 2026-05-14 09:00 | Макаревич А | 2h | 2h |
| 3300 | 12.5.15.3 | натяжка цепей | 30min | 2026-08-13 09:00 A | 2026-08-13 09:30 A |  | 100% |  |  | start no earlier than 2026-08-13 09:00 | Некрасов А | 0.5h | 0.5h |
| 3301 | 12.5.15.4 | натяжка цепей, контроль привода | 30min | 2026-09-03 09:00 A | 2026-09-03 09:30 A |  | 100% |  |  | start no earlier than 2026-09-03 09:00 | Труфанов А | 0.5h | 0.5h |
| 3302 | 12.5.15.5 | Контроль редуктора, осмотр, проверка масла | 30min | 2026-09-17 09:00 A | 2026-09-17 09:30 A |  | 100% |  |  | start no earlier than 2026-09-17 09:00 | Труфанов А | 0.5h | 0.5h |
| 3303 | 12.5.15.6 | Контроль редуктора, осмотр, проверка масла | 30min | 2026-09-24 09:00 A | 2026-09-24 09:30 A |  | 100% |  |  | start no earlier than 2026-09-24 09:00 | Некрасов А | 0.5h | 0.5h |
| 3304 | 12.5.15.7 | Смазка всех цепей (если не смазаны) | 1h | 2026-10-15 09:00 A | 2026-10-15 10:00 A |  | 100% |  |  | start no earlier than 2026-10-15 09:00 | Бобренок В | 1h | 1h |
| 3305 | 12.5.15.8 | Контроль редуктора, осмотр, проверка масла | 30min | 2026-09-29 09:00 A | 2026-09-29 09:30 A |  | 100% |  |  | start no earlier than 2026-09-29 08:00 | Бундин В | 0.5h | 0.5h |
| 3306 | 12.5.15.9 | Контроль состояния шестерен привода | 10min | 2026-10-08 09:00 A | 2026-10-08 09:10 A |  | 100% |  |  | start no earlier than 2026-10-08 09:00 | Дедов В | 0.17h | 0.17h |
| 3307 | 12.5.15.10 | Проверка редуктора и выявление причины его шума и шатания/устранить | 1h | 2026-10-08 09:00 A | 2026-10-08 10:00 A |  | 100% |  |  | start no earlier than 2026-10-08 09:00 | Дедов В | 1h | 1h |
| 3308 | 12.5.15.11 | Замер диаметра шкива двигателя привода редуктора | 15min | 2026-10-15 09:00 A | 2026-10-15 09:15 A |  | 100% |  |  | start no earlier than 2026-10-15 09:00 | Труфанов А | 0.25h | 0.25h |

| ID | WBS | Task | Duration | Start | Finish | Predecessors | Complete | Remaining | Total slack | Constraint | Resources | Work | Actual work |
| --- | --- | --- | --- | --- | --- | --- | --- | --- | --- | --- | --- | --- | --- |
| 3309 | 12.5.16 | **вентиляторы обдува сушки** | 180.12d? | 2026-03-05 09:00 A | 2026-10-30 10:00 |  | 17% | 148.8d? | 97.47d |  | ТО | 1448h | 12h |
| 3310 | 12.5.16.1 | чистка крыльчатки | 1d? | 2026-03-05 09:00 | 2026-03-05 18:00 |  |  |  | 276.59d | start no earlier than 2026-03-05 09:00 |  |  |  |
| 3311 | 12.5.16.2 | замена подшипников | 1d? | 2026-03-05 09:00 | 2026-03-05 18:00 |  |  |  | 276.59d | start no earlier than 2026-03-05 09:00 |  |  |  |
| 3312 | 12.5.16.3 | Осмотр, чистка | 2h | 2026-09-17 09:00 A | 2026-09-17 11:00 A |  | 100% |  |  | start no earlier than 2026-09-17 09:00 | Бобренок В | 2h | 2h |
| 3313 | 12.5.16.4 | Осмотр, очистка от пыли | 2h | 2026-09-24 09:00 A | 2026-09-24 11:00 A |  | 100% |  |  | start no earlier than 2026-09-24 09:00 | Некрасов А | 2h | 2h |
| 3314 | 12.5.16.5 | Осмотр, очистка от пыли | 2h | 2026-10-15 09:00 | 2026-10-15 11:00 |  |  |  | 109.34d | start no earlier than 2026-10-15 09:00 | Дедов В | 2h |  |
| 3315 | 12.5.16.6 | Осмотр, очистка от пыли | 1h | 2026-10-30 09:00 | 2026-10-30 10:00 |  |  |  | 97.47d | start no earlier than 2026-10-30 09:00 | Тимофеев В | 1h |  |
| 3316 | 12.5.17 | **шкаф управления тэнами сушки главный** | 180.04d | 2026-03-05 09:00 A | 2026-10-30 09:20 |  | 87% | 22.98d | 97.55d |  |  | 8h | 6.83h |
| 3317 | 12.5.17.1 | протяжка контактов, продувка шкафа, частотного привода | 10min | 2026-03-05 09:00 A | 2026-03-05 09:10 A |  | 100% |  |  | start no earlier than 2026-03-05 09:00 | Труфанов А | 0.17h | 0.17h |
| 3318 | 12.5.17.2 | протяжка контактов, продувка шкафа, частотного привода | 10min | 2026-07-14 09:00 A | 2026-07-14 09:10 A |  | 100% |  |  | start no earlier than 2026-07-14 09:00 | Некрасов А | 0.17h | 0.17h |
| 3319 | 12.5.17.3 | осмотср замена подгоревших кабелей | 30min | 2026-05-21 09:00 A | 2026-05-21 09:30 A |  | 100% |  |  | start no earlier than 2026-05-21 09:00 | Тимофеев В | 0.5h | 0.5h |
| 3320 | 12.5.17.4 | протяжка контактов, продувка шкафа, частотного привода | 30min | 2026-08-06 09:00 | 2026-08-06 09:30 |  |  |  | 167.53d | start no earlier than 2026-08-06 08:00 | Бундин В | 0.5h |  |
| 3321 | 12.5.17.5 | осмотср замена подгоревших кабелей | 30min | 2026-05-21 09:00 A | 2026-05-21 09:30 A |  | 100% |  |  | start no earlier than 2026-05-21 09:00 | Некрасов А | 0.5h | 0.5h |
| 3322 | 12.5.17.6 | продуть, протяжка контактов | 1h | 2026-05-21 08:00 A | 2026-05-21 10:00 A |  | 100% |  |  | start no earlier than 2026-05-21 08:00 | Тимофеев В | 1h | 1h |
| 3323 | 12.5.17.7 | осмотср замена подгоревших кабелей | 30min | 2026-07-14 09:00 A | 2026-07-14 09:30 A |  | 100% |  |  | start no earlier than 2026-07-14 09:00 | Труфанов А | 0.5h | 0.5h |
| 3324 | 12.5.17.8 | осмотср замена подгоревших кабелей | 1h | 2026-08-13 09:00 A | 2026-08-13 10:00 A |  | 100% |  |  | start no earlier than 2026-08-13 09:00 | Труфанов А | 1h | 1h |
| 3325 | 12.5.17.9 | продувка | 10min | 2026-09-03 09:00 A | 2026-09-03 09:10 A |  | 100% |  |  | start no earlier than 2026-09-03 09:00 | Труфанов А | 0.17h | 0.17h |
| 3326 | 12.5.17.10 | Продувка | 10min | 2026-09-17 09:00 A | 2026-09-17 09:10 A |  | 100% |  |  | start no earlier than 2026-09-17 09:00 | Некрасов А | 0.17h | 0.17h |
| 3327 | 12.5.17.11 | Продувка. Замена подогретых жил | 2h | 2026-09-24 09:00 A | 2026-09-24 11:00 A |  | 100% |  |  | start no earlier than 2026-09-24 09:00 | Труфанов А | 2h | 2h |
| 3328 | 12.5.17.12 | протяжка контактов, продувка шкафа, частотного привода | 10min | 2026-10-30 09:00 | 2026-10-30 09:10 |  |  |  | 97.57d | start no earlier than 2026-10-30 09:00 |  |  |  |
| 3329 | 12.5.17.13 | протяжка контактов, продувка шкафа, частотного привода | 10min | 2026-10-15 09:30 A | 2026-10-15 09:40 A | 3330 | 100% |  |  |  | Дедов В | 0.17h | 0.17h |
| 3330 | 12.5.17.14 | осмотср замена подгоревших кабелей | 30min | 2026-10-15 09:00 A | 2026-10-15 09:30 A |  | 100% |  |  | start no earlier than 2026-10-15 09:00 | Дедов В | 0.5h | 0.5h |
| 3331 | 12.5.17.15 | осмотср замена подгоревших кабелей | 20min | 2026-10-30 09:00 | 2026-10-30 09:20 |  |  |  | 97.55d | start no earlier than 2026-10-30 09:00 | Макаревич А; Николаев | 0.67h |  |
| 3332 | 12.5.18 | **шкаф управления тэнами твердотельный** | 180.04d | 2026-03-05 09:00 A | 2026-10-30 09:20 |  | 93% | 13.34d | 97.55d |  |  | 4.83h | 4.17h |
| 3333 | 12.5.18.1 | продувка, протяжка | 10min | 2026-03-05 09:00 A | 2026-03-05 09:10 A |  | 100% |  |  | start no earlier than 2026-03-05 09:00 | Труфанов А | 0.17h | 0.17h |
| 3334 | 12.5.18.2 | продувка, протяжка | 10min | 2026-07-14 09:00 A | 2026-07-14 09:10 A |  | 100% |  |  | start no earlier than 2026-07-14 09:00 | Труфанов А | 0.17h | 0.17h |
| 3335 | 12.5.18.3 | продувка, протяжка | 10min | 2026-08-06 09:00 A | 2026-08-06 09:10 A |  | 100% |  |  | start no earlier than 2026-08-06 08:00 | Бундин В | 0.17h | 0.17h |
| 3336 | 12.5.18.4 | замена подгоревших кабелей | 30min | 2026-08-13 09:00 A | 2026-08-13 09:30 A |  | 100% |  |  | start no earlier than 2026-08-13 09:00 | Труфанов А | 0.5h | 0.5h |
| 3337 | 12.5.18.5 | продувка, протяжка | 10min | 2026-08-06 09:00 A | 2026-08-06 09:10 A |  | 100% |  |  | start no earlier than 2026-08-06 08:00 | Труфанов А | 0.17h | 0.17h |
| 3338 | 12.5.18.6 | продувка, протяжка | 10min | 2026-09-03 09:00 A | 2026-09-03 09:10 A |  | 100% |  |  | start no earlier than 2026-09-03 09:00 | Труфанов А | 0.17h | 0.17h |
| 3339 | 12.5.18.7 | Продувка | 10min | 2026-09-17 09:00 A | 2026-09-17 09:10 A |  | 100% |  |  | start no earlier than 2026-09-17 09:00 | Некрасов А | 0.17h | 0.17h |
| 3340 | 12.5.18.8 | Продувка. Замена подогретых жил | 2h | 2026-09-24 09:00 A | 2026-09-24 11:00 A |  | 100% |  |  | start no earlier than 2026-09-24 09:00 | Труфанов А | 2h | 2h |
| 3341 | 12.5.18.9 | Продувка | 10min | 2026-09-29 09:00 A | 2026-09-29 09:10 A |  | 100% |  |  | start no earlier than 2026-09-29 08:00 | Бундин В | 0.17h | 0.17h |
| 3342 | 12.5.18.10 | Продувка. Замена подогретых жил | 30min | 2026-10-15 09:00 A | 2026-10-15 09:30 A |  | 100% |  |  | start no earlier than 2026-10-15 09:00 | Дедов В | 0.5h | 0.5h |
| 3343 | 12.5.18.11 | Продувка. Замена подогретых жил | 20min | 2026-10-30 09:00 | 2026-10-30 09:20 |  |  |  | 97.55d | start no earlier than 2026-10-30 09:00 | Макаревич А; Николаев | 0.67h |  |

| ID | WBS | Task | Duration | Start | Finish | Complete | Remaining | Total slack | Constraint | Resources | Work | Actual work |
| --- | --- | --- | --- | --- | --- | --- | --- | --- | --- | --- | --- | --- |
| 3344 | 12.5.19 | **конвейер №1 с печи в дрожировщик** | 180.06d | 2026-03-05 09:00 A | 2026-10-30 09:30 | 86% | 25.12d | 97.53d |  |  | 3.58h | 3.08h |
| 3345 | 12.5.19.1 | ослабить ленту для чистки барабана / натяжка после чистки | 30min | 2026-03-05 09:00 A | 2026-03-05 09:30 A | 100% |  |  | start no earlier than 2026-03-05 09:00 | Тимофеев В | 0.5h | 0.5h |
| 3346 | 12.5.19.2 | ревизия люфтов, фиксации смазки подшипников | 30min | 2026-03-05 09:00 A | 2026-03-05 09:30 A | 100% |  |  | start no earlier than 2026-03-05 09:00 | Тимофеев В | 0.5h | 0.5h |
| 3347 | 12.5.19.3 | ослабить ленту для чистки барабана / натяжка после чистки | 10min | 2026-03-12 09:00 A | 2026-03-12 09:10 A | 100% |  |  | start no earlier than 2026-03-12 09:00 | Тимофеев В | 0.17h | 0.17h |
| 3348 | 12.5.19.4 | чистка ленты контроль операторов, если нужно ослаить | 15min | 2026-08-13 09:00 A | 2026-08-13 09:15 A | 100% |  |  | start no earlier than 2026-08-13 09:00 | Тимофеев В | 0.25h | 0.25h |
| 3349 | 12.5.19.5 | ревизия люфтов, фиксации смазки подшипников | 30min | 2026-09-03 09:00 A | 2026-09-03 09:30 A | 100% |  |  | start no earlier than 2026-09-03 09:00 | Тимофеев В | 0.5h | 0.5h |
| 3350 | 12.5.19.6 | ослабить ленту для чистки барабана / натяжка после чистки | 10min | 2026-09-03 09:00 A | 2026-09-03 09:10 A | 100% |  |  | start no earlier than 2026-09-03 09:00 | Тимофеев В | 0.17h | 0.17h |
| 3351 | 12.5.19.7 | ревизия люфтов, фиксации смазки подшипников | 30min | 2026-09-17 09:00 A | 2026-09-17 09:30 A | 100% |  |  | start no earlier than 2026-09-17 09:00 | Тимофеев В | 0.5h | 0.5h |
| 3352 | 12.5.19.8 | очистка валов и ленты / контроль крепления редуктора / состояния подшипника | 30min | 2026-09-24 09:00 A | 2026-09-24 09:30 A | 100% |  |  | start no earlier than 2026-09-24 09:00 | Тимофеев В | 0.5h | 0.5h |
| 3353 | 12.5.19.9 | очистка валов и ленты / контроль крепления редуктора / состояния подшипника | 30min | 2026-10-30 09:00 | 2026-10-30 09:30 |  |  | 97.53d | start no earlier than 2026-10-30 09:00 | Тимофеев В | 0.5h |  |
| 3354 | 12.5.20 | **барабан смесительный дрожировка** | 750.25d | 2023-12-28 09:00 A | 2026-10-30 11:00 | 65% | 264.79d | 97.34d |  | ТО | 128.17h | 82.93h |
| 3355 | 12.5.20.1 | ревизия состяния валов, подшипников | 2h | 2026-02-25 09:00 A | 2026-02-25 11:00 A | 100% |  |  | start no earlier than 2026-02-25 09:00 | Тимофеев В | 2h | 2h |
| 3356 | 12.5.20.2 | ремонт вала временный. 11 час | 2h | 2026-02-25 09:00 A | 2026-02-25 11:00 A | 100% |  |  | start no earlier than 2026-02-25 09:00 | Тимофеев В | 2h | 2h |
| 3357 | 12.5.20.3 | замена подшипников мотора привода | 2h | 2026-02-25 09:00 A | 2026-02-25 11:00 A | 100% |  |  | start no earlier than 2026-02-25 09:00 | Тимофеев В | 2h | 2h |
| 3358 | 12.5.20.4 | заменаить вал дрожировки по стрелкам на 11час / после прихода с ремонта | 2h | 2026-04-30 09:00 A | 2026-04-30 11:00 A | 100% |  |  | start no earlier than 2026-04-30 09:00 | Тимофеев В | 2h | 2h |
| 3359 | 12.5.20.5 | насос подачи жира и смесительный узел, баки подогрева | 2h | 2023-12-28 09:00 | 2023-12-28 11:00 |  |  | 847.34d | start no earlier than 2023-12-28 09:00 | ТО | 2h |  |
| 3360 | 12.5.20.6 | Осмотр подшипников редукторов | 20min | 2026-07-30 09:00 A | 2026-07-30 09:20 A | 100% |  |  | start no earlier than 2026-07-30 09:00 | Труфанов А | 0.33h | 0.33h |
| 3361 | 12.5.20.7 | Осмотр подшипников редукторов | 15min | 2026-08-13 09:00 A | 2026-08-13 09:15 A | 100% |  |  | start no earlier than 2026-08-13 09:00 | Тимофеев В | 0.25h | 0.25h |
| 3362 | 12.5.20.8 | Осмотр подшипников редукторов | 15min | 2026-09-03 09:00 A | 2026-09-03 09:15 A | 100% |  |  | start no earlier than 2026-09-03 09:00 | Тимофеев В | 0.25h | 0.25h |
| 3363 | 12.5.20.9 | Осмотр соединений фитингов, трехходового крана бежит/не бежит | 10min | 2026-09-03 09:00 A | 2026-09-03 09:10 A | 100% |  |  | start no earlier than 2026-09-03 09:00 | Тимофеев В | 0.17h | 0.17h |
| 3364 | 12.5.20.10 | Осмотр соединений фитингов, трехходового крана бежит/не бежит | 10min | 2026-09-17 09:00 A | 2026-09-17 09:10 A | 100% |  |  | start no earlier than 2026-09-17 09:00 | Тимофеев В | 0.17h | 0.17h |
| 3365 | 12.5.20.11 | Осмотр соединений фитингов, трехходового крана бежит/не бежит | 10min | 2026-09-18 09:00 | 2026-09-18 09:10 |  |  | 133.57d | start no earlier than 2026-09-18 09:00 | Тимофеев В | 0.17h |  |
| 3366 | 12.5.20.12 | Осмотр подшипников редукторов | 15min | 2026-10-08 09:00 | 2026-10-08 09:15 |  |  | 114.56d | start no earlier than 2026-10-08 09:00 | Тимофеев В | 0.25h |  |
| 3367 | 12.5.20.13 | Осмотр соединений фитингов, трехходового крана бежит/не бежит | 10min | 2026-10-08 09:00 | 2026-10-08 09:10 |  |  | 114.57d | start no earlier than 2026-10-08 09:00 | Тимофеев В | 0.17h |  |
| 3368 | 12.5.20.14 | Осмотр соединений фитингов, трехходового крана бежит/не бежит | 15min | 2026-10-15 09:00 | 2026-10-15 09:15 |  |  | 109.56d | start no earlier than 2026-10-15 09:00 | Дедов В | 0.25h |  |
| 3369 | 12.5.20.15 | Осмотр соединений фитингов, трехходового крана бежит/не бежит | 10min | 2026-10-30 09:00 | 2026-10-30 09:10 |  |  | 97.57d | start no earlier than 2026-10-30 09:00 | Тимофеев В | 0.17h |  |
| 3370 | 12.5.20.16 | Замена фитингов на новые под новый шланг | 2h | 2026-10-30 09:00 | 2026-10-30 11:00 |  |  | 97.34d | start no earlier than 2026-10-30 09:00 | Тимофеев В | 2h |  |

| ID | WBS | Task | Duration | Start | Finish | Complete | Remaining | Total slack | Constraint | Resources | Work | Actual work |
| --- | --- | --- | --- | --- | --- | --- | --- | --- | --- | --- | --- | --- |
| 3371 | 12.5.21 | **Узел подачи гидролизата** | 87.02d | 2026-07-14 09:00 A | 2026-10-30 09:10 | 85% | 12.89d | 97.57d |  |  | 4.5h | 3.83h |
| 3372 | 12.5.21.1 | Дефектовка/ выяснить причу почему еле крутит/ устранить | 2h | 2026-07-14 09:00 A | 2026-07-14 11:00 A | 100% |  |  | start no earlier than 2026-07-14 09:00 | Бундин В | 2h | 2h |
| 3373 | 12.5.21.2 | осмотр цепи, редуктора, протяжка | 20min | 2026-08-13 09:00 A | 2026-08-13 09:20 A | 100% |  |  | start no earlier than 2026-08-13 09:00 | Тимофеев В | 0.33h | 0.33h |
| 3374 | 12.5.21.3 | Осмотр/ревизия насоса гидролизата, проверка всех соединений | 10min | 2026-09-03 09:00 A | 2026-09-03 09:10 A | 100% |  |  | start no earlier than 2026-09-03 09:00 | Тимофеев В | 0.17h | 0.17h |
| 3375 | 12.5.21.4 | Осмотр/ревизия насоса гидролизата, проверка всех соединений | 10min | 2026-09-17 09:00 A | 2026-09-17 09:10 A | 100% |  |  | start no earlier than 2026-09-17 09:00 | Тимофеев В | 0.17h | 0.17h |
| 3376 | 12.5.21.5 | перенос розеток со стола на раму | 1h | 2026-09-17 09:00 A | 2026-09-17 10:00 A | 100% |  |  | start no earlier than 2026-09-17 09:00 | Тимофеев В | 1h | 1h |
| 3377 | 12.5.21.6 | Осмотр/ревизия насоса гидролизата, проверка всех соединений | 10min | 2026-10-08 09:00 A | 2026-10-08 09:10 A | 100% |  |  | start no earlier than 2026-10-08 09:00 | Тимофеев В | 0.17h | 0.17h |
| 3378 | 12.5.21.7 | Осмотр/ревизия насоса гидролизата, проверка всех соединений | 10min | 2026-10-15 09:00 | 2026-10-15 09:10 |  |  | 109.57d | start no earlier than 2026-10-15 09:00 | Дедов В | 0.17h |  |
| 3379 | 12.5.21.8 | Вернуть ограничение частоты на 70 герц и заблокировать настройки частотника, чтоб не могли менять | 20min | 2026-10-15 09:00 | 2026-10-15 09:20 |  |  | 109.55d | start no earlier than 2026-10-15 09:00 | Дедов В | 0.33h |  |
| 3380 | 12.5.21.9 | Осмотр/ревизия насоса гидролизата, проверка всех соединений | 10min | 2026-10-30 09:00 | 2026-10-30 09:10 |  |  | 97.57d | start no earlier than 2026-10-30 09:00 | Тимофеев В | 0.17h |  |
| 3381 | 12.5.22 | **конвейер №2 с дрожировки в охладитель** | 180.06d | 2026-03-05 09:00 A | 2026-10-30 09:30 | 86% | 24.55d | 97.53d |  |  | 3.67h | 3.17h |
| 3382 | 12.5.22.1 | ослабить ленту для чистки барабана / натяжка после чистки | 30min | 2026-03-05 09:00 A | 2026-03-05 09:30 A | 100% |  |  | start no earlier than 2026-03-05 09:00 | Тимофеев В | 0.5h | 0.5h |
| 3383 | 12.5.22.2 | ревизия люфтов, фиксации смазки подшипников | 30min | 2026-03-05 09:00 A | 2026-03-05 09:30 A | 100% |  |  | start no earlier than 2026-03-05 09:00 | Тимофеев В | 0.5h | 0.5h |
| 3384 | 12.5.22.3 | ослабить ленту для чистки барабана / натяжка после чистки | 10min | 2026-03-12 09:00 A | 2026-03-12 09:10 A | 100% |  |  | start no earlier than 2026-03-12 09:00 | Тимофеев В | 0.17h | 0.17h |
| 3385 | 12.5.22.4 | чистка ленты контроль операторов, если нужно ослаить | 15min | 2026-08-13 09:00 A | 2026-08-13 09:15 A | 100% |  |  | start no earlier than 2026-08-13 09:00 | Тимофеев В | 0.25h | 0.25h |
| 3386 | 12.5.22.5 | чистка ленты контроль операторов, если нужно ослаить | 15min | 2026-08-13 09:00 A | 2026-08-13 09:15 A | 100% |  |  | start no earlier than 2026-08-13 09:00 | Тимофеев В | 0.25h | 0.25h |
| 3387 | 12.5.22.6 | ослабить ленту для чистки барабана / натяжка после чистки | 30min | 2026-09-03 09:00 A | 2026-09-03 09:30 A | 100% |  |  | start no earlier than 2026-09-03 09:00 | Тимофеев В | 0.5h | 0.5h |
| 3388 | 12.5.22.7 | ревизия люфтов, фиксации смазки подшипников | 30min | 2026-09-17 09:00 A | 2026-09-17 09:30 A | 100% |  |  | start no earlier than 2026-09-17 09:00 | Тимофеев В | 0.5h | 0.5h |
| 3389 | 12.5.22.8 | ревизия люфтов, фиксации смазки подшипников | 30min | 2026-09-24 09:00 A | 2026-09-24 09:30 A | 100% |  |  | start no earlier than 2026-09-24 09:00 | Тимофеев В | 0.5h | 0.5h |
| 3390 | 12.5.22.9 | ревизия люфтов, фиксации смазки подшипников | 30min | 2026-10-30 09:00 | 2026-10-30 09:30 |  |  | 97.53d | start no earlier than 2026-10-30 09:00 | Тимофеев В | 0.5h |  |
| 3391 | 12.5.23 | **охладитель сеточный** | 674.38d? | 2024-04-18 09:00 A | 2026-11-05 12:00 | 54% | 313.1d? | 93.22d |  |  | 23h | 18h |
| 3392 | 12.5.23.1 | ревизия осей сетки, замена шплинтов | 2h | 2024-04-18 09:00 A | 2024-04-18 11:00 A | 100% |  |  | start no earlier than 2024-04-18 08:00 | Некрасов А; Черепанов И | 4h | 4h |
| 3393 | 12.5.23.2 | ревизия привода - масло, ремень (не проверено масло) | 10min | 2026-03-19 09:00 A | 2026-03-19 09:10 A | 100% |  |  | start no earlier than 2026-03-05 09:00 | Тимофеев В | 0.17h | 0.17h |
| 3394 | 12.5.23.3 | ревизия привода - масло, ремень (не проверено масло) | 10min | 2026-07-14 09:00 | 2026-07-14 09:10 |  |  | 184.57d | start no earlier than 2026-07-14 09:00 | Некрасов А | 0.17h |  |
| 3395 | 12.5.23.4 | ревизия состояния сетки | 2h | 2026-07-14 09:00 A | 2026-07-14 11:00 A | 100% |  |  | start no earlier than 2026-07-14 08:00 | Некрасов А | 2h | 2h |
| 3396 | 12.5.23.5 | ревизия состояния сетки | 1h | 2026-07-30 09:00 A | 2026-07-30 10:00 A | 100% |  |  | start no earlier than 2026-07-30 09:00 | Бундин В | 1h | 1h |
| 3397 | 12.5.23.6 | ревизия состояния сетки | 1d? | 2026-08-20 09:00 | 2026-08-20 18:00 |  |  | 156.59d | start no earlier than 2026-08-20 09:00 |  |  |  |
| 3398 | 12.5.23.7 | контроль натяжки цепей | 20min | 2026-03-05 09:00 A | 2026-03-05 09:20 A | 100% |  |  | start no earlier than 2026-03-05 09:00 | Бундин В | 0.33h | 0.33h |
| 3399 | 12.5.23.8 | текущий ремонт силиконовых уплотнений | 30min | 2026-03-05 09:00 A | 2026-03-05 09:30 A | 100% |  |  | start no earlier than 2026-03-05 09:00 | Бундин В | 0.5h | 0.5h |
| 3400 | 12.5.23.9 | осмотр ремней, натяжка цепей, ремонт силиконовых отбортовок | 1h | 2026-05-14 09:00 A | 2026-05-14 10:00 A | 100% |  |  | start no earlier than 2026-05-14 09:00 | Макаревич А | 1h | 1h |
| 3401 | 12.5.23.10 | осмотр ремней, натяжка цепей, ремонт силиконовых отбортовок | 1h | 2026-07-14 09:00 A | 2026-07-14 10:00 A | 100% |  |  | start no earlier than 2026-07-14 09:00 | Некрасов А | 1h | 1h |
| 3402 | 12.5.23.11 | осмотр ремней, натяжка цепей, ремонт силиконовых отбортовок | 1h | 2026-07-30 09:00 A | 2026-07-30 10:00 A | 100% |  |  | start no earlier than 2026-07-30 09:00 | Бундин В | 1h | 1h |
| 3403 | 12.5.23.12 | осмотр ремней, натяжка цепей, ремонт силиконовых отбортовок | 1h | 2026-08-20 09:00 A | 2026-08-20 10:00 A | 100% |  |  | start no earlier than 2026-08-20 09:00 | Труфанов А; Некрасов А | 2h | 2h |
| 3404 | 12.5.23.13 | осмотр ремней, натяжка цепей, ремонт силиконовых отбортовок | 1h | 2026-08-20 09:00 A | 2026-08-20 10:00 A | 100% |  |  | start no earlier than 2026-08-20 09:00 | Дедов В | 1h | 1h |
| 3405 | 12.5.23.14 | Ревизия сетки, контроль роспуска, подогнуть, где что можно, что бы не зацепилось | 1h | 2026-09-24 09:00 A | 2026-09-24 10:00 A | 100% |  |  | start no earlier than 2026-09-24 09:00 | Труфанов А | 1h | 1h |
| 3406 | 12.5.23.15 | Смазка подшипников привод охладителя | 30min | 2026-09-24 09:00 A | 2026-09-24 09:30 A | 100% |  |  | start no earlier than 2026-09-24 09:00 | Труфанов А | 0.5h | 0.5h |
| 3407 | 12.5.23.16 | Смазка всех цепей | 2h | 2026-09-24 09:00 A | 2026-09-24 11:00 A | 100% |  |  | start no earlier than 2026-09-24 09:00 | Труфанов А | 2h | 2h |
| 3408 | 12.5.23.17 | Ремонт уголка на охладителе, позвонить мне, перешлю видео | 30min | 2026-09-29 09:00 A | 2026-09-29 09:30 A | 100% |  |  | start no earlier than 2026-09-29 08:00 | Бундин В | 0.5h | 0.5h |
| 3409 | 12.5.23.18 | ревизия состояния сетки/контроль натяжки цепей, ревизия сетки | 1h | 2026-10-30 09:00 | 2026-10-30 10:00 |  |  | 97.47d | start no earlier than 2026-10-30 09:00 | Тимофеев В | 1h |  |
| 3410 | 12.5.23.19 | Смазка подшипников привода при необходимости | 30min | 2026-10-30 09:00 | 2026-10-30 09:30 |  |  | 97.53d | start no earlier than 2026-10-30 09:00 | Тимофеев В | 0.5h |  |
| 3411 | 12.5.23.20 | заявка на тавотницы 90 | 20min | 2026-10-30 09:00 | 2026-10-30 09:20 |  |  | 97.55d | start no earlier than 2026-10-30 08:00 | Зорькин В | 0.33h |  |
| 3412 | 12.5.23.21 | замена тавотниц которые требуют ослабление сетки для доступа | 3h | 2026-11-05 09:00 | 2026-11-05 12:00 |  |  | 93.22d | start no earlier than 2026-11-05 09:00 | Тимофеев В | 3h |  |

| ID | WBS | Task | Duration | Start | Finish | Predecessors | Complete | Remaining | Total slack | Free slack | Constraint | Resources | Work | Actual work |
| --- | --- | --- | --- | --- | --- | --- | --- | --- | --- | --- | --- | --- | --- | --- |
| 3413 | 12.5.24 | **конвейер 3 с охладителя в упаковку** | 66.03d | 2026-08-12 09:00 A | 2026-10-30 09:15 |  | 57% | 28.3d | 97.56d |  |  | ТО | 337.75h | 97.19h |
| 3414 | 12.5.24.1 | ослабить ленту для чистки барабана / натяжка после чистки | 15min | 2026-08-12 09:00 A | 2026-08-12 09:15 A |  | 100% |  |  |  | start no earlier than 2026-08-12 09:00 | Тимофеев В | 0.25h | 0.25h |
| 3415 | 12.5.24.2 | ревизия люфтов, фиксации, смазки подшипников | 15min | 2026-08-12 09:00 A | 2026-08-12 09:15 A |  | 100% |  |  |  | start no earlier than 2026-08-12 09:00 | Тимофеев В | 0.25h | 0.25h |
| 3416 | 12.5.24.3 | ослабить ленту для чистки барабана / натяжка после чистки | 15min | 2026-09-03 09:00 A | 2026-09-03 09:15 A |  | 100% |  |  |  | start no earlier than 2026-09-03 09:00 | Макаревич А | 0.25h | 0.25h |
| 3417 | 12.5.24.4 | ревизия люфтов, фиксации, смазки подшипников | 15min | 2026-09-17 09:00 A | 2026-09-17 09:15 A |  | 100% |  |  |  | start no earlier than 2026-09-17 09:00 | Некрасов А | 0.25h | 0.25h |
| 3418 | 12.5.24.5 | ревизия люфтов, фиксации, смазки подшипников | 15min | 2026-10-01 09:00 | 2026-10-01 09:15 |  |  |  | 120.56d |  | start no earlier than 2026-10-01 09:00 | Некрасов А | 0.25h |  |
| 3419 | 12.5.24.6 | ревизия люфтов, фиксации, смазки подшипников | 15min | 2026-10-15 09:00 | 2026-10-15 09:15 |  |  |  | 109.56d |  | start no earlier than 2026-10-15 09:00 |  |  |  |
| 3420 | 12.5.24.7 | ревизия люфтов, фиксации, смазки подшипников | 15min | 2026-10-30 09:00 | 2026-10-30 09:15 |  |  |  | 97.56d |  | start no earlier than 2026-10-30 09:00 | Тимофеев В | 0.25h |  |
| 3421 | 12.5.25 | **упаковка** | 720.12d | 2023-12-28 09:00 A | 2026-09-24 10:00 A |  | 100% |  |  |  |  | ТО | 5101h | 5101h |
| 3422 | 12.5.25.1 | НОТИС 1 | 2h | 2023-12-28 09:00 A | 2023-12-28 11:00 A |  | 100% |  |  |  | start no earlier than 2023-12-28 09:00 | ТО | 2h | 2h |
| 3423 | 12.5.25.2 | НОТИС 2 | 2h | 2023-12-28 09:00 A | 2023-12-28 11:00 A |  | 100% |  |  |  | start no earlier than 2023-12-28 09:00 | ТО | 2h | 2h |
| 3424 | 12.5.25.3 | запайщик 1 | 2h | 2026-06-18 09:00 A | 2026-06-18 11:00 A |  | 100% |  |  |  | start no earlier than 2026-06-18 09:00 | Труфанов А | 2h | 2h |
| 3425 | 12.5.25.4 | запайщик 2 | 2h | 2026-06-18 09:00 A | 2026-06-18 11:00 A |  | 100% |  |  |  | start no earlier than 2026-06-18 09:00 | Труфанов А | 2h | 2h |
| 3426 | 12.5.25.5 | запайщик 1 проверка перемычек/тефлона замена при необходимости | 2h | 2026-09-03 09:00 A | 2026-09-03 11:00 A |  | 100% |  |  |  | start no earlier than 2026-09-03 09:00 | Макаревич А | 2h | 2h |
| 3427 | 12.5.25.6 | запайщик 1 проверка перемычек/тефлона замена при необходимости | 2h | 2026-09-03 09:00 A | 2026-09-03 11:00 A |  | 100% |  |  |  | start no earlier than 2026-09-03 09:00 | Макаревич А | 2h | 2h |
| 3428 | 12.5.25.7 | запайщик 1 и 2 проверка перемычек/тефлона замена при необходимости | 1h | 2026-09-24 09:00 A | 2026-09-24 10:00 A |  | 100% |  |  |  | start no earlier than 2026-09-24 09:00 | Некрасов А | 1h | 1h |
| 3429 | 12.5.26 | **квадропак** | 65.02d | 2026-08-12 09:00 A | 2026-10-29 09:10 |  | 60% | 26.01d | 98.57d |  |  |  | 6.83h | 4h |
| 3430 | 12.5.26.1 | смазка вращающиющихся механизмов | 30min | 2026-10-01 09:00 | 2026-10-01 09:30 |  |  |  | 120.41d | 0d | start no earlier than 2026-10-01 09:00 | Бундин В | 0.5h |  |
| 3431 | 12.5.26.2 | протяжка креплений поворотных лап захвата | 30min | 2026-10-01 09:30 | 2026-10-01 10:00 | 3430 |  |  | 120.41d | 0d | start no earlier than 2026-03-05 09:00 | Бундин В | 0.5h |  |
| 3432 | 12.5.26.3 | чистка вала ленты выгрзного транспортера | 30min | 2026-10-01 10:00 | 2026-10-01 10:30 | 3431 |  |  | 120.41d |  | start no earlier than 2026-03-31 08:00 | Бундин В | 0.5h |  |
| 3433 | 12.5.26.4 | осмотр приводной системы нории / смазка | 30min | 2026-08-12 09:00 | 2026-08-12 09:30 |  |  |  | 163.53d |  | start no earlier than 2026-08-12 09:00 | Тимофеев В | 0.5h |  |
| 3434 | 12.5.26.5 | осмотр приводной системы нории / смазка | 30min | 2026-08-20 09:00 | 2026-08-20 09:30 |  |  |  | 157.53d |  | start no earlier than 2026-08-20 09:00 | Бобренок В | 0.5h |  |
| 3435 | 12.5.26.6 | осмотр приводной системы нории / смазка | 30min | 2026-09-03 09:00 A | 2026-09-03 09:30 A |  | 100% |  |  |  | start no earlier than 2026-09-03 09:00 | Макаревич А | 0.5h | 0.5h |
| 3436 | 12.5.26.7 | протяжка креплений поворотных лап захвата | 30min | 2026-09-03 09:00 A | 2026-09-03 09:30 A |  | 100% |  |  |  | start no earlier than 2026-09-03 09:00 | Макаревич А | 0.5h | 0.5h |
| 3437 | 12.5.26.8 | снимать ковши для доступка к подшинику, нуждающего в смазке( сообщил Некрасов) | 2h | 2026-09-24 09:00 A | 2026-09-24 11:00 A |  | 100% |  |  |  | start no earlier than 2026-09-24 09:00 | Бундин В | 2h | 2h |
| 3438 | 12.5.26.9 | Ревизия редуктора транспортной ленты, бежит масло | 1h | 2026-10-15 09:00 A | 2026-10-15 10:00 A |  | 100% |  |  |  | start no earlier than 2026-10-15 09:00 | Бобренок В | 1h | 1h |
| 3439 | 12.5.26.10 | Проверка редуктора транспортерной ленты | 10min | 2026-10-29 09:00 | 2026-10-29 09:10 |  |  |  | 98.57d |  | start no earlier than 2026-10-29 08:00 | Макаревич А; Николаев | 0.33h |  |

| ID | WBS | Task | Duration | Start | Finish | Complete | Remaining | Total slack | Constraint | Resources | Work | Actual work |
| --- | --- | --- | --- | --- | --- | --- | --- | --- | --- | --- | --- | --- |
| 3440 | 12.5.27 | **БЕСТРОМ** | 750.12d | 2023-12-28 09:00 A | 2026-10-30 10:00 | 80% | 147.18d | 97.47d |  | ТО | 1107.83h | 77.33h |
| 3441 | 12.5.27.1 | чистка тен с демантожем | 2.5h | 2026-03-05 09:00 A | 2026-03-05 11:30 A | 100% |  |  | start no earlier than 2026-03-05 09:00 | Бундин В | 2.5h | 2.5h |
| 3442 | 12.5.27.2 | ослабить ленту для чистки барабана / натяжка после чистки | 10min | 2026-03-12 09:00 A | 2026-03-12 09:10 A | 100% |  |  | start no earlier than 2026-03-12 09:00 | Бундин В | 0.17h | 0.17h |
| 3443 | 12.5.27.3 | чистка тенов | 1h | 2026-05-14 09:00 A | 2026-05-14 10:00 A | 100% |  |  | start no earlier than 2026-05-14 09:00 | Макаревич А | 1h | 1h |
| 3444 | 12.5.27.4 | чистка тенов | 2h | 2026-07-14 09:00 | 2026-07-14 11:00 |  |  | 184.34d | start no earlier than 2026-07-14 09:00 | Бундин В | 2h |  |
| 3445 | 12.5.27.5 | конвейер и вибробункер БЕСТРОМ | 2h | 2023-12-28 09:00 | 2023-12-28 11:00 |  |  | 847.34d | start no earlier than 2023-12-28 09:00 | ТО | 2h |  |
| 3446 | 12.5.27.6 | бестром чистка тен, проверка тефлона, роликов (согласовать с мастером) | 2h | 2026-07-08 09:00 A | 2026-07-08 11:00 A | 100% |  |  | start no earlier than 2026-07-08 09:00 | Бобренок В | 2h | 2h |
| 3447 | 12.5.27.7 | бестром чистка тен, проверка тефлона, роликов (согласовать с мастером) | 1h | 2026-07-30 09:00 A | 2026-07-30 10:00 A | 100% |  |  | start no earlier than 2026-07-30 09:00 | Тимофеев В | 1h | 1h |
| 3448 | 12.5.27.8 | бестром чистка тен, проверка тефлона, роликов (согласовать с мастером) | 1h | 2026-08-13 09:00 A | 2026-08-13 10:00 A | 100% |  |  | start no earlier than 2026-08-13 09:00 | Тимофеев В | 1h | 1h |
| 3449 | 12.5.27.9 | бестром чистка тен, проверка тефлона, роликов (согласовать с мастером) | 1h | 2026-08-20 09:00 A | 2026-08-20 10:00 A | 100% |  |  | start no earlier than 2026-08-20 09:00 | Дедов В | 1h | 1h |
| 3450 | 12.5.27.10 | бестром чистка тен, проверка тефлона, роликов (согласовать с мастером) | 1h | 2026-09-03 09:00 A | 2026-09-03 10:00 A | 100% |  |  | start no earlier than 2026-09-03 09:00 | Макаревич А | 1h | 1h |
| 3451 | 12.5.27.11 | Замена линейного подшипника ISKRA KH2030-PP (согласование с Домоводовым) не делали, все норм там) | 2h | 2026-09-03 09:00 A | 2026-09-03 11:00 A | 100% |  |  | start no earlier than 2026-09-03 09:00 | Макаревич А | 2h | 2h |
| 3452 | 12.5.27.12 | ослабить ленту для чистки барабана / натяжка после чистки | 10min | 2026-09-10 09:00 | 2026-09-10 09:10 |  |  | 141.57d | start no earlier than 2026-09-10 09:00 | Макаревич А | 0.17h |  |
| 3453 | 12.5.27.13 | Замена поролоновой губки на горизонтальных тенах запайки пакетов | 30min | 2026-09-17 09:00 A | 2026-09-17 09:30 A | 100% |  |  | start no earlier than 2026-09-17 09:00 | Бобренок В | 0.5h | 0.5h |
| 3454 | 12.5.27.14 | Чистка ТЭНов | 2h | 2026-09-16 09:00 A | 2026-09-16 11:00 A | 100% |  |  | start no earlier than 2026-09-16 08:00 | Бундин В | 2h | 2h |
| 3455 | 12.5.27.15 | Чистка ТЭНов | 2h | 2026-09-24 09:00 A | 2026-09-24 11:00 A | 100% |  |  | start no earlier than 2026-09-24 09:00 | Бундин В | 2h | 2h |
| 3456 | 12.5.27.16 | Проверка контактов их продувка и их протяжка. Проверка эелектрической части, устранение неисправностей. | 4h | 2026-10-08 09:00 A | 2026-10-08 13:00 A | 100% |  |  | start no earlier than 2026-10-08 09:00 | Дедов В | 4h | 4h |
| 3457 | 12.5.27.17 | Чистка тенов, проверка тефлона, роликов | 1h | 2026-10-15 09:00 A | 2026-10-15 10:00 A | 100% |  |  | start no earlier than 2026-10-15 09:00 | Труфанов А | 1h | 1h |
| 3458 | 12.5.27.18 | Чистка тенов, проверка тефлона, роликов | 1h | 2026-10-30 09:00 | 2026-10-30 10:00 |  |  | 97.47d | start no earlier than 2026-10-30 09:00 | Макаревич А; Николаев | 2h |  |
| 3459 | 12.5.28 | **электрооборудование** | 700.02d? | 2023-12-28 09:00 A | 2026-09-03 09:10 |  | 696.66d? | 147.57d |  |  | 69.33h | 0.33h |
| 3460 | 12.5.28.1 | ВРУ3 | 30min | 2024-10-03 09:00 | 2024-10-03 09:30 |  |  | 647.53d | start no earlier than 2024-10-03 09:00 | Тимофеев В | 0.5h |  |
| 3461 | 12.5.28.2 | ВРУ4 | 2h | 2023-12-28 09:00 | 2023-12-28 11:00 |  |  | 847.34d | start no earlier than 2023-12-28 09:00 | ТО | 2h |  |
| 3462 | 12.5.28.3 | ВРУ5 | 2h | 2023-12-28 09:00 | 2023-12-28 11:00 |  |  | 847.34d | start no earlier than 2023-12-28 09:00 | ТО | 2h |  |
| 3463 | 12.5.28.4 | ВРУ6 | 2h | 2023-12-28 09:00 | 2023-12-28 11:00 |  |  | 847.34d | start no earlier than 2023-12-28 09:00 | ТО | 2h |  |
| 3464 | 12.5.28.5 | ЩР4 у печи | 2h | 2023-12-28 09:00 | 2023-12-28 11:00 |  |  | 847.34d | start no earlier than 2023-12-28 09:00 | ТО | 2h |  |
| 3465 | 12.5.28.6 | ЩО1 у печи | 30min | 2024-10-03 09:00 | 2024-10-03 09:30 |  |  | 647.53d | start no earlier than 2024-10-03 09:00 | Тимофеев В | 0.5h |  |
| 3466 | 12.5.28.7 | ЩР5 у жиротопки | 2h | 2023-12-28 09:00 | 2023-12-28 11:00 |  |  | 847.34d | start no earlier than 2023-12-28 09:00 | ТО | 2h |  |
| 3467 | 12.5.28.8 | ЩР6 упаковка стна жир | 2h | 2023-12-28 09:00 | 2023-12-28 11:00 |  |  | 847.34d | start no earlier than 2023-12-28 09:00 | ТО | 2h |  |
| 3468 | 12.5.28.9 | ЩР7 упаковка колонна | 2h | 2023-12-28 09:00 | 2023-12-28 11:00 |  |  | 847.34d | start no earlier than 2023-12-28 09:00 | ТО | 2h |  |
| 3469 | 12.5.28.10 | ЩР8 склад навесок | 2h | 2023-12-28 09:00 | 2023-12-28 11:00 |  |  | 847.34d | start no earlier than 2023-12-28 09:00 | ТО | 2h |  |
| 3470 | 12.5.28.11 | ЩР9 2 этаж | 2h | 2023-12-28 09:00 | 2023-12-28 11:00 |  |  | 847.34d | start no earlier than 2023-12-28 09:00 | ТО | 2h |  |
| 3471 | 12.5.28.12 | электрокотел 1 - 2 цех | 2h | 2023-12-28 09:00 | 2023-12-28 11:00 |  |  | 847.34d | start no earlier than 2023-12-28 09:00 | ТО | 2h |  |
| 3472 | 12.5.28.13 | электрокотел 2 - 2 цех | 1d? | 2023-12-28 09:00 | 2023-12-28 18:00 |  |  | 846.59d | start no earlier than 2023-12-28 09:00 | ТО | 8h |  |
| 3473 | 12.5.28.14 | электрокотел 3 - 2 цех | 1d? | 2023-12-28 09:00 | 2023-12-28 18:00 |  |  | 846.59d | start no earlier than 2023-12-28 09:00 | ТО | 8h |  |
| 3474 | 12.5.28.15 | бойлер 4 2 цех раковина | 1d? | 2023-12-28 09:00 | 2023-12-28 18:00 |  |  | 846.59d | start no earlier than 2023-12-28 09:00 | ТО | 8h |  |
| 3475 | 12.5.28.16 | бойлер 5 2 цех душ М | 1d? | 2023-12-28 09:00 | 2023-12-28 18:00 |  |  | 846.59d | start no earlier than 2023-12-28 09:00 | ТО | 8h |  |
| 3476 | 12.5.28.17 | бойлер 6 2 цех душ Ж | 1d? | 2023-12-28 09:00 | 2023-12-28 18:00 |  |  | 846.59d | start no earlier than 2023-12-28 09:00 | ТО | 8h |  |
| 3477 | 12.5.28.18 | насос санитарный | 1d? | 2023-12-28 09:00 | 2023-12-28 18:00 |  |  | 846.59d | start no earlier than 2023-12-28 09:00 | ТО | 8h |  |
| 3478 | 12.5.28.19 | ЩР4 у печи продувка | 10min | 2026-09-03 09:00 A | 2026-09-03 09:10 A | 100% |  |  | start no earlier than 2026-09-03 09:00 | Труфанов А | 0.17h | 0.17h |
| 3479 | 12.5.28.20 | ЩО1 у печи продувка | 10min | 2026-09-03 09:00 A | 2026-09-03 09:10 A | 100% |  |  | start no earlier than 2026-09-03 09:00 | Труфанов А | 0.17h | 0.17h |

| ID | WBS | Task | Duration | Start | Finish | Complete | Remaining | Total slack | Constraint | Resources | Work | Actual work |
| --- | --- | --- | --- | --- | --- | --- | --- | --- | --- | --- | --- | --- |
| 3480 | 12.5.29 | **Компрессор 2 цех** | 82.03d | 2026-08-06 09:00 A | 2026-11-13 09:15 | 99% | 0d | 0d |  | ТО | 4.5h | 4.5h |
| 3481 | 12.5.29.1 | продувка фильтров | 30min | 2026-08-06 09:00 A | 2026-08-06 09:30 A | 100% |  |  | start no earlier than 2026-08-06 09:00 | Тимофеев В | 0.5h | 0.5h |
| 3482 | 12.5.29.2 | слив конденсат с осушителя | 30min | 2026-08-06 09:00 A | 2026-08-06 09:30 A | 100% |  |  | start no earlier than 2026-08-06 09:00 | Тимофеев В | 0.5h | 0.5h |
| 3483 | 12.5.29.3 | слив конденсат с осушителя | 30min | 2026-08-20 09:00 A | 2026-08-20 09:30 A | 100% |  |  | start no earlier than 2026-08-20 09:00 | Дедов В | 0.5h | 0.5h |
| 3484 | 12.5.29.4 | продувка фильтров | 30min | 2026-08-29 09:00 A | 2026-08-31 09:30 A | 100% |  |  | start no earlier than 2026-08-29 09:00 | Макаревич А | 0.5h | 0.5h |
| 3485 | 12.5.29.5 | слив конденсат с осушителя | 30min | 2026-08-29 09:00 A | 2026-08-31 09:30 A | 100% |  |  | start no earlier than 2026-08-29 09:00 | Макаревич А | 0.5h | 0.5h |
| 3486 | 12.5.29.6 | слив конденсат с осушителя | 30min | 2026-08-29 09:00 A | 2026-08-31 09:30 A | 100% |  |  | start no earlier than 2026-08-29 09:00 | Макаревич А | 0.5h | 0.5h |
| 3487 | 12.5.29.7 | слив конденсат с осушителя | 30min | 2026-09-03 09:00 A | 2026-09-03 09:30 A | 100% |  |  | start no earlier than 2026-09-03 09:00 | Макаревич А | 0.5h | 0.5h |
| 3488 | 12.5.29.8 | продувка фильтров (дать размеры фильтра) | 30min | 2026-09-17 09:00 A | 2026-09-17 09:30 A | 100% |  |  | start no earlier than 2026-09-17 09:00 | Труфанов А | 0.5h | 0.5h |
| 3489 | 12.5.29.9 | вызвать сервисного инженера на ТО | 15min | 2026-11-13 09:00 A | 2026-11-13 09:15 A | 100% |  |  | start no earlier than 2026-11-16 09:00 | Зорькин В; Труфанов А | 0.5h | 0.5h |
| 3490 | 12.5.30 | **насосная станция 2 цех** | 130.06d | 2026-03-05 09:00 A | 2026-09-03 09:30 A | 100% |  |  |  |  | 1h | 1h |
| 3491 | 12.5.30.1 | замена фильтров | 30min | 2026-03-05 09:00 A | 2026-03-05 09:30 A | 100% |  |  | start no earlier than 2026-03-05 09:00 | Тимофеев В | 0.5h | 0.5h |
| 3492 | 12.5.30.2 | замена фильтров | 30min | 2026-09-03 09:00 A | 2026-09-03 09:30 A | 100% |  |  | start no earlier than 2026-09-03 09:00 | Труфанов А | 0.5h | 0.5h |
| 3493 | 12.5.31 | **приточнго-вытяжная венгтиляция и смесительный узел** | 127.06d | 2026-04-16 09:00 A | 2026-10-01 09:30 A | 100% |  |  |  |  | 2.5h | 2.5h |
| 3494 | 12.5.31.1 | замена фильтра | 1h | 2026-04-16 09:00 A | 2026-04-16 10:00 A | 100% |  |  | start no earlier than 2026-04-16 09:00 | Труфанов А; Некрасов А | 2h | 2h |
| 3495 | 12.5.31.2 | Осмотр состояния фильтра приточки/замена | 30min | 2026-10-01 09:00 A | 2026-10-01 09:30 A | 100% |  |  | start no earlier than 2026-10-01 09:00 | Труфанов А | 0.5h | 0.5h |
| 3496 | 12.5.32 | **кондиционер 1** | 670.04d? | 2024-04-18 09:00 A | 2026-10-30 09:20 | 97% | 19.71d? | 97.55d |  | ТО | 5070.67h | 4827.32h |
| 3497 | 12.5.32.1 | чистка фильтра | 1h | 2024-04-18 09:00 A | 2024-04-18 10:00 A | 100% |  |  | start no earlier than 2024-04-18 08:00 | Черепанов И; Некрасов А | 2h | 2h |
| 3498 | 12.5.32.2 | чистка фильтра | 20min | 2026-03-05 09:00 A | 2026-03-05 09:20 A | 100% |  |  | start no earlier than 2026-03-05 09:00 | Некрасов А; Бундин В | 0.67h | 0.67h |
| 3499 | 12.5.32.3 | чистка фильтров | 1d? | 2026-06-25 09:00 A | 2026-06-25 18:00 A | 100% |  |  | start no earlier than 2026-06-25 09:00 | Тимофеев В; Дедов В | 16h | 16h |
| 3500 | 12.5.32.4 | чистка фильтров | 20min | 2026-07-14 09:00 A | 2026-07-14 09:20 A | 100% |  |  | start no earlier than 2026-07-14 09:00 | Некрасов А; Бундин В | 0.67h | 0.67h |
| 3501 | 12.5.32.5 | чистка фильтров | 20min | 2026-08-13 09:00 A | 2026-08-13 09:20 A | 100% |  |  | start no earlier than 2026-08-13 09:00 | Некрасов А; Труфанов А | 0.67h | 0.67h |
| 3502 | 12.5.32.6 | чистка фильтров | 20min | 2026-09-03 09:00 A | 2026-09-03 09:20 A | 100% |  |  | start no earlier than 2026-09-03 09:00 | Некрасов А; Тимофеев В | 0.67h | 0.67h |
| 3503 | 12.5.32.7 | чистка фильтров | 20min | 2026-09-17 09:00 A | 2026-09-17 09:20 A | 100% |  |  | start no earlier than 2026-09-17 09:00 | Тимофеев В; Бобренок В | 0.67h | 0.67h |
| 3504 | 12.5.32.8 | чистка фильтров | 20min | 2026-09-24 09:00 A | 2026-09-24 09:20 A | 100% |  |  | start no earlier than 2026-09-24 09:00 | Тимофеев В; Бундин В | 0.67h | 0.67h |
| 3505 | 12.5.32.9 | чистка фильтров | 20min | 2026-10-30 09:00 | 2026-10-30 09:20 |  |  | 97.55d | start no earlier than 2026-10-30 09:00 | Тимофеев В | 0.33h |  |

| ID | WBS | Task | Type | Duration | Start | Finish | Complete | Remaining | Total slack | Constraint | Resources | Work | Actual work |
| --- | --- | --- | --- | --- | --- | --- | --- | --- | --- | --- | --- | --- | --- |
| 3506 | 12.5.33 | **кондиционер 2** |  | 670.04d? | 2024-04-18 09:00 A | 2026-10-30 09:20 | 97% | 18.87d? | 97.55d |  | ТО | 5071.83h | 4983.33h |
| 3507 | 12.5.33.1 | чистка фильтров |  | 1d? | 2026-06-25 09:00 A | 2026-06-25 18:00 A | 100% |  |  | start no earlier than 2026-06-25 09:00 | Тимофеев В; Дедов В | 16h | 16h |
| 3508 | 12.5.33.2 | чистка фильтра |  | 1h | 2024-04-18 09:00 A | 2024-04-18 10:00 A | 100% |  |  | start no earlier than 2024-04-18 08:00 | Черепанов И; Некрасов А | 2h | 2h |
| 3509 | 12.5.33.3 | чистка фильтра |  | 20min | 2026-03-05 09:00 A | 2026-03-05 09:20 A | 100% |  |  | start no earlier than 2026-03-05 09:00 | Некрасов А; Бундин В | 0.67h | 0.67h |
| 3510 | 12.5.33.4 | чистка фильтров |  | 20min | 2026-07-14 09:00 A | 2026-07-14 09:20 A | 100% |  |  | start no earlier than 2026-07-14 09:00 | Некрасов А; Бундин В | 0.67h | 0.67h |
| 3511 | 12.5.33.5 | чистка фильтров |  | 20min | 2026-08-13 09:00 A | 2026-08-13 09:20 A | 100% |  |  | start no earlier than 2026-08-13 09:00 | Некрасов А; Труфанов А | 0.67h | 0.67h |
| 3512 | 12.5.33.6 | чистка фильтров |  | 20min | 2026-08-13 09:00 A | 2026-08-13 09:20 A | 100% |  |  | start no earlier than 2026-08-13 09:00 | Некрасов А; Труфанов А | 0.67h | 0.67h |
| 3513 | 12.5.33.7 | чистка фильтров |  | 20min | 2026-09-03 09:00 A | 2026-09-03 09:20 A | 100% |  |  | start no earlier than 2026-09-03 09:00 | Некрасов А; Тимофеев В | 0.67h | 0.67h |
| 3514 | 12.5.33.8 | чистка фильтров |  | 30min | 2026-09-17 09:00 A | 2026-09-17 09:30 A | 100% |  |  | start no earlier than 2026-09-17 09:00 | Тимофеев В; Бобренок В | 1h | 1h |
| 3515 | 12.5.33.9 | чистка фильтров |  | 20min | 2026-09-24 09:00 A | 2026-09-24 09:20 A | 100% |  |  | start no earlier than 2026-09-24 09:00 | Тимофеев В; Бундин В | 0.67h | 0.67h |
| 3516 | 12.5.33.10 | чистка фильтров |  | 20min | 2026-10-30 09:00 | 2026-10-30 09:20 |  |  | 97.55d | start no earlier than 2026-10-30 09:00 | Тимофеев В | 0.33h |  |
| 3517 | 12.5.34 | **кондиционер 3** |  | 180.04d | 2026-03-05 09:00 A | 2026-10-30 09:20 | 88% | 22.51d | 97.55d |  |  | 5h | 4.67h |
| 3518 | 12.5.34.1 | чистка фильтра |  | 20min | 2026-03-05 09:00 A | 2026-03-05 09:20 A | 100% |  |  | start no earlier than 2026-03-05 09:00 | Некрасов А; Бундин В | 0.67h | 0.67h |
| 3519 | 12.5.34.2 | чистка фильтров |  | 20min | 2026-07-14 09:00 A | 2026-07-14 09:20 A | 100% |  |  | start no earlier than 2026-07-14 09:00 | Некрасов А; Бундин В | 0.67h | 0.67h |
| 3520 | 12.5.34.3 | чистка фильтров |  | 20min | 2026-08-13 09:00 A | 2026-08-13 09:20 A | 100% |  |  | start no earlier than 2026-08-13 09:00 | Некрасов А; Труфанов А | 0.67h | 0.67h |
| 3521 | 12.5.34.4 | чистка фильтров |  | 20min | 2026-08-13 09:00 A | 2026-08-13 09:20 A | 100% |  |  | start no earlier than 2026-08-13 09:00 | Некрасов А; Труфанов А | 0.67h | 0.67h |
| 3522 | 12.5.34.5 | чистка фильтров |  | 20min | 2026-09-03 09:00 A | 2026-09-03 09:20 A | 100% |  |  | start no earlier than 2026-09-03 09:00 | Некрасов А; Тимофеев В | 0.67h | 0.67h |
| 3523 | 12.5.34.6 | чистка фильтров |  | 20min | 2026-09-17 09:00 A | 2026-09-17 09:20 A | 100% |  |  | start no earlier than 2026-09-17 09:00 | Тимофеев В; Бобренок В | 0.67h | 0.67h |
| 3524 | 12.5.34.7 | чистка фильтров |  | 20min | 2026-09-24 09:00 A | 2026-09-24 09:20 A | 100% |  |  | start no earlier than 2026-09-24 09:00 | Тимофеев В; Бундин В | 0.67h | 0.67h |
| 3525 | 12.5.34.8 | чистка фильтров |  | 20min | 2026-10-30 09:00 | 2026-10-30 09:20 |  |  | 97.55d | start no earlier than 2026-10-30 09:00 | Тимофеев В | 0.33h |  |
| 3526 | 12.5.35 | **электроштабелер** |  | 2.38d | 2026-08-11 09:00 A | 2026-08-13 12:00 A | 100% |  |  |  | ТО | 22.25h | 22.25h |
| 3527 | 12.5.35.1 | **хруст в колесе устранить** |  | 2.38d | 2026-08-11 09:00 A | 2026-08-13 12:00 A | 100% |  |  |  |  | 3.25h | 3.25h |
| 3528 | 12.5.35.1.1 | хруст с правой стороны штабелера- ревизия, скорее всего подшипник (экструдер). Осмотр, доложить | manual | 15min | 2026-08-11 09:00 A | 2026-08-11 09:15 A | 100% |  |  | start no earlier than 2026-08-11 09:00 | Тимофеев В | 0.25h | 0.25h |
| 3529 | 12.5.35.1.2 | ремонт замена подшипник колесо штабелер |  | 3h | 2026-08-13 09:00 A | 2026-08-13 12:00 A | 100% |  |  | start no earlier than 2026-08-13 09:00 | Тимофеев В | 3h | 3h |

| ID | WBS | Task | Type | Duration | Start | Finish | Complete | Remaining | Total slack | Constraint | Resources | Work | Actual work |
| --- | --- | --- | --- | --- | --- | --- | --- | --- | --- | --- | --- | --- | --- |
| 3530 | 12.5.36 | **Лаборатория** |  | 0.25d | 2026-09-18 09:00 A | 2026-09-18 11:00 A | 100% |  |  |  |  | 2h | 2h |
| 3531 | 12.5.36.1 | Прочистка дистилятора/ТО, очистка накипи, инструкция смотреть в лаборатории |  | 2h | 2026-09-18 09:00 A | 2026-09-18 11:00 A | 100% |  |  | start no earlier than 2026-09-18 09:00 | Бобренок В | 2h | 2h |
| 3532 | 12.6 | **3 цех** |  | 1d? | 2023-12-28 09:00 | 2023-12-28 18:00 |  |  | 846.59d |  | ТО | 88h |  |
| 3533 | 12.6.1 | **электрооборудование** |  | 1d? | 2023-12-28 09:00 | 2023-12-28 18:00 |  |  | 846.59d |  | ТО | 48h |  |
| 3534 | 12.6.1.1 | ВРУ7 |  | 1d? | 2023-12-28 09:00 | 2023-12-28 18:00 |  |  | 846.59d | start no earlier than 2023-12-28 09:00 | ТО | 8h |  |
| 3535 | 12.6.1.2 | ОЩР |  | 1d? | 2023-12-28 09:00 | 2023-12-28 18:00 |  |  | 846.59d | start no earlier than 2023-12-28 09:00 | ТО | 8h |  |
| 3536 | 12.6.1.3 | электрокотел 4 - 3 цех |  | 1d? | 2023-12-28 09:00 | 2023-12-28 18:00 |  |  | 846.59d | start no earlier than 2023-12-28 09:00 | ТО | 8h |  |
| 3537 | 12.6.1.4 | электрокотел 5 - 3 цех |  | 1d? | 2023-12-28 09:00 | 2023-12-28 18:00 |  |  | 846.59d | start no earlier than 2023-12-28 09:00 | ТО | 8h |  |
| 3538 | 12.6.1.5 | электрокотел 6 - 3 цех |  | 1d? | 2023-12-28 09:00 | 2023-12-28 18:00 |  |  | 846.59d | start no earlier than 2023-12-28 09:00 | ТО | 8h |  |
| 3539 | 12.6.2 | электроштабелер 1 |  | 1d? | 2023-12-28 09:00 | 2023-12-28 18:00 |  |  | 846.59d | start no earlier than 2023-12-28 09:00 | ТО | 8h |  |
| 3540 | 12.6.3 | электроштабелер 2 |  | 1d? | 2023-12-28 09:00 | 2023-12-28 18:00 |  |  | 846.59d | start no earlier than 2023-12-28 09:00 | ТО | 8h |  |
| 3541 | 12.6.4 | вилочный погрузчик 1 |  | 1d? | 2023-12-28 09:00 | 2023-12-28 18:00 |  |  | 846.59d | start no earlier than 2023-12-28 09:00 | ТО | 8h |  |
| 3542 | 12.6.5 | вилочный погрузчик 2 |  | 1d? | 2023-12-28 09:00 | 2023-12-28 18:00 |  |  | 846.59d | start no earlier than 2023-12-28 09:00 | ТО | 8h |  |
| 3543 | 12.7 | **5 цех** |  | 755.02d? | 2023-12-28 09:00 A | 2026-11-06 09:10 | 10% | 678.35d? | 92.57d |  | ТО | 7084.67h | 906.67h |
| 3544 | 12.7.1 | **насосная станция 5 цех** |  | 0.02d | 2026-11-06 09:00 | 2026-11-06 09:10 |  |  | 92.57d |  | ТО | 0.5h |  |
| 3545 | 12.7.1.1 | Осмотр |  | 10min | 2026-11-06 09:00 | 2026-11-06 09:10 |  |  | 92.57d | start no earlier than 2026-11-06 08:00 | Макаревич А; Николаев | 0.33h |  |
| 3546 | 12.7.2 | растариватель |  | 1d? | 2023-12-28 09:00 | 2023-12-28 18:00 |  |  | 846.59d | start no earlier than 2023-12-28 09:00 | ТО | 8h |  |
| 3547 | 12.7.3 | **шнек 1 растариватель-смеситель** |  | 65.25d | 2026-04-03 09:00 A | 2026-07-03 11:00 | 67% | 21.75d | 0d |  | ТО | 492h | 342.67h |
| 3548 | 12.7.3.1 | замена подшипник нижний | manual | 2h | 2026-04-03 09:00 A | 2026-04-03 11:00 A | 100% |  |  |  | Некрасов А; Труфанов А | 4h | 4h |
| 3549 | 12.7.3.2 | ревизия подшипник верхний - не снимается.ревизия - все ок, мазка | manual | 2h | 2026-04-03 09:00 A | 2026-04-03 11:00 A | 100% |  |  |  | Некрасов А; Труфанов А | 4h | 4h |
| 3550 | 12.7.3.3 | осмотр износа, смазка | manual | 2h | 2026-07-03 09:00 | 2026-07-03 11:00 |  |  |  |  | Тимофеев В | 2h |  |
| 3551 | 12.7.4 | смеситель СМ1500 |  | 1d? | 2023-12-28 09:00 | 2023-12-28 18:00 |  |  | 846.59d | start no earlier than 2023-12-28 09:00 | ТО | 8h |  |
| 3552 | 12.7.5 | **шнек 2 смеситель -дробилка** |  | 68.5d? | 2026-03-24 09:00 A | 2026-06-26 13:00 | 67% | 22.83d? | 196.09d |  | ТО | 440h | 64h |
| 3553 | 12.7.5.1 | ремонт вала, т.к съело посадку на верх подшипник |  | 1d? | 2026-03-24 09:00 A | 2026-03-24 18:00 A | 100% |  |  | start no earlier than 2026-03-24 09:00 | Труфанов А; Некрасов А | 16h | 16h |
| 3554 | 12.7.5.2 | осмотр износа |  | 4h | 2026-06-26 09:00 | 2026-06-26 13:00 |  |  | 196.09d | start no earlier than 2026-06-26 09:00 | Тимофеев В | 4h |  |

| ID | WBS | Task | Duration | Start | Finish | Total slack | Constraint | Resources | Work |
| --- | --- | --- | --- | --- | --- | --- | --- | --- | --- |
| 3555 | 12.7.6 | **дробилка ДМС3** | 0.5d | 2026-05-11 09:00 | 2026-05-11 13:00 | 230.09d |  | ТО | 8h |
| 3556 | 12.7.6.1 | замена подшипник буксы сторона мотора | 4h | 2026-05-11 09:00 | 2026-05-11 13:00 | 230.09d | start no earlier than 2026-05-10 09:00 | Бундин В | 4h |
| 3557 | 12.7.7 | шнек 3 дробилка-накопитель | 1d? | 2023-12-28 09:00 | 2023-12-28 18:00 | 846.59d | start no earlier than 2023-12-28 09:00 | ТО | 8h |
| 3558 | 12.7.8 | дробилка 11квт | 1d? | 2023-12-28 09:00 | 2023-12-28 18:00 | 846.59d | start no earlier than 2023-12-28 09:00 | ТО | 8h |
| 3559 | 12.7.9 | дробилка 7,5квт | 1d? | 2023-12-28 09:00 | 2023-12-28 18:00 | 846.59d | start no earlier than 2023-12-28 09:00 | ТО | 8h |
| 3560 | 12.7.10 | вибросито А | 1d? | 2023-12-28 09:00 | 2023-12-28 18:00 | 846.59d | start no earlier than 2023-12-28 09:00 | ТО | 8h |
| 3561 | 12.7.11 | вибросито Б | 1d? | 2023-12-28 09:00 | 2023-12-28 18:00 | 846.59d | start no earlier than 2023-12-28 09:00 | ТО | 8h |
| 3562 | 12.7.12 | **электрооборудование** | 1d? | 2023-12-28 09:00 | 2023-12-28 18:00 | 846.59d |  | ТО | 48h |
| 3563 | 12.7.12.1 | ВРУ7 | 1d? | 2023-12-28 09:00 | 2023-12-28 18:00 | 846.59d | start no earlier than 2023-12-28 09:00 | ТО | 8h |
| 3564 | 12.7.12.2 | ЩР2 | 1d? | 2023-12-28 09:00 | 2023-12-28 18:00 | 846.59d | start no earlier than 2023-12-28 09:00 | ТО | 8h |
| 3565 | 12.7.12.3 | котельная газовая 5 цех | 1d? | 2023-12-28 09:00 | 2023-12-28 18:00 | 846.59d | start no earlier than 2023-12-28 09:00 | ТО | 8h |
| 3566 | 12.7.12.4 | бойлеры душ | 1d? | 2023-12-28 09:00 | 2023-12-28 18:00 | 846.59d | start no earlier than 2023-12-28 09:00 | ТО | 8h |
| 3567 | 12.7.12.5 | вентилятор вытяжной в дробилке | 1d? | 2023-12-28 09:00 | 2023-12-28 18:00 | 846.59d | start no earlier than 2023-12-28 09:00 | ТО | 8h |
| 3568 | 12.8 | **адм корпус** | 1d? | 2023-12-28 09:00 | 2023-12-28 18:00 | 846.59d |  | ТО | 24h |
| 3569 | 12.8.1 | бойлер туалет | 1d? | 2023-12-28 09:00 | 2023-12-28 18:00 | 846.59d | start no earlier than 2023-12-28 09:00 | ТО | 8h |
| 3570 | 12.8.2 | ОЩР | 1d? | 2023-12-28 09:00 | 2023-12-28 18:00 | 846.59d | start no earlier than 2023-12-28 09:00 | ТО | 8h |
| 3571 | 12.9 | **склад упаковки** | 1d? | 2023-12-28 09:00 | 2023-12-28 18:00 | 846.59d |  | ТО | 32h |
| 3572 | 12.9.1 | **электрооборудование** | 1d? | 2023-12-28 09:00 | 2023-12-28 18:00 | 846.59d |  | ТО | 24h |
| 3573 | 12.9.1.1 | ЩО и ЩР | 1d? | 2023-12-28 09:00 | 2023-12-28 18:00 | 846.59d | start no earlier than 2023-12-28 09:00 | ТО | 8h |
| 3574 | 12.9.1.2 | санитарный насос | 1d? | 2023-12-28 09:00 | 2023-12-28 18:00 | 846.59d | start no earlier than 2023-12-28 09:00 | ТО | 8h |
| 3575 | 12.10 | **цех наполнителей** | 1d? | 2023-12-28 09:00 | 2023-12-28 18:00 | 846.59d |  | ТО | 56h |
| 3576 | 12.10.1 | ЩО и ЩР | 1d? | 2023-12-28 09:00 | 2023-12-28 18:00 | 846.59d | start no earlier than 2023-12-28 09:00 | ТО | 8h |
| 3577 | 12.10.2 | комппрессор | 1d? | 2023-12-28 09:00 | 2023-12-28 18:00 | 846.59d | start no earlier than 2023-12-28 09:00 | ТО | 8h |
| 3578 | 12.10.3 | конвейер загрузки | 1d? | 2023-12-28 09:00 | 2023-12-28 18:00 | 846.59d | start no earlier than 2023-12-28 09:00 | ТО | 8h |
| 3579 | 12.10.4 | дозатор НОТИС | 1d? | 2023-12-28 09:00 | 2023-12-28 18:00 | 846.59d | start no earlier than 2023-12-28 09:00 | ТО | 8h |
| 3580 | 12.10.5 | запайщик | 1d? | 2023-12-28 09:00 | 2023-12-28 18:00 | 846.59d | start no earlier than 2023-12-28 09:00 | ТО | 8h |
| 3581 | 12.10.6 | вилочный погрузчик тойота | 1d? | 2023-12-28 09:00 | 2023-12-28 18:00 | 846.59d | start no earlier than 2023-12-28 09:00 | ТО | 8h |
| 3582 | 12.11 | Установка розетки под литийионный аккумклятор 3-х фазный, установить рядом с существующей ВРУ | 2h | 2026-07-08 09:00 | 2026-07-08 11:00 | 188.34d | start no earlier than 2026-07-08 08:00 | Бундин В | 2h |

| ID | WBS | Task | Type | Duration | Start | Finish | Predecessors | Complete | Remaining | Total slack | Constraint | Resources | Work | Actual work |
| --- | --- | --- | --- | --- | --- | --- | --- | --- | --- | --- | --- | --- | --- | --- |
| 3583 | 13 | **синий склад** |  | 151.38d | 2026-05-07 09:00 A | 2026-11-17 12:00 |  | 45% | 83.07d | 81.22d |  |  | 52h | 21.5h |
| 3584 | 13.1 | Маркировка оборудования по списку с кладовщиком, взять красные стикеры и пометить |  | 3h | 2026-11-17 09:00 | 2026-11-17 12:00 |  |  |  | 81.22d | start no earlier than 2026-11-17 09:00 | Тимофеев В | 3h |  |
| 3585 | 13.2 | уборка зона металла / склад ЗИП |  | 4h | 2026-11-10 09:00 | 2026-11-10 13:00 |  |  |  | 88.09d | start no earlier than 2026-11-10 09:00 | Бундин В; Тимофеев В | 8h |  |
| 3586 | 13.3 | Замерить ширину запаечных губок на теко 1,5, написать информацию в мах |  | 30min | 2026-10-30 09:00 | 2026-10-30 09:30 |  |  |  | 97.53d | start no earlier than 2026-10-30 09:00 | Тимофеев В | 0.5h |  |
| 3587 | 13.4 | Перевезти лист металла на пандус 1 цех через карщика сразу на входе, запинаются |  | 1h | 2026-10-27 09:00 A | 2026-10-27 10:00 A |  | 100% |  |  | start no earlier than 2026-10-27 08:00 | Бундин В | 1h | 1h |
| 3588 | 13.5 | **ЗАМЕНА СВЕТИЛЬНИКОВ** |  | 7.56d | 2026-10-26 09:00 A | 2026-11-04 14:30 |  | 53% | 3.56d | 94.03d |  |  | 15.5h | 7.5h |
| 3589 | 13.5.1 | сборка леса по наряд допуску / перенос от офиса |  | 3h | 2026-10-26 09:00 A | 2026-10-26 12:00 A |  | 100% |  |  | start no earlier than 2026-10-26 09:00 | Труфанов А; Некрасов А | 6h | 6h |
| 3590 | 13.5.2 | определить тип лампы |  | 1h | 2026-10-26 12:00 A | 2026-10-26 13:00 A | 3589 | 100% |  |  | start no earlier than 2026-10-19 08:00 | Труфанов А | 1h | 1h |
| 3591 | 13.5.3 | заявка на лампы |  | 15min | 2026-10-26 14:00 A | 2026-10-26 14:15 A | 3590 | 100% |  |  | start no earlier than 2026-10-19 08:00 | Зорькин В | 0.25h | 0.25h |
| 3592 | 13.5.4 | контроль доставка |  | 15min | 2026-11-04 14:15 A | 2026-11-04 14:30 A | 3591FS+7d | 100% |  |  | start no earlier than 2026-10-19 08:00 | Зорькин В | 0.25h | 0.25h |
| 3593 | 13.5.5 | замена |  | 4h | 2026-11-03 09:00 | 2026-11-03 13:00 |  |  |  | 95.09d | start no earlier than 2026-11-03 09:00 | Труфанов А; Некрасов А | 8h |  |
| 3594 | 13.6 | Найти и подготовить к транспортировке оснастку для бестрома со стойкой для висения и для штабелера удлинитель изготовленный со швелеров |  | 1h | 2026-10-15 09:00 A | 2026-10-15 10:00 A |  | 100% |  |  | start no earlier than 2026-10-15 09:00 | Труфанов А | 1h | 1h |
| 3595 | 13.7 | установить на место крышки вентиляторов |  | 1h | 2026-08-17 09:00 A | 2026-08-17 10:00 A |  | 100% |  |  | start no earlier than 2026-08-17 09:00 | Бобренок В | 1h | 1h |
| 3596 | 13.8 | Монтаж доп освещения |  | 2h | 2026-09-26 09:00 A | 2026-09-26 11:00 A |  | 100% |  |  | start no earlier than 2026-09-26 09:00 | Бобренок В | 2h | 2h |
| 3597 | 13.9 | монтаж включателя света с улицы, возле вход. Двери |  | 3h | 2026-09-30 09:00 | 2026-09-30 12:00 |  |  |  | 121.22d | start no earlier than 2026-09-30 09:00 | Бобренок В | 3h |  |
| 3598 | 13.10 | расширить проем вверху для проезда погрузчиков, врезаются | manual | 1d | 2026-09-21 09:00 | 2026-09-21 18:00 |  |  |  |  | start no earlier than 2026-09-21 09:00 | Олег | 8h |  |
| 3599 | 13.11 | замерить диаметр крыльчатки двигателя экструдера, инфу передать мне |  | 1h | 2026-06-13 09:00 A | 2026-06-15 10:00 A |  | 100% |  |  | start no earlier than 2026-06-13 09:00 | Бобренок В | 1h | 1h |
| 3600 | 13.12 | найти амперметры 30А и 150А (сказать кол-во) |  | 2h | 2026-06-10 09:00 A | 2026-06-10 11:00 A |  | 100% |  |  | start no earlier than 2026-06-10 09:00 | Труфанов А | 2h | 2h |
| 3601 | 13.13 | Навести порядок на входе в синий склад |  | 2h | 2026-07-23 09:00 A | 2026-07-23 11:00 A |  | 100% |  |  | start no earlier than 2026-07-24 09:00 | Бундин В | 2h | 2h |
| 3602 | 13.14 | проверить и подписать все материалы в синем складе с Алексеем |  | 4h | 2026-05-07 09:00 A | 2026-05-07 13:00 A |  | 100% |  |  | start no earlier than 2026-05-07 09:00 | Шуранов Ю | 4h | 4h |
| 3603 | 14 | **хим лаб** |  | 652.25d? | 2024-01-11 08:00 A | 2026-07-13 11:00 A |  | 100% |  |  |  |  | 71.75h | 71.75h |
| 3604 | 14.1 | замена кран РР |  | 2h | 2026-07-13 09:00 A | 2026-07-13 11:00 A |  | 100% |  |  | start no earlier than 2026-07-13 09:00 | Тимофеев В | 2h | 2h |
| 3605 | 14.2 | ремонт термоконтроллера - замена реле / перепаять с сзоны ALARM |  | 1h | 2026-06-09 09:00 A | 2026-06-09 10:00 A |  | 100% |  |  | start no earlier than 2026-06-09 09:00 | Дедов В | 1h | 1h |
| 3606 | 14.3 | **усилить питание хим лаб, что бы не отключался автомат при вкл быт приборов** |  | 0.12d | 2026-05-29 09:00 A | 2026-05-29 10:00 A |  | 100% |  |  |  |  | 2h | 2h |
| 3607 | 14.3.1 | переключение питания хим лаб на отдельный ШУ |  | 1h | 2026-05-29 09:00 A | 2026-05-29 10:00 A |  | 100% |  |  | start no earlier than 2026-05-29 09:00 | Некрасов А; Бобренок В | 2h | 2h |

| ID | WBS | Task | Duration | Start | Finish | Predecessors | Complete | Constraint | Resources | Work | Actual work |
| --- | --- | --- | --- | --- | --- | --- | --- | --- | --- | --- | --- |
| 3608 | 14.4 | **ремонт бойлер вода - ПУН** | 10.25d | 2026-05-14 08:00 A | 2026-05-28 11:00 A |  | 100% |  |  | 4.75h | 4.75h |
| 3609 | 14.4.1 | замена из ЗИП | 1h | 2026-05-14 08:00 A | 2026-05-14 10:00 A |  | 100% | start no earlier than 2026-05-14 08:00 | Тимофеев В | 1h | 1h |
| 3610 | 14.4.2 | диагностика неисправности. Бойлер в слесарне | 1h | 2026-05-14 08:00 A | 2026-05-14 10:00 A |  | 100% | start no earlier than 2026-05-14 08:00 | Бобренок В | 1h | 1h |
| 3611 | 14.4.3 | заявка предохарнитель | 30min | 2026-05-15 09:00 A | 2026-05-15 09:30 A | 3610 | 100% | start no earlier than 2026-05-15 08:00 | Шуранов Ю | 0.5h | 0.5h |
| 3612 | 14.4.4 | контроль поставки | 15min | 2026-05-22 09:30 A | 2026-05-22 09:45 A | 3611FS+7d | 100% | start no earlier than 2026-05-15 08:00 | Шуранов Ю | 0.25h | 0.25h |
| 3613 | 14.4.5 | заменить на бойлере в слесарке термостата WY-S37A | 2h | 2026-05-28 09:00 A | 2026-05-28 11:00 A |  | 100% | start no earlier than 2026-05-28 09:00 | Тимофеев В | 2h | 2h |
| 3614 | 14.5 | **ремонт дистилятор** | 31d? | 2026-04-27 09:00 A | 2026-06-08 18:00 A |  | 100% |  |  | 17h | 17h |
| 3615 | 14.5.1 | заявка тен | 1h | 2026-04-27 09:00 A | 2026-04-27 10:00 A |  | 100% | start no earlier than 2026-04-27 09:00 | Шуранов Ю | 1h | 1h |
| 3616 | 14.5.2 | доставка | 1d? | 2026-06-05 09:00 A | 2026-06-05 18:00 A | 3615 | 100% | finish no earlier than 2026-06-05 18:00 | Карабанов | 8h | 8h |
| 3617 | 14.5.3 | замена. Больше не выбиывает | 1d? | 2026-06-05 18:00 A | 2026-06-08 18:00 A | 3616 | 100% | start no earlier than 2026-05-13 09:00 | Тимофеев В | 8h | 8h |
| 3618 | 14.6 | **ремонт АКВ_шесть** | 30d? | 2026-04-27 09:00 A | 2026-06-05 18:00 A |  | 100% |  |  | 11h | 11h |
| 3619 | 14.6.1 | заявка тен | 1h | 2026-04-27 09:00 A | 2026-04-27 10:00 A |  | 100% | start no earlier than 2026-04-27 09:00 | Шуранов Ю | 1h | 1h |
| 3620 | 14.6.2 | доставка | 1d? | 2026-06-05 09:00 A | 2026-06-05 18:00 A | 3619 | 100% | finish no earlier than 2026-06-05 18:00 | Карабанов | 8h | 8h |
| 3621 | 14.6.3 | замена | 2h | 2026-05-24 09:00 A | 2026-05-25 11:00 A |  | 100% | start no earlier than 2026-05-24 09:00 | Дедов В | 2h | 2h |
| 3622 | 14.7 | проверить прибор | 1d? | 2026-05-06 09:00 A | 2026-05-06 18:00 A |  | 100% | start no earlier than 2026-05-06 08:00 | Шуранов Ю | 8h | 8h |
| 3623 | 14.8 | датчик температуры ?? Заявка | 1d? | 2026-04-27 09:00 A | 2026-04-27 18:00 A |  | 100% | start no earlier than 2026-04-27 08:00 | Шуранов Ю | 8h | 8h |
| 3624 | 14.9 | дистилятор отключается ?? Заявка | 1d? | 2026-04-27 09:00 A | 2026-04-27 18:00 A |  | 100% | start no earlier than 2026-04-27 08:00 | Шуранов Ю | 8h | 8h |
| 3625 | 14.10 | перенос старый прибор в архив 5ц | 30min | 2026-04-20 09:00 A | 2026-04-20 09:30 A |  | 100% | start no earlier than 2026-04-20 08:00 | Кладовщики | 0.5h | 0.5h |
| 3626 | 14.11 | замена 2 вентилятора | 4h | 2024-01-16 08:00 A | 2024-01-16 13:00 A |  | 100% | start no earlier than 2024-01-16 08:00 | Бобренок В | 4h | 4h |
| 3627 | 14.12 | ремонт соленоид | 2h | 2024-01-16 08:00 A | 2024-01-16 11:00 A |  | 100% | start no earlier than 2024-01-16 08:00 | Тимофеев В | 2h | 2h |
| 3628 | 14.13 | ремонт вытяжка №2 диагностика вентилятор | 30min | 2024-01-11 08:00 A | 2024-01-11 09:30 A |  | 100% | start no earlier than 2024-01-11 08:00 | Дедов В | 0.5h | 0.5h |
| 3629 | 14.14 | замена насос " агрегат | 1h | 2024-01-11 08:00 A | 2024-01-11 10:00 A |  | 100% | start no earlier than 2024-01-11 08:00 | Дедов В | 1h | 1h |
| 3630 | 14.15 | замена тен по доставке | 2h | 2026-03-17 09:00 A | 2026-03-17 11:00 A |  | 100% | start no earlier than 2026-03-17 09:00 | Макаревич А | 2h | 2h |
| 3631 | 15 | **цех наполнителей** | 194.12d | 2025-07-14 09:00 A | 2026-04-10 10:00 A |  | 100% |  |  | 10h | 10h |
| 3632 | 15.1 | взять со склада АКБ и клеммы заменить на погрузчике, старый АКБ отдать на 2 этаж склад | 1h | 2026-04-10 09:00 A | 2026-04-10 10:00 A |  | 100% | start no earlier than 2026-04-10 09:00 | Тимофеев В | 1h | 1h |
| 3633 | 15.2 | поменять пневмоцилиндр на нотис | 1h | 2026-04-09 09:00 A | 2026-04-09 10:00 A |  | 100% | start no earlier than 2026-04-10 09:00 | Тимофеев В | 1h | 1h |
| 3634 | 15.3 | проверить дист. Воду в АКБ погрузчика | 1h | 2026-04-01 09:00 A | 2026-04-01 10:00 A |  | 100% | start no earlier than 2026-04-01 09:00 | Тимофеев В | 1h | 1h |
| 3635 | 15.4 | просверлить больше, нарезать резьбу для крепления стола запайщика, резьба сорвана | 1h | 2026-03-20 09:00 A | 2026-03-20 10:00 A |  | 100% | start no earlier than 2026-03-20 09:00 | Бундин В | 1h | 1h |
| 3636 | 15.5 | ремонт компрессор. Проверка конденсаторов/не запускается мотор. Ключь у кладовщиков | 4h | 2025-07-14 09:00 A | 2025-07-14 13:00 A |  | 100% | start no earlier than 2025-07-14 09:00 | Бобренок В | 4h | 4h |
| 3637 | 15.6 | ТО компрессор / конвейер / запайщик | 2h | 2026-03-09 09:00 A | 2026-03-09 11:00 A |  | 100% | start no earlier than 2026-03-09 09:00 | Тимофеев В | 2h | 2h |

| ID | WBS | Task | Duration | Start | Finish | Predecessors | Complete | Remaining | Total slack | Constraint | Resources | Work | Actual work |
| --- | --- | --- | --- | --- | --- | --- | --- | --- | --- | --- | --- | --- | --- |
| 3638 | 16 | **офис** | 944.25d? | 2023-03-10 09:00 A | 2026-10-12 11:00 |  | 97% | 26.27d? | 112.34d |  |  | 223.67h | 217.17h |
| 3639 | 16.1 | Кинуть времянку в серверную | 1h | 2026-10-02 09:00 A | 2026-10-02 10:00 A |  | 100% |  |  | start no earlier than 2026-10-02 09:00 | Некрасов А; Труфанов А | 2h | 2h |
| 3640 | 16.2 | монтаж полочка Курдюмова продожить | 1h | 2026-09-22 09:00 A | 2026-09-22 10:00 A |  | 100% |  |  | start no earlier than 2026-09-22 09:00 | Тимофеев В | 1h | 1h |
| 3641 | 16.3 | **Ремонт бойлера** | 13.25d? | 2026-09-08 09:00 A | 2026-09-21 11:00 A |  | 100% |  |  |  |  | 7h | 7h |
| 3642 | 16.3.1 | Заявка тэна | 1d? | 2026-09-08 09:00 A | 2026-09-08 18:00 A |  | 100% |  |  | start no earlier than 2026-09-08 09:00 |  |  |  |
| 3643 | 16.3.2 | контроль доставка | 1d? | 2026-09-14 09:00 A | 2026-09-14 18:00 A |  | 100% |  |  | start no earlier than 2026-09-14 09:00 |  |  |  |
| 3644 | 16.3.3 | Повесить отремонтированный бойлер обратно в офис - проверить работу | 1h | 2026-09-18 09:00 A | 2026-09-18 10:00 A |  | 100% |  |  | start no earlier than 2026-09-18 09:00 | Тимофеев В | 1h | 1h |
| 3645 | 16.3.4 | устранить утечку / монтаж | 2h | 2026-09-21 09:00 A | 2026-09-21 11:00 A |  | 100% |  |  | start no earlier than 2026-09-21 09:00 | Некрасов А; Труфанов А | 4h | 4h |
| 3646 | 16.3.5 | Замена ТЭНа на бойлере, который в слесарке, получить на складе упаковки | 1h | 2026-09-16 09:00 A | 2026-09-16 10:00 A |  | 100% |  |  | start no earlier than 2026-09-16 08:00 | Бундин В | 1h | 1h |
| 3647 | 16.3.6 | Дефектовка бойлера, лежит в слесарке, проверка ТЭНов и анода, показывал кз по тэнам | 1h | 2026-09-14 09:00 A | 2026-09-14 10:00 A |  | 100% |  |  | start no earlier than 2026-09-14 08:00 | Макаревич А | 1h | 1h |
| 3648 | 16.4 | демонтаж шурупы с наличиников | 10min | 2026-07-10 09:00 A | 2026-07-10 09:10 A |  | 100% |  |  | start no earlier than 2026-07-10 09:00 | Тимофеев В | 0.17h | 0.17h |
| 3649 | 16.5 | взять на складе ламочку Е27 малого размера и поменять в муж. Туалете и закрыть плафоном | 1h | 2026-06-29 09:00 A | 2026-06-29 10:00 A |  | 100% |  |  | start no earlier than 2026-06-29 09:00 | Тимофеев В | 1h | 1h |
| 3650 | 16.6 | собрать аккуратно стеллаж для Буслаева (стеллаж на складе у Веры, подписан буквами ГД, мечковская) | 3h | 2026-06-13 09:00 A | 2026-06-15 12:00 A |  | 100% |  |  | start no earlier than 2026-06-13 09:00 | Бобренок В | 3h | 3h |
| 3651 | 16.7 | посмотреть что с розеткой у Ширяевой в кабинете | 1h | 2026-06-22 09:00 A | 2026-06-22 10:00 A |  | 100% |  |  | start no earlier than 2026-06-22 09:00 | Тимофеев В | 1h | 1h |
| 3652 | 16.8 | бухгалтерия настройка язычка двери, что бы дверь закрывалась без усилия | 1h | 2026-05-28 09:00 A | 2026-05-28 10:00 A |  | 100% |  |  | start no earlier than 2026-05-28 09:00 | Тимофеев В | 1h | 1h |
| 3653 | 16.9 | **полка мебельная** | 25.12d | 2026-05-18 09:00 A | 2026-06-22 10:00 A |  | 100% |  |  |  |  | 1.5h | 1.5h |
| 3654 | 16.9.1 | заявка крепеж | 15min | 2026-05-18 09:00 A | 2026-05-18 09:15 A |  | 100% |  |  | start no earlier than 2026-05-18 09:00 | Шуранов Ю | 0.25h | 0.25h |
| 3655 | 16.9.2 | контроль доставка | 15min | 2026-05-27 09:15 A | 2026-05-27 09:30 A | 3654FS+7d | 100% |  |  | start no earlier than 2026-05-15 08:00 | Шуранов Ю | 0.25h | 0.25h |
| 3656 | 16.9.3 | крепеж полки у Юли в кабинете (уголки на складе) | 1h | 2026-06-22 09:00 A | 2026-06-22 10:00 A | 3655 | 100% |  |  | start no earlier than 2026-06-22 09:00 | Тимофеев В | 1h | 1h |
| 3657 | 16.10 | монтаж диплом на стену нач хим лаб | 30min | 2026-05-15 09:00 A | 2026-05-15 09:30 A |  | 100% |  |  | start no earlier than 2026-05-15 09:00 | Тимофеев В | 0.5h | 0.5h |
| 3658 | 16.11 | монтаж розеток в серверной продолжить | 2h | 2026-04-23 09:00 A | 2026-04-23 11:00 A |  | 100% |  |  | start no earlier than 2026-04-23 09:00 | Тимофеев В; Бобренок В | 4h | 4h |
| 3659 | 16.12 | ремонт стул в столовая, спинка | 1h | 2026-04-21 09:00 A | 2026-04-21 10:00 A |  | 100% |  |  | start no earlier than 2026-04-21 09:00 | Тимофеев В | 1h | 1h |
| 3660 | 16.13 | **полочка под пк** | 0.12d | 2026-06-26 09:00 A | 2026-06-26 10:00 A |  | 100% |  |  |  | Тимофеев В | 2h | 2h |
| 3661 | 16.13.1 | замер | 1h | 2026-06-26 09:00 A | 2026-06-26 10:00 A |  | 100% |  |  | start no earlier than 2026-06-26 09:00 | Тимофеев В | 1h | 1h |
| 3662 | 16.14 | прикрутить декоративную пластину на ручке в столовой | 1h | 2026-04-15 09:00 A | 2026-04-15 10:00 A |  | 100% |  |  | start no earlier than 2026-04-17 08:00 | Макаревич А | 1h | 1h |
| 3663 | 16.15 | монтаж розеток 4 шт. в серверной | 2h | 2026-04-15 09:00 A | 2026-04-15 11:00 A |  | 100% |  |  | start no earlier than 2026-04-17 08:00 | Макаревич А | 2h | 2h |
| 3664 | 16.16 | протянуть кабель UTP от кабинета Курдюмовой до переговорки | 2h | 2026-04-17 08:00 A | 2026-04-17 11:00 A |  | 100% |  |  | start no earlier than 2026-04-17 08:00 | Тимофеев В; Некрасов А | 4h | 4h |
| 3665 | 16.17 | убрать шнурок у Курдюмовой в кабинете | 1h | 2026-04-17 08:00 A | 2026-04-17 10:00 A |  | 100% |  |  | start no earlier than 2026-04-17 08:00 | Тимофеев В | 1h | 1h |
| 3666 | 16.18 | ремонт кровля над каб Курдюмовой | 20d | 2026-06-15 09:00 A | 2026-07-10 18:00 A |  | 100% |  |  | start no earlier than 2026-06-15 09:00 | Олег | 160h | 160h |
| 3667 | 16.19 | ремонт крепеж пано каб продаж | 1h | 2026-03-24 08:00 A | 2026-03-24 10:00 A |  | 100% |  |  | start no earlier than 2026-03-24 08:00 | Тимофеев В | 1h | 1h |
| 3668 | 16.20 | крепить розетку для проектора | 2h | 2025-04-09 09:00 A | 2025-04-09 11:00 A |  | 100% |  |  | start no earlier than 2025-04-09 09:00 | Тимофеев В | 2h | 2h |
| 3669 | 16.21 | упорядочить кабеля под тв | 2h | 2025-04-09 09:00 A | 2025-04-09 11:00 A |  | 100% |  |  | start no earlier than 2025-04-09 09:00 | Некрасов А | 2h | 2h |
| 3670 | 16.22 | выбивает автомат у Монича, нет селективности, замена автоматов. Ремонт освещения корридор | 4h | 2026-09-29 09:00 | 2026-09-29 13:00 |  |  |  | 122.09d | start no earlier than 2026-09-29 09:00 | Дедов В | 4h |  |
| 3671 | 16.23 | монтаж ключница для пожарной двери 2 и 3 этаж | 1h | 2026-03-16 09:00 A | 2026-03-16 10:00 A |  | 100% |  |  | start no earlier than 2026-03-16 09:00 | Тимофеев В | 1h | 1h |
| 3672 | 16.24 | замена регистр отопления нач снабжения | 2h | 2026-10-12 09:00 | 2026-10-12 11:00 |  |  |  | 112.34d | start no earlier than 2026-10-12 09:00 | Некрасов А | 2h |  |
| 3673 | 16.25 | сделать заглушки в комнату пищи | 30min | 2026-09-01 09:00 | 2026-09-01 09:30 |  |  |  | 149.53d | start no earlier than 2026-09-01 09:00 | Домоводов К | 0.5h |  |

| ID | WBS | Task | Type | Duration | Start | Finish | Predecessors | Complete | Remaining | Total slack | Free slack | Constraint | Resources | Work | Actual work |
| --- | --- | --- | --- | --- | --- | --- | --- | --- | --- | --- | --- | --- | --- | --- | --- |
| 3674 | 16.26 | **вентиляция в переговорке и к приема пищи** |  | 812d? | 2023-03-10 09:00 A | 2026-04-20 18:00 A |  | 100% |  |  |  |  |  | 17h | 17h |
| 3675 | 16.26.1 | взять на желтом складе (наша половина) вентилятор канальный и проверить работает или нет |  | 1h | 2023-03-10 09:00 A | 2023-03-10 10:00 A |  | 100% |  |  |  |  | Бундин В | 1h | 1h |
| 3676 | 16.26.2 | заявка на КП = 300к |  | 4h | 2026-03-13 09:00 A | 2026-03-13 13:00 A |  | 100% |  |  |  | start no earlier than 2026-03-13 09:00 | Домоводов К | 4h | 4h |
| 3677 | 16.26.3 | монтаж ВК200 + кабель |  | 6h | 2026-04-20 09:00 A | 2026-04-20 16:00 A |  | 100% |  |  |  | start no earlier than 2026-04-20 08:00 | Некрасов А; Труфанов А | 12h | 12h |
| 3678 | 16.26.4 | установка на крыше офиса, приточка в переговорку |  | 1d? | 2026-04-20 09:00 A | 2026-04-20 18:00 A |  | 100% |  |  |  | start no earlier than 2026-04-20 09:00 |  |  |  |
| 3679 | 16.27 | **подсветка продукции в пепреговорке вращающийся лаезерный круг с эмблемой** |  | 0.12d | 2026-03-13 09:00 A | 2026-03-13 10:00 A |  | 100% |  |  |  |  |  | 1h | 1h |
| 3680 | 16.27.1 | найти поставщика / узнать стоимость |  | 1h | 2026-03-13 09:00 A | 2026-03-13 10:00 A |  | 100% |  |  |  | start no earlier than 2026-03-13 09:00 | Зорькин В | 1h | 1h |
| 3681 | 17 | **склад упаковки** |  | 180.19d? | 2026-04-02 09:00 A | 2026-11-23 10:30 |  | 99% | 0.72d? | 77.41d |  |  |  | 398.75h | 397.25h |
| 3682 | 17.1 | **ремонт роль ворот** |  | 8.19d | 2026-11-13 09:00 | 2026-11-23 10:30 |  |  |  | 77.41d |  |  |  | 1.5h |  |
| 3683 | 17.1.1 | заявка ролик |  | 15min | 2026-11-13 09:00 | 2026-11-13 09:15 |  |  |  | 77.41d | 0d | start no earlier than 2026-11-13 09:00 | Домоводов К | 0.25h |  |
| 3684 | 17.1.2 | контроль доставка |  | 15min | 2026-11-20 09:15 | 2026-11-20 09:30 | 3683FS+7d |  |  | 77.41d | 0d | start no earlier than 2026-11-09 08:00 | Зорькин В | 0.25h |  |
| 3685 | 17.1.3 | замена |  | 1h | 2026-11-23 09:30 | 2026-11-23 10:30 | 3684FS+1d |  |  | 77.41d |  | start no earlier than 2026-11-09 08:00 | Тимофеев В | 1h |  |
| 3686 | 17.2 | Замена терморегулятора о котором ты мне говорил на болере склада упаковки, новые должны быть на складе, если нет, снять со старого в контейнере | manual | 2h | 2026-10-11 09:00 A | 2026-10-11 11:00 A |  | 100% |  |  |  | start no earlier than 2026-10-11 09:00 | Бобренок В | 2h | 2h |
| 3687 | 17.3 | Установить новый бойлер, старый на ремонт в слесарку |  | 30min | 2026-10-08 09:00 A | 2026-10-08 09:30 A |  | 100% |  |  |  | start no earlier than 2026-10-08 08:00 | Бобренок В | 0.5h | 0.5h |
| 3688 | 17.4 | Повесить доп светильники 3 шт (спросить у Лехи, где нужны) |  | 3h | 2026-10-02 09:00 A | 2026-10-02 12:00 A |  | 100% |  |  |  | start no earlier than 2026-10-02 09:00 | Труфанов А; Некрасов А | 6h | 6h |
| 3689 | 17.5 | переделать крепление рамы наруж блока - к МК здания, анкера убрать |  | 4h | 2026-10-07 09:00 A | 2026-10-07 13:00 A |  | 100% |  |  |  | start no earlier than 2026-10-07 09:00 | Некрасов А; Труфанов А | 8h | 8h |
| 3690 | 17.6 | установить светильники над столом Веры и перенести светильник над стеллажами |  | 3h | 2026-08-25 09:00 A | 2026-08-25 12:00 A |  | 100% |  |  |  | start no earlier than 2026-08-25 09:00 | Тимофеев В; Некрасов А | 6h | 6h |
| 3691 | 17.7 | втягиваем кабель 5х4 от реф, для подключения кондиционера, место установки щитка покажу- подключаем кондиционер |  | 1d? | 2026-07-31 08:00 A | 2026-07-31 18:00 A |  | 100% |  |  |  | start no earlier than 2026-07-31 08:00 | Труфанов А; Бобренок В | 16h | 16h |
| 3692 | 17.8 | сделать акты списания по результатам инвентаризации |  | 1d? | 2026-06-22 09:00 A | 2026-06-22 18:00 A |  | 100% |  |  |  | start no earlier than 2026-06-22 09:00 | Шуранов Ю | 8h | 8h |
| 3693 | 17.9 | **установить бойлер** |  | 92.12d | 2026-06-01 09:00 A | 2026-09-28 10:00 A |  | 100% |  |  |  |  |  | 13h | 13h |
| 3694 | 17.9.1 | Замена тэна на бойлере |  | 1h | 2026-09-28 09:00 A | 2026-09-28 10:00 A |  | 100% |  |  |  | start no earlier than 2026-09-28 08:00 | Бобренок В | 1h | 1h |
| 3695 | 17.9.2 | монтаж кабель + розетка с щитка 1 этажа на 2 этаж |  | 4h | 2026-06-03 09:00 A | 2026-06-03 13:00 A |  | 100% |  |  |  | start no earlier than 2026-06-03 09:00 | Некрасов А; Бундин В | 8h | 8h |
| 3696 | 17.9.3 | монтаж бойлер на стену |  | 2h | 2026-06-01 09:00 A | 2026-06-01 11:00 A | 3695 | 100% |  |  |  | start no earlier than 2026-06-01 09:00 | Тимофеев В | 2h | 2h |
| 3697 | 17.9.4 | подключение сантехника |  | 2h | 2026-06-16 09:00 A | 2026-06-16 11:00 A | 3696 | 100% |  |  |  | start no earlier than 2026-06-16 09:00 | Тимофеев В | 2h | 2h |
| 3698 | 17.10 | отремонтировать ручку на входной двери |  | 1h | 2026-05-16 09:00 A | 2026-05-18 10:00 A |  | 100% |  |  |  | start no earlier than 2026-05-16 09:00 |  |  |  |

| ID | WBS | Task | Type | Duration | Start | Finish | Predecessors | Complete | Remaining | Total slack | Free slack | Constraint | Resources | Work | Actual work |
| --- | --- | --- | --- | --- | --- | --- | --- | --- | --- | --- | --- | --- | --- | --- | --- |
| 3699 | 17.11 | **анкерить стеллажи** |  | 26d | 2026-05-15 09:00 A | 2026-06-21 13:00 A |  | 100% |  |  |  |  |  | 4.75h | 4.75h |
| 3700 | 17.11.1 | заявка анкеры |  | 30min | 2026-05-15 09:00 A | 2026-05-15 09:30 A |  | 100% |  |  |  | start no earlier than 2026-05-15 09:00 | Шуранов Ю | 0.5h | 0.5h |
| 3701 | 17.11.2 | контроль доставка |  | 15min | 2026-05-27 09:30 A | 2026-05-27 09:45 A | 3700FS+10d | 100% |  |  |  | start no earlier than 2026-05-14 08:00 | Шуранов Ю | 0.25h | 0.25h |
| 3702 | 17.11.3 | монтаж / указать доделать оставшиеся анкера | manual | 4h | 2026-06-21 09:00 A | 2026-06-21 13:00 A | 3701 | 100% |  |  |  | start no earlier than 2026-06-21 09:00 | Бундин В | 4h | 4h |
| 3703 | 17.12 | заменить тросик на воротах |  | 2h | 2026-04-29 09:00 A | 2026-04-29 11:00 A |  | 100% |  |  |  | start no earlier than 2026-04-29 09:00 | Тимофеев В; Бундин В | 4h | 4h |
| 3704 | 17.13 | **замена двери** |  | 40.12d? | 2026-04-02 09:00 A | 2026-05-28 10:00 A |  | 100% |  |  |  |  |  | 329h | 329h |
| 3705 | 17.13.1 | заказ замерщика / получить счет |  | 1h | 2026-04-02 09:00 A | 2026-04-02 10:00 A |  | 100% |  |  |  | start no earlier than 2026-04-02 08:00 | Домоводов К | 1h | 1h |
| 3706 | 17.13.2 | изготовление |  | 40d | 2026-04-02 10:00 A | 2026-05-28 10:00 A | 3705 | 100% |  |  |  | start no earlier than 2026-04-02 08:00 | Подрядчик | 320h | 320h |
| 3707 | 17.13.3 | замена |  | 1d? | 2026-05-19 10:00 A | 2026-05-20 10:00 A | 3706 | 100% |  |  |  | start no earlier than 2026-04-02 08:00 | Подрядчик | 8h | 8h |
| 3708 | 18 | **РЭФ контейнеры** |  | 217.59d? | 2026-05-28 09:00 A | 2027-03-10 14:45 |  | 15% | 185.84d? | 0d |  |  |  | 66.25h | 13.5h |
| 3709 | 18.1 | уложить палеты в проходе к площадке / вырубить кусты с дворником |  | 1h | 2026-05-28 09:00 A | 2026-05-28 10:00 A |  | 100% |  |  |  | start no earlier than 2026-05-28 09:00 | Некрасов А; Бобренок В | 1h | 1h |
| 3710 | 18.2 | монтаж площадка обслуживания внешнего блока. 4 стойки труба 100 + лист 5 |  | 7h | 2026-05-28 09:00 A | 2026-05-28 17:00 A |  | 100% |  |  |  | start no earlier than 2026-05-28 09:00 | Некрасов А; Бобренок В | 12h | 12h |
| 3711 | 18.3 | **ремонт сплит система холодильная камера №1** |  | 27.12d | 2026-08-12 09:00 A | 2026-09-15 10:00 |  | 40% | 16.27d | 136.47d |  |  |  | 1.25h | 0.5h |
| 3712 | 18.3.1 | отправить фото участка |  | 15min | 2026-08-12 09:00 A | 2026-08-12 09:15 A |  | 100% |  |  |  | start no earlier than 2026-08-12 09:00 | Домоводов К | 0.25h | 0.25h |
| 3713 | 18.3.2 | получить счет на ремонт |  | 15min | 2026-09-08 09:00 A | 2026-09-08 09:15 A |  | 100% |  |  |  | start no earlier than 2026-09-08 09:00 | Домоводов К | 0.25h | 0.25h |
| 3714 | 18.3.3 | оплата |  | 15min | 2026-09-09 09:15 | 2026-09-09 09:30 | 3713FS+1d |  |  | 136.47d | 0d | start no earlier than 2026-09-09 09:00 | Домоводов К | 0.25h |  |
| 3715 | 18.3.4 | контроль даты ремонта |  | 15min | 2026-09-14 09:30 | 2026-09-14 09:45 | 3714FS+5d |  |  | 136.47d | 0d | start no earlier than 2026-08-10 08:00 | Зорькин В | 0.25h |  |
| 3716 | 18.3.5 | приемка работ |  | 15min | 2026-09-15 09:45 | 2026-09-15 10:00 | 3715FS+1d |  |  | 136.47d |  | start no earlier than 2026-08-10 08:00 | Зорькин В | 0.25h |  |
| 3717 | 18.4 | **монтаж холодильной машины №2** |  | 6.59d? | 2027-03-02 09:00 | 2027-03-10 14:45 |  |  |  | 0d |  |  |  | 45h |  |
| 3718 | 18.4.1 | решение какую ставить машину - на весну |  | 30min | 2027-03-02 09:00 | 2027-03-02 09:30 |  |  |  | 0d |  | start no earlier than 2027-03-02 09:00 | Домоводов К | 0.5h |  |
| 3719 | 18.4.2 | заключение договор |  | 3d | 2027-03-02 09:30 | 2027-03-05 09:30 | 3718 |  |  | 0d |  | start no earlier than 2026-08-12 09:00 | Домоводов К | 24h |  |
| 3720 | 18.4.3 | оплата |  | 15min | 2027-03-08 09:30 | 2027-03-08 09:45 | 3719FS+1d |  |  | 0d |  | start no earlier than 2026-08-18 09:00 | Домоводов К | 0.25h |  |
| 3721 | 18.4.4 | контроль доставки , начала работ |  | 1d? | 2027-03-08 09:45 | 2027-03-09 09:45 | 3720 |  |  | 0d |  | start no earlier than 2026-08-10 08:00 | Зорькин В | 8h |  |
| 3722 | 18.4.5 | **монтаж кабель силовой** |  | 0.5d | 2027-03-09 09:45 | 2027-03-09 14:45 | 3721 |  |  | 0d |  |  |  | 4.25h |  |
| 3723 | 18.4.5.1 | проверка поставки |  | 15min | 2027-03-09 09:45 | 2027-03-09 10:00 |  |  |  | 0.47d |  | start no earlier than 2026-08-10 08:00 | Зорькин В | 0.25h |  |
| 3724 | 18.4.5.2 | монтаж |  | 4h | 2027-03-09 09:45 | 2027-03-09 14:45 |  |  |  | 0d |  | start no earlier than 2026-08-10 08:00 | Некрасов А | 4h |  |
| 3725 | 18.4.6 | монтаж |  | 1d? | 2027-03-09 14:45 | 2027-03-10 14:45 | 3722 |  |  | 0d |  | start no earlier than 2026-08-10 08:00 | Подрядчик | 8h |  |

| ID | WBS | Task | Type | Duration | Start | Finish | Predecessors | Complete | Remaining | Total slack | Free slack | Constraint | Resources | Work | Actual work |
| --- | --- | --- | --- | --- | --- | --- | --- | --- | --- | --- | --- | --- | --- | --- | --- |
| 3726 | 18.5 | **утепление контейнера №2 под рефрежератор** |  | 0.5d | 2026-08-21 09:00 | 2026-08-21 13:00 |  |  |  | 0d |  |  |  | 7h |  |
| 3727 | 18.5.1 | продолжить выравнивание пены по периметру ножовкой для будующей установки профлиста (задание, если нечем заняться) | manual | 2h | 2026-08-21 09:00 | 2026-08-21 11:00 |  |  |  |  |  | start no earlier than 2026-08-21 09:00 | Некрасов А; Дедов В | 4h |  |
| 3728 | 18.5.2 | установка профлиста |  | 2h | 2026-08-21 11:00 | 2026-08-21 13:00 | 3727 |  |  | 156.09d |  | start no earlier than 2026-08-11 09:00 | Некрасов А; Дедов В | 3h |  |
| 3729 | 19 | **обучение** |  | 655d? | 2024-05-14 09:00 A | 2026-11-03 18:00 |  | 45% | 359.51d? | 94.59d |  |  |  | 138h | 65h |
| 3730 | 19.1 | Оперативные работы/ принятие заявок на производстве |  | 1d? | 2026-11-03 09:00 | 2026-11-03 18:00 |  |  |  | 94.59d |  | start no earlier than 2026-11-03 09:00 | Николаев | 8h |  |
| 3731 | 19.2 | **инструкция управлления дозаций жира** |  | 1.5d | 2026-09-09 09:00 | 2026-09-10 13:00 |  |  |  | 141.09d |  |  |  | 12h |  |
| 3732 | 19.2.1 | подготовка гидравлической и функциональной схем системы |  | 4h | 2026-09-09 09:00 | 2026-09-09 13:00 |  |  |  | 141.09d | 0d | start no earlier than 2026-09-09 09:00 | Зорькин В | 4h |  |
| 3733 | 19.2.2 | описание принципов регулирования |  | 4h | 2026-09-09 14:00 | 2026-09-09 18:00 | 3732 |  |  | 141.09d | 0d | start no earlier than 2026-08-31 09:00 | Зорькин В | 4h |  |
| 3734 | 19.2.3 | пошаговый алогритм действий по операциям замена фильтров, остановка пуск, настройка режимов |  | 4h | 2026-09-10 09:00 | 2026-09-10 13:00 | 3733 |  |  | 141.09d |  | start no earlier than 2026-08-31 09:00 | Зорькин В | 4h |  |
| 3735 | 19.3 | настройка и ремонты упаковщиков |  | 1h | 2026-02-27 09:00 A | 2026-02-27 10:00 A |  | 100% |  |  |  | start no earlier than 2026-02-27 08:00 | Труфанов А; Бундин В | 2h | 2h |
| 3736 | 19.4 | подготовить памятку по чистке ножа для бестром |  | 4h | 2026-09-04 09:00 A | 2026-09-04 13:00 A |  | 100% |  |  |  | start no earlier than 2026-09-04 09:00 | Зорькин В | 4h | 4h |
| 3737 | 19.5 | бестром |  | 2h | 2025-09-02 09:00 A | 2025-09-02 11:00 A |  | 100% |  |  |  | start no earlier than 2025-09-02 09:00 | Труфанов А; Зорькин В | 4h | 4h |
| 3738 | 19.6 | квадропак |  | 2h | 2025-09-02 11:00 A | 2025-09-02 13:00 A | 3737 | 100% |  |  |  | start no earlier than 2025-09-02 09:00 | Труфанов А; Зорькин В | 4h | 4h |
| 3739 | 19.7 | инструкция парогенератор управление по датчику давления |  | 4h | 2025-01-16 09:00 A | 2025-01-16 13:00 A |  | 100% |  |  |  | start no earlier than 2025-01-16 09:00 | Зорькин В | 4h | 4h |
| 3740 | 19.8 | инструкция по работе на теко 1.5 новый |  | 2d | 2025-01-17 09:00 A | 2025-01-20 18:00 A | 3739 | 100% |  |  |  | start no earlier than 2025-01-17 09:00 | Зорькин В | 16h | 16h |
| 3741 | 19.9 | инструкция ремонт запайщика |  | 1d? | 2025-01-17 09:00 A | 2025-01-17 18:00 A |  | 100% |  |  |  | start no earlier than 2025-01-17 09:00 | Зорькин В | 8h | 8h |
| 3742 | 19.10 | Составить список ЗИП - ежедневно вносить приход / расход |  | 1h | 2024-05-14 09:00 | 2024-05-14 10:00 |  |  |  | 749.47d |  | start no earlier than 2024-05-14 09:00 | Шуранов Ю | 1h |  |
| 3743 | 19.11 | составить инструкцию по затягиванию фильеры и соосности муфты |  | 4h | 2024-05-14 09:00 | 2024-05-14 13:00 |  |  |  | 749.09d |  | start no earlier than 2024-05-14 09:00 | Шуранов Ю | 4h |  |
| 3744 | 19.12 | составитьт инструкцию настройка бестром - формирование шва |  | 4h | 2024-05-14 09:00 | 2024-05-14 13:00 |  |  |  | 749.09d |  | start no earlier than 2024-05-14 09:00 | Шуранов Ю | 4h |  |
| 3745 | 19.13 | составитьт инструкцию настройка бестром - заправка ленты зип лок |  | 4h | 2024-05-14 09:00 | 2024-05-14 13:00 |  |  |  | 749.09d |  | start no earlier than 2024-05-14 09:00 | Шуранов Ю | 4h |  |
| 3746 | 19.14 | **формирование шаблона настройки оборудования** |  | 4d | 2024-09-06 09:00 A | 2024-09-11 18:00 A |  | 100% |  |  |  |  |  | 21h | 21h |
| 3747 | 19.14.1 | **БЕСТРОМ** |  | 2.25d | 2024-09-06 09:00 A | 2024-09-10 11:00 A |  | 100% |  |  |  |  |  | 7h | 7h |
| 3748 | 19.14.1.1 | определить базовые точки относительно которых будет проводится замер в 3х плоскостях - флажки верх, флажки низ, смыкание ножа, центр трубы |  | 1h | 2024-09-06 09:00 A | 2024-09-06 10:00 A |  | 100% |  |  |  | start no earlier than 2024-09-06 08:00 | Зорькин В | 1h | 1h |
| 3749 | 19.14.1.2 | обвести в PAINT фото методику измерений, присвоить \имя каждому размеру |  | 2h | 2024-09-06 10:00 A | 2024-09-06 12:00 A | 3748 | 100% |  |  |  | start no earlier than 2024-09-06 09:00 | Зорькин В | 2h | 2h |
| 3750 | 19.14.1.3 | создать карту / таблицу настройки. Размер-дата-фио |  | 2h | 2024-09-09 09:00 A | 2024-09-09 11:00 A | 3749 | 100% |  |  |  | start no earlier than 2024-09-09 09:00 | Зорькин В | 2h | 2h |
| 3751 | 19.14.1.4 | оформить ведение карты в журнал |  | 2h | 2024-09-10 09:00 A | 2024-09-10 11:00 A | 3750 | 100% |  |  |  | start no earlier than 2024-09-10 09:00 | Зорькин В | 2h | 2h |

| ID | WBS | Task | Duration | Start | Finish | Predecessors | Complete | Remaining | Total slack | Constraint | Resources | Work | Actual work |
| --- | --- | --- | --- | --- | --- | --- | --- | --- | --- | --- | --- | --- | --- |
| 3752 | 19.14.2 | **ТЕКО 1.5** | 0.88d | 2024-09-10 11:00 A | 2024-09-11 10:00 A | 3747 | 100% |  |  |  |  | 7h | 7h |
| 3753 | 19.14.2.1 | определить базовые точки относительно которых будет проводится замер в 3х плоскостях - флажки верх, флажки низ, смыкание ножа, центр трубы | 1h | 2024-09-10 11:00 A | 2024-09-10 12:00 A |  | 100% |  |  | start no earlier than 2024-09-10 09:00 | Зорькин В | 1h | 1h |
| 3754 | 19.14.2.2 | обвести в PAINT фото методику измерений, присвоить \имя каждому размеру | 2h | 2024-09-10 12:00 A | 2024-09-10 15:00 A | 3753 | 100% |  |  | start no earlier than 2024-09-06 08:00 | Зорькин В | 2h | 2h |
| 3755 | 19.14.2.3 | создать карту / таблицу настройки. Размер-дата-фио | 2h | 2024-09-10 15:00 A | 2024-09-10 17:00 A | 3754 | 100% |  |  | start no earlier than 2024-09-06 08:00 | Зорькин В | 2h | 2h |
| 3756 | 19.14.2.4 | оформить ведение карты в журнал | 2h | 2024-09-10 17:00 A | 2024-09-11 10:00 A | 3755 | 100% |  |  | start no earlier than 2024-09-06 08:00 | Зорькин В | 2h | 2h |
| 3757 | 19.14.3 | **ТЕКО 0,4** | 0.88d | 2024-09-11 10:00 A | 2024-09-11 18:00 A | 3752 | 100% |  |  |  |  | 7h | 7h |
| 3758 | 19.14.3.1 | определить базовые точки относительно которых будет проводится замер в 3х плоскостях - флажки верх, флажки низ, смыкание ножа, центр трубы | 1h | 2024-09-11 10:00 A | 2024-09-11 11:00 A |  | 100% |  |  | start no earlier than 2024-09-06 08:00 | Зорькин В | 1h | 1h |
| 3759 | 19.14.3.2 | обвести в PAINT фото методику измерений, присвоить \имя каждому размеру | 2h | 2024-09-11 11:00 A | 2024-09-11 13:00 A | 3758 | 100% |  |  | start no earlier than 2024-09-06 08:00 | Зорькин В | 2h | 2h |
| 3760 | 19.14.3.3 | создать карту / таблицу настройки. Размер-дата-фио | 2h | 2024-09-11 14:00 A | 2024-09-11 16:00 A | 3759 | 100% |  |  | start no earlier than 2024-09-06 08:00 | Зорькин В | 2h | 2h |
| 3761 | 19.14.3.4 | оформить ведение карты в журнал | 2h | 2024-09-11 16:00 A | 2024-09-11 18:00 A | 3760 | 100% |  |  | start no earlier than 2024-09-06 08:00 | Зорькин В | 2h | 2h |
| 3762 | 19.15 | **наполнение базы данных по занятиям, запись видео уроки** | 5.12d | 2024-09-09 09:00 A | 2024-09-16 10:00 |  | 5% | 4.88d | 660.47d |  |  | 42h | 2h |
| 3763 | 19.15.1 | заяавка фотокамера, штатив | 1h | 2024-09-09 09:00 A | 2024-09-09 10:00 A |  | 100% |  |  | start no earlier than 2024-09-09 09:00 | Зорькин В | 1h | 1h |
| 3764 | 19.15.2 | доставка | 5d | 2024-09-09 10:00 | 2024-09-16 10:00 | 3763 |  |  | 660.47d | start no earlier than 2024-09-06 08:00 | Мультан | 40h |  |
| 3765 | 19.15.3 | **Бестром** | 0.12d | 2024-09-16 09:00 A | 2024-09-16 10:00 A |  | 100% |  |  |  |  | 1h | 1h |
| 3766 | 19.15.3.1 | урок 1 | 1h | 2024-09-16 09:00 A | 2024-09-16 10:00 A | 3764 | 100% |  |  | start no earlier than 2024-09-16 09:00 | Зорькин В | 1h | 1h |
| 3767 | 20 | **администрантивные** | 185.25d | 2026-03-19 09:00 A | 2026-11-16 11:00 |  | 87% | 23.4d | 82.34d |  |  | 105.92h | 90.92h |
| 3768 | 20.1 | Установить ящики желаний (узнавать места размещений у Кости) | 2h | 2026-11-16 09:00 | 2026-11-16 11:00 |  |  |  | 82.34d | start no earlier than 2026-11-16 09:00 | Труфанов А; Некрасов А | 4h |  |
| 3769 | 20.2 | Контроль монтажа по водоподготовке в 1 цеху, проверить материалы | 1h | 2026-10-28 09:00 A | 2026-10-28 10:00 A |  | 100% |  |  | start no earlier than 2026-10-28 09:00 | Труфанов А; Некрасов А | 2h | 2h |
| 3770 | 20.3 | спсиание материалов | 6h | 2026-09-01 09:00 | 2026-09-01 16:00 |  |  |  | 148.84d | start no earlier than 2026-09-01 09:00 | Шуранов Ю | 6h |  |
| 3771 | 20.4 | составить список остатков шнеков в таблицу зип | 2h | 2026-09-01 09:00 | 2026-09-01 11:00 |  |  |  | 149.34d | start no earlier than 2026-09-01 09:00 | Шуранов Ю | 2h |  |
| 3772 | 20.5 | подготовить спсток перчаток | 3h | 2026-03-19 09:00 A | 2026-03-19 12:00 A |  | 100% |  |  | start no earlier than 2026-03-19 08:00 | Зорькин В | 3h | 3h |
| 3773 | 20.6 | подготовка данных дебеторская задолжность | 3h | 2026-03-19 09:00 A | 2026-03-19 12:00 A |  | 100% |  |  | start no earlier than 2026-03-19 08:00 | Зорькин В | 3h | 3h |
| 3774 | 20.7 | договор по ремонту стиральных машинок. Переговоры | 1h | 2026-09-01 09:00 | 2026-09-01 10:00 |  |  |  | 149.47d | start no earlier than 2026-09-01 09:00 | Шуранов Ю | 1h |  |
| 3775 | 20.8 | Составить список на год ППР (планово-предупредительные работы) на оборудовании Цеха №1, Цеха №2, Цеха навесок. | 2h | 2026-09-01 09:00 | 2026-09-01 11:00 |  |  |  | 149.34d | start no earlier than 2026-09-01 09:00 | Шуранов Ю | 2h |  |

| ID | WBS | Task | Type | Duration | Start | Finish | Predecessors | Complete | Remaining | Total slack | Free slack | Constraint | Resources | Work | Actual work |
| --- | --- | --- | --- | --- | --- | --- | --- | --- | --- | --- | --- | --- | --- | --- | --- |
| 3776 | 20.9 | **Ключи на шкафы** |  | 111.25d | 2026-04-16 09:00 A | 2026-09-15 11:00 A |  | 100% |  |  |  |  |  | 82.75h | 82.75h |
| 3777 | 20.9.1 | Заказать |  | 30min | 2026-04-16 09:00 A | 2026-04-16 09:30 A |  | 100% |  |  |  | start no earlier than 2026-04-16 09:00 | Зорькин В | 0.5h | 0.5h |
| 3778 | 20.9.2 | доставить |  | 10d | 2026-04-16 09:30 A | 2026-04-30 09:30 A | 3777 | 100% |  |  |  | start no earlier than 2026-04-14 09:00 | Карабанов | 80h | 80h |
| 3779 | 20.9.3 | контроль доставка |  | 15min | 2026-05-15 09:00 A | 2026-05-15 09:15 A |  | 100% |  |  |  | start no earlier than 2026-05-15 09:00 | Зорькин В | 0.25h | 0.25h |
| 3780 | 20.9.4 | Повешать на веревочку ключи на все шкафы ВРУ и электрощитки (ключи на складе, веревочки взять на производстве, нитки) |  | 2h | 2026-09-15 09:00 A | 2026-09-15 11:00 A | 3778 | 100% |  |  |  | start no earlier than 2026-09-15 09:00 | Бобренок В | 2h | 2h |
| 3781 | 20.10 | Расписаться в нашем кабинете |  | 10min | 2026-07-28 09:00 A | 2026-07-28 09:10 A |  | 100% |  |  |  | start no earlier than 2026-07-28 09:00 | Макаревич А | 0.17h | 0.17h |
| 3782 | 21 | **ТБ** |  | 933.25d? | 2023-06-06 09:00 A | 2026-12-15 11:00 |  | 39% | 569.36d? | 61.34d |  |  |  | 249.92h | 96.67h |
| 3783 | 21.1 | инструктаж по ТБ оформить |  | 1h | 2026-08-31 09:00 | 2026-08-31 10:00 |  |  |  | 150.47d |  | start no earlier than 2026-08-31 09:00 | Шуранов Ю | 1h |  |
| 3784 | 21.2 | выполнить перелкаду похарных шлангов офис, 1ц |  | 2h | 2026-12-15 09:00 | 2026-12-15 11:00 |  |  |  | 61.34d |  | start no earlier than 2026-12-15 09:00 | Некрасов А; Труфанов А | 4h |  |
| 3785 | 21.3 | маркировка лестниц / оформление журналов |  | 2h | 2026-08-31 09:00 | 2026-08-31 11:00 |  |  |  | 150.34d |  | start no earlier than 2026-08-31 09:00 | Шуранов Ю | 2h |  |
| 3786 | 21.4 | внеплановый инструктаж персонала при аварии на проризводстве |  | 2h | 2025-03-26 09:00 A | 2025-03-26 11:00 A |  | 100% |  |  |  | start no earlier than 2025-03-26 08:00 | Шуранов Ю | 2h | 2h |
| 3787 | 21.5 | заявка на табличики НЕ ВКЛЮЧАТЬ |  | 10min | 2025-03-26 09:00 A | 2025-03-26 09:10 A |  | 100% |  |  |  | start no earlier than 2025-03-26 08:00 | Шуранов Ю | 0.17h | 0.17h |
| 3788 | 21.6 | офорить наряд допуск на монтаж кабеля КПП |  | 30min | 2024-08-05 09:00 A | 2024-08-05 09:30 A |  | 100% |  |  |  | start no earlier than 2024-08-05 09:00 | Шуранов Ю | 0.5h | 0.5h |
| 3789 | 21.7 | составить схемы кабельных линий по производству |  | 5d | 2026-09-01 09:00 | 2026-09-05 18:00 |  |  |  | 144.59d |  | start no earlier than 2026-09-01 09:00 | Шуранов Ю | 40h |  |
| 3790 | 21.8 | организация аттестации электроперсонала |  | 10d | 2024-05-14 09:00 A | 2024-05-27 18:00 A |  | 100% |  |  |  | start no earlier than 2024-05-14 09:00 | Шуранов Ю | 80h | 80h |
| 3791 | 21.9 | расклеить таблички на стремянки |  | 1h | 2023-10-18 09:00 A | 2023-10-18 10:00 A |  | 100% |  |  |  | start no earlier than 2023-10-18 09:00 | Тимофеев В | 1h | 1h |
| 3792 | 21.10 | вести журнал учета такелажных средств, механизмов и приспособлений |  | 1h | 2026-09-01 09:00 | 2026-09-01 10:00 |  |  |  | 149.47d |  | start no earlier than 2026-09-01 09:00 | Шуранов Ю | 1h |  |
| 3793 | 21.11 | комплект сиз для высотных работ |  | 1h | 2023-06-09 09:00 A | 2023-06-09 10:00 A |  | 100% |  |  |  | start no earlier than 2023-06-09 09:00 | Лобанов И | 1h | 1h |
| 3794 | 21.12 | тестер индикторная отвертка |  | 1h | 2024-05-14 09:00 A | 2024-05-14 10:00 A |  | 100% |  |  |  | start no earlier than 2024-05-14 09:00 | Шуранов Ю | 1h | 1h |
| 3795 | 21.13 | заявка на диэл коврик, галоши, перчатки, маска, таблички |  | 1h | 2026-09-01 09:00 | 2026-09-01 10:00 |  |  |  | 149.47d |  | start no earlier than 2026-09-01 09:00 | Шуранов Ю | 1h |  |
| 3796 | 21.14 | заявка спецодежда наладчикам |  | 1d? | 2024-05-14 09:00 A | 2024-05-14 18:00 A |  | 100% |  |  |  | start no earlier than 2024-05-14 09:00 | Шуранов Ю | 8h | 8h |
| 3797 | 21.15 | аттестация охрана труда |  | 10d | 2024-05-14 09:00 | 2024-05-27 18:00 |  |  |  | 739.59d |  | start no earlier than 2024-05-14 09:00 | Шуранов Ю | 80h |  |
| 3798 | 21.16 | **испытание стеллажей** |  | 847d? | 2023-06-06 09:00 A | 2026-09-02 18:00 |  | 11% | 753.75d? | 147.59d |  |  |  | 27.25h | 3h |
| 3799 | 21.16.1 | оплата испытания стеллажей контроль | milestone | 0d | 2023-06-06 09:00 A | 2023-06-06 09:00 A |  | 100% |  |  |  | start no earlier than 2023-06-06 09:00 | Домоводов К |  |  |
| 3800 | 21.16.2 | орг испытание стеллажей |  | 1h | 2023-07-11 09:00 A | 2023-07-11 10:00 A |  | 100% |  |  |  | start no earlier than 2023-07-11 09:00 | Домоводов К | 1h | 1h |
| 3801 | 21.16.3 | график осмотров стеллажей |  | 1d? | 2026-08-31 09:00 | 2026-08-31 18:00 | 3799 |  |  | 147.59d | 0d | start no earlier than 2026-08-31 09:00 | Домоводов К | 8h |  |
| 3802 | 21.16.4 | табличка КП |  | 1d? | 2026-09-01 09:00 | 2026-09-01 18:00 | 3801 |  |  | 147.59d | 0d | start no earlier than 2023-04-27 08:00 | Домоводов К | 8h |  |
| 3803 | 21.16.5 | журнал технического освидетельствования стеллажей |  | 1d? | 2026-09-02 09:00 | 2026-09-02 18:00 | 3802 |  |  | 147.59d |  | start no earlier than 2023-04-27 08:00 | Домоводов К | 8h |  |
| 3804 | 21.16.6 | запрос стоимости ремонта стеллажей в 5ц |  | 2h | 2026-08-18 09:00 A | 2026-08-18 11:00 A |  | 100% |  |  |  | start no earlier than 2026-08-18 09:00 | Шуранов Ю | 2h | 2h |
| 3805 | 21.16.7 | контрольизг |  | 15min | 2026-08-27 09:00 | 2026-08-27 09:15 |  |  |  | 152.56d |  | start no earlier than 2026-08-27 09:00 | Шуранов Ю | 0.25h |  |

| ID | WBS | Task | Type | Duration | Start | Finish | Predecessors | Complete | Remaining | Total slack | Constraint | Resources | Work | Actual work |
| --- | --- | --- | --- | --- | --- | --- | --- | --- | --- | --- | --- | --- | --- | --- |
| 3806 | 22 | **офис** |  | 325.03d | 2025-06-11 09:00 A | 2026-09-08 09:15 |  | 80% | 65.01d | 143.56d |  |  | 2.25h | 2h |
| 3807 | 22.1 | дует подконник офис - передать Олегу задачу |  | 15min | 2026-09-08 09:00 | 2026-09-08 09:15 |  |  |  | 143.56d | start no earlier than 2026-09-08 08:00 | Зорькин В | 0.25h |  |
| 3808 | 22.2 | ремонт светильник моргает , бухгалтерия |  | 1h | 2025-06-11 09:00 A | 2025-06-11 10:00 A |  | 100% |  |  | start no earlier than 2025-06-11 09:00 | Тимофеев В; Дедов В | 2h | 2h |
| 3809 | 23 | **территория** |  | 453.5d? | 2025-02-20 09:00 A | 2026-11-04 13:00 |  | 71% | 133.19d? | 94.09d |  |  | 389.75h | 273.5h |
| 3810 | 23.1 | Из арматуры наделать треугольников для колодцев, по диаметру основания, высота 180см. |  | 4h | 2026-11-04 09:00 A | 2026-11-04 13:00 A |  | 100% |  |  | start no earlier than 2026-11-04 09:00 | Макаревич А | 4h | 4h |
| 3811 | 23.2 | Выполнить работу по розетке для электрокара, по видео, которое скинет Домоводов |  | 2h | 2026-10-29 09:00 A | 2026-10-29 11:00 A |  | 100% |  |  | start no earlier than 2026-10-29 08:00 | Бобренок В | 2h | 2h |
| 3812 | 23.3 | Завести проводку в туалет и сделать там розетку на КПП №1 | manual | 2h | 2026-10-21 09:00 A | 2026-10-21 11:00 A |  | 100% |  |  |  | Бобренок В | 2h | 2h |
| 3813 | 23.4 | Завести проводку в туалет и сделать там розетку на КПП №1 - согласовать отключение/ переключить |  | 1h | 2026-10-26 09:00 A | 2026-10-26 10:00 A |  | 100% |  |  | start no earlier than 2026-10-26 09:00 | Бундин В | 1h | 1h |
| 3814 | 23.5 | Накачать давление в контур склада 4, ключи у кладовщиков, проверить сварной шов, перед проверкой, убрать паллеты с продукцией, чтоб не замочило. |  | 2h | 2026-10-20 09:00 A | 2026-10-20 11:00 A |  | 100% |  |  | start no earlier than 2026-10-20 09:00 | Бобренок В | 2h | 2h |
| 3815 | 23.6 | Закрепить профлист на углу между крышами возле 1 кпп (при сильном ветре сильно стучит и отрывает |  | 1d? | 2026-10-16 09:00 | 2026-10-16 18:00 |  |  |  | 107.59d | start no earlier than 2026-10-16 09:00 | Олег | 8h |  |
| 3816 | 23.7 | Обход по цехам по трассе воды в 5 цех (цех 3, цех 4, 5а, 5) Утром и вечером | manual | 1h | 2026-10-10 09:00 A | 2026-10-10 10:00 A |  | 100% |  |  | start no earlier than 2026-10-10 09:00 | Дедов В | 1h | 1h |
| 3817 | 23.8 | У охраны не работает тепловая пушка, ревизия/ремонт |  | 1h | 2026-10-06 09:00 A | 2026-10-06 10:00 A |  | 100% |  |  | start no earlier than 2026-10-06 09:00 | Бобренок В | 1h | 1h |
| 3818 | 23.9 | Накачать котлы на всех узлах отопления |  | 4h | 2026-09-28 09:00 | 2026-09-28 13:00 |  |  |  | 123.09d | start no earlier than 2026-09-28 08:00 | Бобренок В | 4h |  |
| 3819 | 23.10 | Обход по воде протянутой до 5 цеха, проверка протечек во всех узлах по возможности устранить, если нет возможности, перекрыть в 3-ем цехе |  | 30min | 2026-09-21 09:00 A | 2026-09-21 09:30 A |  | 100% |  |  | start no earlier than 2026-09-21 08:00 | Макаревич А | 0.5h | 0.5h |
| 3820 | 23.11 | отсыпать спуск для парковки между цех 2 и 3 |  | 1d? | 2026-08-26 09:00 A | 2026-08-26 18:00 A |  | 100% |  |  | start no earlier than 2026-08-26 08:00 | Дворник | 8h | 8h |
| 3821 | 23.12 | отсыпать тропинку до КТПН |  | 1d? | 2026-08-27 09:00 | 2026-08-27 18:00 |  |  |  | 151.59d | start no earlier than 2026-08-27 09:00 | Дворник | 8h |  |
| 3822 | 23.13 | **орг водосток КПП - 5ц** |  | 0.03d | 2026-08-31 09:00 A | 2026-08-31 09:15 A |  | 100% |  |  |  |  | 0.25h | 0.25h |
| 3823 | 23.13.1 | получить КП от Вугара |  | 15min | 2026-08-31 09:00 A | 2026-08-31 09:15 A |  | 100% |  |  | start no earlier than 2026-08-31 09:00 | Домоводов К | 0.25h | 0.25h |
| 3824 | 23.14 | **орг водосток между 4 и5А** |  | 0.03d | 2026-08-31 09:00 A | 2026-08-31 09:15 A |  | 100% |  |  |  |  | 0.25h | 0.25h |
| 3825 | 23.14.1 | получить КП от Вугара |  | 15min | 2026-08-31 09:00 A | 2026-08-31 09:15 A |  | 100% |  |  | start no earlier than 2026-08-31 09:00 | Домоводов К | 0.25h | 0.25h |
| 3826 | 23.15 | **Белявский выравнивание стены** |  | 14.16d | 2026-08-13 09:00 A | 2026-09-02 10:15 A |  | 100% |  |  |  |  | 2.58h | 2.58h |
| 3827 | 23.15.1 | оформить план работ, эскиз предложенный ГИП Глуходед |  | 1h | 2026-09-01 09:00 A | 2026-09-01 10:00 A |  | 100% |  |  | start no earlier than 2026-09-01 09:00 | Домоводов К | 1h | 1h |
| 3828 | 23.15.2 | поиск подрядчика на перекладку панели |  | 1h | 2026-09-01 09:00 A | 2026-09-01 10:00 A |  | 100% |  |  | start no earlier than 2026-09-01 09:00 | Домоводов К | 1h | 1h |
| 3829 | 23.15.3 | звонок по решению от варианта ремонта Белявского |  | 20min | 2026-08-13 09:00 A | 2026-08-13 09:20 A |  | 100% |  |  | start no earlier than 2026-08-13 09:00 | Домоводов К | 0.33h | 0.33h |
| 3830 | 23.15.4 | ожидание КП от бригады Белявского | milestone | 0d | 2026-08-20 09:00 A | 2026-08-20 09:00 A | 3829FS+1d | 100% |  |  | start no earlier than 2026-08-20 09:00 | Домоводов К |  |  |
| 3831 | 23.15.5 | согл работы с ГД | milestone | 0d | 2026-09-01 10:00 A | 2026-09-01 10:00 A | 3827, 3830FS+1d | 100% |  |  | start no earlier than 2026-08-31 09:00 | Домоводов К |  |  |
| 3832 | 23.15.6 | заказ кран |  | 15min | 2026-09-02 10:00 A | 2026-09-02 10:15 A | 3831FS+1d | 100% |  |  | start no earlier than 2026-08-13 09:00 | Зорькин В | 0.25h | 0.25h |
| 3833 | 23.16 | замена тусклых или не рабочих ламп на мухоловках 1,2,5 цех.Схемы расположения предоставлю (количество ламп, которые поменял указать в отчете) |  | 4h | 2026-08-06 09:00 A | 2026-08-06 13:00 A |  | 100% |  |  | start no earlier than 2026-08-06 08:00 | Труфанов А | 4h | 4h |

| ID | WBS | Task | Type | Duration | Start | Finish | Predecessors | Complete | Remaining | Total slack | Free slack | Constraint | Resources | Work | Actual work |
| --- | --- | --- | --- | --- | --- | --- | --- | --- | --- | --- | --- | --- | --- | --- | --- |
| 3834 | 23.17 | **КПП ревизия прожектор, не горит** |  | 1.12d | 2026-07-08 09:00 A | 2026-07-09 10:00 A |  | 100% |  |  |  |  |  | 1.33h | 1.33h |
| 3835 | 23.17.1 | Сфотать шильдик от прожектора кпп |  | 20min | 2026-07-08 09:00 A | 2026-07-08 09:20 A |  | 100% |  |  |  | start no earlier than 2026-07-08 08:00 | Бундин В | 0.33h | 0.33h |
| 3836 | 23.17.2 | монтаж прожетора |  | 1h | 2026-07-09 09:00 A | 2026-07-09 10:00 A |  | 100% |  |  |  | start no earlier than 2026-07-09 09:00 | Бобренок В | 1h | 1h |
| 3837 | 23.18 | **установить люки колодцев возле на территории** |  | 1d? | 2026-09-25 09:00 A | 2026-09-25 18:00 |  | 50% | 0.5d? |  |  |  |  | 12h | 4h |
| 3838 | 23.18.1 | разложить по местам |  | 4h | 2026-09-25 09:00 A | 2026-09-25 13:00 A |  | 100% |  |  |  | start no earlier than 2026-09-25 08:00 | Бобренок В | 4h | 4h |
| 3839 | 23.18.2 | врезать в асфальт |  | 4h | 2026-10-06 09:00 | 2026-10-06 13:00 |  |  |  | 116.09d |  | start no earlier than 2026-10-06 09:00 | Тимофеев В; Олег | 8h |  |
| 3840 | 23.19 | **установить пост для зарядки эл мобиль директору** |  | 1d? | 2026-06-03 09:00 | 2026-06-03 18:00 |  |  |  | 212.59d |  |  |  |  |  |
| 3841 | 23.19.1 | заявка на щиток / кабель |  | 1d? | 2026-06-03 09:00 | 2026-06-03 18:00 |  |  |  | 212.59d |  | start no earlier than 2026-06-03 08:00 |  |  |  |
| 3842 | 23.20 | уборка строительный мусор задний двор 5А склад |  | 2h | 2026-05-27 09:00 | 2026-05-27 11:00 |  |  |  | 218.34d |  | start no earlier than 2026-05-27 09:00 | оператор2 | 2h |  |
| 3843 | 23.21 | поправить бетонную крышку колодца. Дренаж вдоль забора колодец №2 |  | 2h | 2026-05-27 09:00 | 2026-05-27 11:00 |  |  |  | 218.34d |  | start no earlier than 2026-05-27 09:00 | оператор2 | 2h |  |
| 3844 | 23.22 | расчистить камни, для доступа к люку. Дренаж вдоль забора колодец №2 |  | 2h | 2026-05-27 09:00 | 2026-05-27 11:00 |  |  |  | 218.34d |  | start no earlier than 2026-05-27 09:00 | оператор2 | 2h |  |
| 3845 | 23.23 | проверка всех стемянок по цехам, приклеить бумажки о проверке |  | 1d? | 2026-06-26 09:00 A | 2026-06-26 18:00 A |  | 100% |  |  |  | start no earlier than 2026-06-26 09:00 | Шуранов Ю | 8h | 8h |
| 3846 | 23.24 | в 1,2,3 цехе ближе к утру выключить все оборудование, кроме камер охраны КПП- подготовка к фогации |  | 2h | 2026-04-30 08:00 A | 2026-04-30 11:00 A |  | 100% |  |  |  | start no earlier than 2026-04-30 08:00 | Дедов В | 2h | 2h |
| 3847 | 23.25 | заизолировать гофру в местах разрыва (гофра с кабелем для рефрежераторов возле нашего склада) | manual | 1h | 2026-04-26 09:00 A | 2026-04-26 10:00 A |  | 100% |  |  |  | start no earlier than 2026-04-26 09:00 | Макаревич А | 1h | 1h |
| 3848 | 23.26 | ремонт стен сосед Белявский |  | 5d | 2026-04-16 09:00 | 2026-04-22 18:00 |  |  |  | 242.59d |  | start no earlier than 2026-04-16 08:00 | Олег; Некрасов А | 80h |  |
| 3849 | 23.27 | **выезд ул.Писемского** |  | 15.03d | 2026-08-11 09:00 A | 2026-09-01 09:15 |  | 89% | 1.67d | 149.56d |  |  |  | 2.25h | 2h |
| 3850 | 23.27.1 | **топосъемка** |  | 15.03d | 2026-08-11 09:00 A | 2026-09-01 09:15 |  | 67% | 5.01d | 149.56d |  |  |  | 0.75h | 0.5h |
| 3851 | 23.27.1.1 | получить старт от ГД | milestone | 0d | 2026-08-31 09:00 | 2026-08-31 09:00 |  |  |  | 149.56d | 0d | start no earlier than 2026-08-31 09:00 | Домоводов К |  |  |
| 3852 | 23.27.1.2 | поск исполнителя / запрос счет |  | 30min | 2026-08-11 09:00 A | 2026-08-11 09:30 A |  | 100% |  |  |  | start no earlier than 2026-08-11 09:00 | Домоводов К | 0.5h | 0.5h |
| 3853 | 23.27.1.3 | контроль оплата |  | 15min | 2026-09-01 09:00 | 2026-09-01 09:15 | 3851FS+1d, 3852FS+5d |  |  | 149.56d | 0d | start no earlier than 2026-08-24 09:00 | Домоводов К | 0.25h |  |
| 3854 | 23.27.2 | **геология** |  | 15.03d | 2026-08-11 09:00 A | 2026-09-01 09:15 |  | 99% | 0d | 149.56d |  |  |  | 0.5h | 0.5h |
| 3855 | 23.27.2.1 | поск исполнителя / запрос счет |  | 30min | 2026-08-11 09:00 A | 2026-08-11 09:30 A |  | 100% |  |  |  | start no earlier than 2026-08-11 09:00 | Домоводов К | 0.5h | 0.5h |
| 3856 | 23.27.2.2 | контроль оплата | milestone | 0min | 2026-09-01 09:15 | 2026-09-01 09:15 | 3853, 3855FS+5d |  |  | 149.56d | 0d | start no earlier than 2026-08-10 08:00 | Домоводов К |  |  |
| 3857 | 23.27.3 | **проект дорога** |  | 15.03d | 2026-08-11 09:00 A | 2026-09-01 09:15 |  | 99% | 0d | 149.56d |  |  |  | 0.5h | 0.5h |
| 3858 | 23.27.3.1 | поск исполнителя / запрос счет |  | 30min | 2026-08-11 09:00 A | 2026-08-11 09:30 A |  | 100% |  |  |  | start no earlier than 2026-08-11 09:00 | Домоводов К | 0.5h | 0.5h |
| 3859 | 23.27.3.2 | получить счет / договор | milestone | 0d | 2026-08-13 09:00 A | 2026-08-13 09:00 A |  | 100% |  |  |  | start no earlier than 2026-08-13 09:00 | Домоводов К |  |  |
| 3860 | 23.27.3.3 | контроль оплата | milestone | 0min | 2026-09-01 09:15 | 2026-09-01 09:15 | 3856, 3858FS+5d |  |  | 149.56d | 0d | start no earlier than 2026-08-10 08:00 | Домоводов К |  |  |

| ID | WBS | Task | Type | Duration | Start | Finish | Predecessors | Complete | Remaining | Total slack | Constraint | Resources | Work | Actual work |
| --- | --- | --- | --- | --- | --- | --- | --- | --- | --- | --- | --- | --- | --- | --- |
| 3861 | 23.27.4 | **проект бетонная подушка** |  | 15.03d | 2026-08-11 09:00 A | 2026-09-01 09:15 |  | 99% | 0d | 149.56d |  |  | 0.5h | 0.5h |
| 3862 | 23.27.4.1 | поск исполнителя / запрос счет |  | 30min | 2026-08-11 09:00 A | 2026-08-11 09:30 A |  | 100% |  |  | start no earlier than 2026-08-11 09:00 | Домоводов К | 0.5h | 0.5h |
| 3863 | 23.27.4.2 | получить счет / договор | milestone | 0d | 2026-08-13 09:00 A | 2026-08-13 09:00 A |  | 100% |  |  | start no earlier than 2026-08-13 09:00 | Домоводов К |  |  |
| 3864 | 23.27.4.3 | контроль оплата | milestone | 0min | 2026-09-01 09:15 | 2026-09-01 09:15 | 3860, 3862FS+5d |  |  | 149.56d | start no earlier than 2026-08-10 08:00 | Домоводов К |  |  |
| 3865 | 23.28 | Сборка рамы и навеса для мусорки 2 ц возле 1 КПП |  | 4h | 2026-09-04 09:00 A | 2026-09-04 13:00 A |  | 100% |  |  | start no earlier than 2026-09-04 09:00 | Некрасов А; Макаревич А | 8h | 8h |
| 3866 | 23.29 | Покраска рамы новой мусорки, стоит у ворот навесок 2 цех |  | 1h | 2026-09-04 09:00 A | 2026-09-04 10:00 A |  | 100% |  |  | start no earlier than 2026-09-04 09:00 | Некрасов А; Макаревич А | 2h | 2h |
| 3867 | 23.30 | Монтаж дверей на мусорку собираем раму (петли привезем после обеда) |  | 3h | 2026-09-04 09:00 A | 2026-09-04 12:00 A |  | 100% |  |  | start no earlier than 2026-09-04 09:00 | Некрасов А; Макаревич А | 6h | 6h |
| 3868 | 23.31 | **асфальтирование дороги до 5ц** |  | 11.25d? | 2026-08-11 09:00 A | 2026-08-26 11:00 A |  | 100% |  |  |  |  | 36.5h | 36.5h |
| 3869 | 23.31.1 | составить схему площади дороги / 3 корректировки |  | 2h | 2026-08-11 09:00 A | 2026-08-11 11:00 A |  | 100% |  |  | start no earlier than 2026-08-11 09:00 | Зорькин В | 2h | 2h |
| 3870 | 23.31.2 | получить цену исполнителя |  | 1d | 2026-08-11 11:00 A | 2026-08-12 11:00 A | 3869 | 100% |  |  | start no earlier than 2026-08-10 08:00 | Домоводов К | 8h | 8h |
| 3871 | 23.31.3 | согл с ГД |  | 1d | 2026-08-11 09:00 A | 2026-08-11 18:00 A | 3870 | 100% |  |  | start no earlier than 2026-08-10 08:00 | Домоводов К | 8h | 8h |
| 3872 | 23.31.4 | получить счет от Вугара | milestone | 0h | 2026-08-12 09:00 A | 2026-08-12 09:00 A |  | 100% |  |  | start no earlier than 2026-08-12 09:00 | Домоводов К |  |  |
| 3873 | 23.31.5 | будет ли Вугар оформлятся как подрядчик? Соглаосвать с ГД |  | 15min | 2026-08-17 09:00 A | 2026-08-17 09:15 A |  | 100% |  |  | start no earlier than 2026-08-17 09:00 | Домоводов К | 0.25h | 0.25h |
| 3874 | 23.31.6 | корректировка чертеж объем работ |  | 1d? | 2026-08-20 09:00 A | 2026-08-20 18:00 A |  | 100% |  |  | start no earlier than 2026-08-20 09:00 | Домоводов К | 8h | 8h |
| 3875 | 23.31.7 | подготовка смета |  | 2h | 2026-08-26 09:00 A | 2026-08-26 11:00 A |  | 100% |  |  | start no earlier than 2026-08-26 09:00 | Домоводов К | 2h | 2h |
| 3876 | 23.31.8 | контроль сроков завоза техники |  | 15min | 2026-08-14 09:00 A | 2026-08-14 09:15 A |  | 100% |  |  | start no earlier than 2026-08-14 09:00 | Домоводов К | 0.25h | 0.25h |
| 3877 | 23.31.9 | монтаж |  | 1d? | 2026-08-19 09:00 A | 2026-08-19 18:00 A | 3871, 3872 | 100% |  |  | start no earlier than 2026-08-19 09:00 | Подрядчик | 8h | 8h |
| 3878 | 23.32 | взять роутер у нас в кабинете - подключить к UTP кабелю |  | 1d? | 2026-04-13 09:00 A | 2026-04-13 18:00 A |  | 100% |  |  | start no earlier than 2026-04-13 09:00 |  |  |  |
| 3879 | 23.33 | в цехе 2, 3, 4 и 5 убавить температуры на нагревателях и газ. Котлах |  | 4h | 2026-03-31 09:00 A | 2026-03-31 13:00 A |  | 100% |  |  | start no earlier than 2026-03-31 08:00 | Бундин В | 4h | 4h |
| 3880 | 23.34 | перенос камеры на 10см ниже КПП |  | 3h | 2026-03-21 09:00 A | 2026-03-23 12:00 A |  | 100% |  |  | start no earlier than 2026-03-21 09:00 | Бундин В | 3h | 3h |
| 3881 | 23.35 | запуск контейнер рэф |  | 2h | 2026-03-20 09:00 A | 2026-03-20 11:00 A |  | 100% |  |  | start no earlier than 2026-03-20 09:00 | Шуранов Ю | 2h | 2h |
| 3882 | 23.36 | **выровнить контейнеры, перекос двери** |  | 3.25d | 2026-03-19 09:00 A | 2026-03-24 11:00 A |  | 100% |  |  |  |  | 2.5h | 2.5h |
| 3883 | 23.36.1 | заявка кран |  | 30min | 2026-03-19 09:00 A | 2026-03-19 09:30 A |  | 100% |  |  | start no earlier than 2026-03-19 09:00 | Шуранов Ю | 0.5h | 0.5h |
| 3884 | 23.36.2 | работа по выравниванию |  | 2h | 2026-03-24 09:00 A | 2026-03-24 11:00 A | 3883FS+1d | 100% |  |  | start no earlier than 2026-03-24 09:00 | Некрасов А | 2h | 2h |

| ID | WBS | Task | Duration | Start | Finish | Predecessors | Complete | Remaining | Total slack | Free slack | Constraint | Resources | Work | Actual work |
| --- | --- | --- | --- | --- | --- | --- | --- | --- | --- | --- | --- | --- | --- | --- |
| 3885 | 23.37 | **двойной шлагбаум замрзает** | 5.01d | 2025-02-20 09:00 A | 2025-02-27 09:05 A |  | 100% |  |  |  |  |  | 1.08h | 1.08h |
| 3886 | 23.37.1 | вызов сервисного инженера контроль даты | 5min | 2025-02-27 09:00 A | 2025-02-27 09:05 A |  | 100% |  |  |  | start no earlier than 2025-02-27 09:00 | Шуранов Ю | 0.08h | 0.08h |
| 3887 | 23.37.2 | осмотр с сервисн инжзенером | 1h | 2025-02-20 09:00 A | 2025-02-20 10:00 A |  | 100% |  |  |  | start no earlier than 2025-02-20 09:00 | Шуранов Ю | 1h | 1h |
| 3888 | 23.38 | **Люки на колодцы** | 13.31d | 2026-05-26 09:00 A | 2026-06-12 11:30 |  | 98% | 0.32d | 206.28d |  |  |  | 163.5h | 161.5h |
| 3889 | 23.38.1 | Консультация с Олегом | 30min | 2026-05-26 09:00 A | 2026-05-26 09:30 A |  | 100% |  |  |  | start no earlier than 2026-05-26 08:00 | Зорькин В; Олег | 1h | 1h |
| 3890 | 23.38.2 | Заявка на закуп | 30min | 2026-05-29 09:00 A | 2026-05-29 09:30 A | 3889 | 100% |  |  |  | start no earlier than 2026-05-29 09:00 | Зорькин В | 0.5h | 0.5h |
| 3891 | 23.38.3 | Доставка, контроль | 10d | 2026-05-29 09:30 A | 2026-06-12 09:30 A | 3890 | 100% |  |  |  | start no earlier than 2026-05-26 09:00 | Зорькин В; Шуранов Ю | 160h | 160h |
| 3892 | 23.38.4 | установка люков на колодцы | 2h | 2026-06-12 09:30 | 2026-06-12 11:30 | 3891 |  |  | 206.28d |  | start no earlier than 2026-06-04 09:00 | Олег | 2h |  |
| 3893 | 24 | **ежедневные обходы и осмотры** | 473.5d | 2024-05-14 09:00 A | 2026-03-06 13:00 |  | 16% | 398.74d | 276.09d |  |  |  | 25.33h | 4h |
| 3894 | 24.1 | цех 1 | 20min | 2024-05-14 09:00 | 2024-05-14 09:20 |  |  |  | 747.01d | 0d | start no earlier than 2024-05-14 09:00 | Шуранов Ю | 0.33h |  |
| 3895 | 24.2 | цех 2 | 20min | 2024-05-14 09:00 | 2024-05-14 09:20 |  |  |  | 749.55d |  | start no earlier than 2024-05-14 09:00 | Шуранов Ю | 0.33h |  |
| 3896 | 24.3 | цех навесок | 20min | 2024-05-14 09:20 | 2024-05-14 09:40 | 3894 |  |  | 747.01d | 0d | start no earlier than 2024-05-14 09:00 | Шуранов Ю | 0.33h |  |
| 3897 | 24.4 | техника | 20h | 2024-05-14 09:40 | 2024-05-16 14:40 | 3896 |  |  | 747.01d |  | start no earlier than 2024-05-14 09:00 | Шуранов Ю | 20h |  |
| 3898 | 24.5 | вести журнал осмотров стеллажей | 20min | 2024-05-14 09:00 | 2024-05-14 09:20 |  |  |  | 749.55d |  | start no earlier than 2024-05-14 09:00 | Шуранов Ю | 0.33h |  |
| 3899 | 24.6 | оперативная работа | 4h | 2026-03-06 09:00 A | 2026-03-06 13:00 A |  | 100% |  |  |  | start no earlier than 2026-03-06 09:00 | Бобренок В | 4h | 4h |
| 3900 | 25 | **замена шнеков** | 882.5d? | 2023-03-29 09:00 A | 2026-08-14 13:00 |  | 2% | 864.01d? | 161.09d |  |  |  | 53h | 34h |
| 3901 | 25.1 | посчитать количество шнеков и гильз для цех1 и цех 2 | 2h | 2026-04-03 09:00 | 2026-04-03 11:00 |  |  |  | 256.34d |  | start no earlier than 2026-04-03 09:00 | Шуранов Ю | 2h |  |
| 3902 | 25.2 | вести список и учет замены шнеков | 1h | 2024-05-14 09:00 | 2024-05-14 10:00 |  |  |  | 749.47d |  | start no earlier than 2024-05-14 09:00 | Шуранов Ю | 1h |  |
| 3903 | 25.3 | линия 3 - было 3/приход спец12-3/спец14-9 | 1d? | 2024-04-15 09:00 A | 2024-04-15 18:00 A |  | 100% |  |  |  | start no earlier than 2024-04-15 08:00 |  |  |  |
| 3904 | 25.4 | линия3 | 42d | 2023-10-16 09:00 | 2023-12-12 18:00 |  |  |  | 858.59d |  | start no earlier than 2023-10-16 09:00 |  |  |  |
| 3905 | 25.5 | линия3 | 30d | 2023-12-12 09:00 | 2024-01-22 18:00 |  |  |  | 829.59d |  | start no earlier than 2023-12-12 09:00 |  |  |  |
| 3906 | 25.6 | линия3 | 45d | 2024-01-24 09:00 | 2024-03-26 18:00 |  |  |  | 783.59d |  | start no earlier than 2024-01-24 09:00 |  |  |  |
| 3907 | 25.7 | линия3 | 11d | 2023-03-29 09:00 | 2023-04-12 18:00 |  |  |  | 1032.59d |  | start no earlier than 2023-03-29 09:00 |  |  |  |
| 3908 | 25.8 | линия3 | 1d? | 2023-04-12 09:00 | 2023-04-12 18:00 |  |  |  | 1032.59d |  | start no earlier than 2023-04-12 09:00 |  |  |  |
| 3909 | 25.9 | линия 3 | 1.38d? | 2024-05-08 08:00 A | 2024-05-13 11:00 A |  | 100% |  |  |  | start no earlier than 2024-05-08 08:00 | Макаревич А; Некрасов А; Черепанов И | 26h | 26h |
| 3910 | 25.10 | диния 3 | 1d? | 2024-05-20 09:00 | 2024-05-20 18:00 |  |  |  | 744.59d |  | start no earlier than 2024-05-20 09:00 | Некрасов А; Тимофеев В | 16h |  |
| 4041 | 25.11 | замена линия 3, была струшка | 4h | 2026-08-14 09:00 A | 2026-08-14 13:00 A |  | 100% |  |  |  | start no earlier than 2026-08-14 09:00 | Некрасов А; Бундин В | 8h | 8h |
